| id | name | duration | start | finish | total_float | activities |
| --- | --- | --- | --- | --- | --- | --- |
| SWA GUB DEN | SWA GUB DEN | 601d | 17-Feb-23 | 16-Jun-25 | 0d |  |
| GUB | GUB | 601d | 17-Feb-23 | 16-Jun-25 | 0d |  |
| Summary | Summary | 533d | 08-May-23 | 16-Jun-25 | 0d | SUM-DUR-B Summary - Construction (Calendar Days) 680d 08-May-23 11-Apr-25 -43d, G-MIL-1010 *Milestone: Construction Substantial Completion (68 0 Calendar Days from Mobilization) 0d 11-Apr-25 -31d, G-SUM-DUR-B10 Summary - Construction (Work Days) 472d 08-May-23 11-Apr-25 -31d, G-CON-6870 *Milestone: Beneficial Occupancy 0d 02-May-25 30d, G-CON-6880 *Milestone: Final Completion 0d 16-Jun-25 0d |
| Milestones | Milestones | 275d | 23-Oct-23 | 20-Nov-24 | 20d | G-MIL-2000 *Milestone: Building Pad Certified Complete / Ready for Drilled Piers 0d 23-Oct-23 -14d, G-MIL-3010 *Milestone: Drilled Pier Start 0d 24-Oct-23 -25d, G-MIL-3020 *Milestone: Grade Beam Start 0d 16-Nov-23 -30d, G-MIL-3030 *Milestone: SOG Start 0d 19-Dec-23 -24d, G-MIL-3040 *Milestone: Tilt Wall Start 0d 23-Jan-24 -25d, G-MIL-2020 *Milestone: Tilt Complete (Last Panel Erection) 0d 10-May-24 -25d, G-MIL-3050 *Milestone: Structural Steel Start 0d 15-May-24 -27d, G-MIL-2040 *Milestone: Steel Complete 0d 04-Jun-24 -5d, G-MIL-3060 *Milestone: Interior Fit-Out Start 0d 17-Jun-24 -1d, G-MIL-2030 *Milestone: Building Dry-In 0d 27-Aug-24 4d, G-MIL-2010 *Milestone: SOGs Complete 0d 03-Sep-24 -6d, G-MIL-2060 *Milestone: Permanent Power Established 0d 20-Nov-24 20d |
| Preconstruction & Design | Preconstruction & Design | 463d | 17-Feb-23 | 27-Nov-24 | 21d |  |
| Design | Design | 395d | 02-May-23 | 27-Nov-24 | 21d | G-PRECN-1180 Ghafari - Design - 100% (After Permit Review) 10d 09-Oct-23 20-Oct-23 12d |
| FRAGNET 02 - Drawing Release 07 & 16 | FRAGNET 02 - Drawing Release 07 & 16 | 26d | 22-Sep-23 | 30-Oct-23 | 195d | G-FRG-02-1020 Owner Review and Approval - DR 07 & 16 15d 22-Sep-23 26-Sep-23 209d, G-FRG-02-1030 Additional Site Storm Drain - DR 07 & 16 10d 17-Oct-23 30-Oct-23 195d |
| FRAGNET 05 - Drawing Release 11 | FRAGNET 05 - Drawing Release 11 | 313d | 04-May-23 | 02-Aug-24 | -14d | G-FRG-05-1010 McCarthy Develop Pricing - DR 11 20d 04-May-23 28-Sep-23 160d, G-FRG-05-1020 Owner Review and Approval - DR 11 15d 29-Sep-23 19-Oct-23 160d, G-FRG-05-1030 Additional Electrical Overhead Conduit - DR 11 5d 09-Jul-24 15-Jul-24 -21d, G-FRG-05-1040 Additional Electrical In-Wall Conduit - DR 11 5d 29-Jul-24 02-Aug-24 -14d |
| FRAGNET 04 - Drawing Release 10 | FRAGNET 04 - Drawing Release 10 | 113d | 02-May-23 | 19-Oct-23 | -5d | G-FRG-04-1010 McCarthy Develop Pricing - DR 10 20d 02-May-23 28-Sep-23 -5d, G-FRG-04-1020 Owner Review and Approval - DR 10 15d 29-Sep-23 19-Oct-23 -5d |
| FRAGNET 06 - Drawing Release 12 | FRAGNET 06 - Drawing Release 12 | 393d | 15-May-23 | 27-Nov-24 | 21d | G-FRG-06-1010 McCarthy Develop Pricing - DR 12 20d 15-May-23 03-Oct-23 -10d, G-FRG-06-1020 Owner Review and Approval - DR 12 15d 04-Oct-23 24-Oct-23 -10d, G-FRG-06-1030 Additional Tilt Panel Shop Drawings - DR 12 15d 25-Oct-23 14-Nov-23 -10d, G-FRG-06-1040 Additional Tilt Panel Embeds - DR 12 2d 23-Feb-24 26-Feb-24 8d, G-FRG-06-1050 Additional Steel Erection - DR 12 2d 22-May-24 23-May-24 -29d, G-FRG-06-1080 Additional Framing in Adim / Entry - DR 12 3d 29-Jul-24 31-Jul-24 -23d, G-FRG-06-1060 Additional Time for Exterior Doors - DR 12 2d 18-Sep-24 19-Sep-24 35d, G-FRG-06-1070 Additional Time for Stair Erection - DR 12 2d 26-Nov-24 27-Nov-24 21d |
| FRAGNET 08 - Drawing Release 15 | FRAGNET 08 - Drawing Release 15 | 15d | 22-Sep-23 | 26-Sep-23 | 38d | G-FRG-08-1020 Owner Review and Approval - DR 15 15d 22-Sep-23 26-Sep-23 38d |
| GMP | GMP | 25d | 23-Oct-23 | 28-Nov-23 | 12d |  |
| Final GMP | Final GMP | 25d | 23-Oct-23 | 28-Nov-23 | 12d | G-PRECN-1130 Pricing Confirmation After 100% 25d 23-Oct-23 28-Nov-23 12d |
| Permitting | Permitting | 180d | 17-Feb-23 | 18-Oct-23 | 14d |  |
| Water | Water | 170d | 17-Feb-23 | 04-Oct-23 | 14d | G-PRECN-1240 Denver Water - Permit - Water (Includes DFD) (Neede d by 8/15/23) 90d 17-Feb-23 29-Sep-23 14d, G-PRECN-6230 DEN - LNTP (Water) 3d 02-Oct-23 04-Oct-23 14d |
| FRAGNET 10 - Water Permit | FRAGNET 10 - Water Permit | 10d | 15-Aug-23 | 29-Sep-23 | 14d | FRG-10-1010 Additional Time for Water Permit - Driving Construc tion Install 10d 15-Aug-23 29-Sep-23 14d |
| Building | Building | 40d | 04-Aug-23 | 18-Oct-23 | 14d | G-PRECN-1070 CCD / DEN - Permit - 90% CDs - Building Permit (Nee ded by 9/5/23) 40d 04-Aug-23 13-Oct-23 -6d, G-PRECN-6280 DOTI - Permit - SUDP (Building) (Needed by 9/5/23) 40d 04-Aug-23 13-Oct-23 -6d, G-PRECN-6250 DEN - FNTP 3d 16-Oct-23 18-Oct-23 14d |
| Procurement | Procurement | 383d | 28-Apr-23 | 29-Oct-24 | 46d |  |
| Subcontracts | Subcontracts | 60d | 28-Apr-23 | 13-Oct-23 | 133d |  |
| Priority 1 | Priority 1 | 30d | 28-Apr-23 | 06-Oct-23 | 77d | G-SUB-1050 Contract - Glass / Storefront 20d 28-Apr-23 06-Oct-23 77d, G-SUB-1160 Contract - Paint Booth 30d 28-Apr-23 06-Oct-23 11d, G-SUB-1360 Contract - Eaton Fluid System 30d 28-Apr-23 06-Oct-23 29d |
| Priority 2 | Priority 2 | 40d | 28-Apr-23 | 06-Oct-23 | 138d | G-SUB-1300 Contract - Doors & Hardware 40d 28-Apr-23 25-Sep-23 29d, G-SUB-1290 Contract - Warehouse Racking 40d 28-Apr-23 06-Oct-23 138d |
| Priority 3 | Priority 3 | 60d | 28-Apr-23 | 13-Oct-23 | 102d | G-SUB-1350 Contract - Illuminated Signage 60d 28-Apr-23 13-Oct-23 102d |
| Submittals | Submittals | 372d | 30-May-23 | 29-Oct-24 | 46d |  |
| VFDs | VFDs | 162d | 21-Jul-23 | 11-Mar-24 | 43d | G-PR-23-1040 Submittal Prep - VFDs 60d 21-Jul-23 14-Nov-23 32d, G-PR-23-1050 McC Review - VFDs 5d 15-Nov-23 21-Nov-23 32d, G-PR-23-1060 A/E Review & Approve - VFDs 10d 22-Nov-23 07-Dec-23 32d, G-PR-23-1070 Fab & Deliver - VFDs 65d 08-Dec-23 11-Mar-24 43d |
| Mechanical - AHUs - Aaon | Mechanical - AHUs - Aaon | 272d | 21-Jul-23 | 14-Aug-24 | -1d | G-PR-23-1000 Submittal Prep - AHUs - Aaon 60d 21-Jul-23 14-Nov-23 -1d, G-PR-23-1010 McC Review - AHUs - Aaon 5d 15-Nov-23 21-Nov-23 -1d, G-PR-23-1020 A/E Review & Approve - AHUs - Aaon 10d 22-Nov-23 07-Dec-23 -1d, G-PR-23-1030 Fab & Deliver - AHUs - Aaon 175d 08-Dec-23 14-Aug-24 -1d |
| Mechanical - AHUs - Rapid Engineering | Mechanical - AHUs - Rapid Engineering | 248d | 23-Jun-23 | 26-Jun-24 | 33d | G-PR-23-1460 Submittal Prep - AHUs - Rapid Engineering 10d 23-Jun-23 30-Jan-24 33d, G-PR-23-1470 McC Review - AHUs - Rapid Engineering 5d 31-Jan-24 06-Feb-24 33d, G-PR-23-1480 A/E Review & Approve - AHUs - Rapid Engineering 10d 07-Feb-24 20-Feb-24 33d, G-PR-23-1450 Fab & Deliver - AHUs - Rapid Engineering 90d 21-Feb-24 26-Jun-24 33d |
| Mechanical - Computer AC Units | Mechanical - Computer AC Units | 250d | 21-Jul-23 | 15-Jul-24 | 37d | G-PR-23-1210 Submittal Prep - Computer AC Units 50d 21-Jul-23 13-Oct-23 37d, G-PR-23-1220 McC Review - Computer AC Units 5d 16-Oct-23 20-Oct-23 37d, G-PR-23-1230 A/E Review & Approve - Computer AC Units 10d 23-Oct-23 03-Nov-23 37d, G-PR-23-1200 Fab & Deliver - Computer AC Units 175d 06-Nov-23 15-Jul-24 37d |
| Mechanical - Gas Fired Boiler | Mechanical - Gas Fired Boiler | 125d | 21-Jul-23 | 18-Jan-24 | 74d | G-PR-23-1330 Submittal Prep - Gas Fired Boiler 60d 21-Jul-23 20-Oct-23 49d, G-PR-23-1340 McC Review - Gas Fired Boiler 5d 23-Oct-23 27-Oct-23 49d, G-PR-23-1350 A/E Review & Approve - Gas Fired Boiler 10d 30-Oct-23 10-Nov-23 49d, G-PR-23-1320 Fab & Deliver - Gas Fired Boiler 45d 13-Nov-23 18-Jan-24 74d |
| Mechanical - Roof Fans | Mechanical - Roof Fans | 185d | 21-Jul-23 | 11-Apr-24 | 86d | G-PR-23-1500 Submittal Prep - Roof Fans 60d 21-Jul-23 05-Dec-23 86d, G-PR-23-1510 McC Review - Roof Fans 5d 06-Dec-23 12-Dec-23 86d, G-PR-23-1520 A/E Review & Approve - Roof Fans 10d 13-Dec-23 27-Dec-23 86d, G-PR-23-1490 Fab & Deliver - Roof Fans 75d 28-Dec-23 11-Apr-24 86d |
| Controls | Controls | 183d | 21-Jul-23 | 09-Apr-24 | 22d | G-PR-22-1000 Submittal Prep - Controls 60d 21-Jul-23 22-Nov-23 22d, G-PR-22-1010 McC Review - Controls 5d 27-Nov-23 01-Dec-23 22d, G-PR-22-1020 A/E Review & Approve - Controls 10d 04-Dec-23 15-Dec-23 22d, G-PR-22-1030 Fab & Deliver - Controls 80d 18-Dec-23 09-Apr-24 22d |
| Utilities - Concrete Manholes & Inlets | Utilities - Concrete Manholes & Inlets | 25d | 05-Sep-23 | 29-Sep-23 | 14d | G-PR-31-2310 Fab & Deliver - Utilities - Concrete Manholes & Inl ets 25d 05-Sep-23 29-Sep-23 14d |
| Utilities - Water | Utilities - Water | 5d | 02-Oct-23 | 06-Oct-23 | 27d | G-PR-31-1030 Fab & Deliver - Underground Utilities - Water 5d 02-Oct-23 06-Oct-23 27d |
| Utilities - Storm / Sewer / Fire / Etc. | Utilities - Storm / Sewer / Fire / Etc. | 15d | 05-Sep-23 | 29-Sep-23 | 8d | G-PR-31-1280 Fab & Deliver - Underground Utilities - Storm / Sew er 15d 05-Sep-23 29-Sep-23 8d |
| Electrical - SWB | Electrical - SWB | 270d | 01-Jun-23 | 28-Jun-24 | 77d | G-PR-26-1030 Fab & Deliver - Electrical - SCC-101 (Connection to Xcel) 270d 01-Jun-23 28-Jun-24 77d |
| Electrical - SWB 3000A | Electrical - SWB 3000A | 300d | 01-Jun-23 | 12-Aug-24 | 28d | G-PR-26-1450 Fab & Deliver - Electrical - Emergency Switchboard EDP-2M-101 270d 01-Jun-23 28-Jun-24 58d, G-PR-26-1120 Fab & Deliver - Electrical - SWB-2M-101 3000A Main 300d 01-Jun-23 12-Aug-24 23d |
| Electrical - Panels | Electrical - Panels | 270d | 01-Jun-23 | 21-Jun-24 | 58d | G-PR-26-1160 Fab & Deliver - Electrical - Panels 150d 01-Jun-23 04-Jan-24 178d, G-PR-26-1540 Fab & Deliver - Electrical - Emergency Panels 270d 01-Jun-23 21-Jun-24 58d |
| Electrical - Transformers | Electrical - Transformers | 45d | 01-Jun-23 | 23-Oct-23 | 227d | G-PR-26-1200 Fab & Deliver - Electrical - Transformers 45d 01-Jun-23 23-Oct-23 227d |
| Electrical - Transformer Vault | Electrical - Transformer Vault | 60d | 25-Sep-23 | 19-Dec-23 | 207d | G-PR-26-1570 McC Review - Electrical - Transformer Vault 5d 25-Sep-23 29-Sep-23 207d, G-PR-26-1580 A/E Review & Approve - Electrical - Transformer Vau lt 10d 02-Oct-23 13-Oct-23 207d, G-PR-26-1550 Fab & Deliver - Electrical - Transformer Vault 45d 16-Oct-23 19-Dec-23 207d |
| Electrical - Generator | Electrical - Generator | 300d | 30-May-23 | 01-Aug-24 | 88d | G-PR-26-1240 Fab & Deliver - Electrical - Generator (Tier 4 - 58 Weeks) 300d 30-May-23 01-Aug-24 88d |
| Electrical - ATS Switch Cabinet | Electrical - ATS Switch Cabinet | 300d | 01-Jun-23 | 05-Aug-24 | 86d | G-PR-26-1320 Fab & Deliver - Electrical - ATS / MTS Switches 300d 01-Jun-23 05-Aug-24 86d |
| Electrical - Distribution Board | Electrical - Distribution Board | 270d | 01-Jun-23 | 21-Jun-24 | 63d | G-PR-26-1360 Fab & Deliver - Electrical - Distribution Board DP- 2D-101 270d 01-Jun-23 21-Jun-24 63d, G-PR-26-1400 Fab & Deliver - Electrical - Distribution Board DP- 16M-101 270d 01-Jun-23 21-Jun-24 63d |
| Electrical Conduit & Wire | Electrical Conduit & Wire | 105d | 21-Jul-23 | 19-Dec-23 | 160d | G-PR-26-1050 Submittal Prep - Interior Conduit & Wire 60d 21-Jul-23 27-Oct-23 160d, G-PR-26-1060 McC Review - Interior Conduit & Wire 5d 30-Oct-23 03-Nov-23 160d, G-PR-26-1070 A/E Review & Approve - Interior Conduit & Wire 10d 06-Nov-23 17-Nov-23 160d, G-PR-26-1040 Fab & Deliver - Interior Conduit & Wire 20d 20-Nov-23 19-Dec-23 160d |
| Electrical Underground Conduit & Wire | Electrical Underground Conduit & Wire | 80d | 23-Jun-23 | 24-Oct-23 | -27d | G-PR-26-1300 McC Review - Underground Conduit & Wire 5d 23-Jun-23 26-Sep-23 -27d, G-PR-26-1310 A/E Review & Approve - Underground Conduit & Wire 10d 27-Sep-23 10-Oct-23 -27d, G-PR-26-1280 Fab & Deliver - Underground Conduit & Wire 10d 11-Oct-23 24-Oct-23 -27d |
| Warehouse Lighting | Warehouse Lighting | 45d | 25-Sep-23 | 28-Nov-23 | 188d | G-PR-26-1610 McC Review - Warehouse Lighting 5d 25-Sep-23 29-Sep-23 188d, G-PR-26-1620 A/E Review & Approve - Warehouse Lighting 10d 02-Oct-23 13-Oct-23 188d, G-PR-26-1590 Fab & Deliver - Warehouse Lighting 30d 16-Oct-23 28-Nov-23 188d |
| Security / Low Voltage / Comms | Security / Low Voltage / Comms | 312d | 21-Jul-23 | 10-Oct-24 | 6d | G-PR-31-1930 Submittal Prep - Security - DEN (Servitech) 35d 21-Jul-23 10-Oct-23 6d, G-PR-31-1940 McC Review - Security - DEN (Servitech) 5d 11-Oct-23 17-Oct-23 6d, G-PR-31-1950 A/E Review & Approve - Security - DEN (Servitech) 10d 18-Oct-23 31-Oct-23 6d, G-PR-31-1920 Fab & Deliver - Security - DEN (Servitech) 240d 01-Nov-23 10-Oct-24 6d |
| Underground Plumbing Pipe | Underground Plumbing Pipe | 20d | 27-Oct-23 | 27-Nov-23 | -30d | G-PR-26-1080 Fab & Deliver - Underground Plumbing Pipe 20d 27-Oct-23 27-Nov-23 -30d |
| Security - Card Readers | Security - Card Readers | 215d | 25-Sep-23 | 29-Jul-24 | 47d | G-PR-31-2270 McC Review - Security - SWA (Convergent) 5d 25-Sep-23 29-Sep-23 47d, G-PR-31-2280 A/E Review & Approve - Security - SWA (Convergent) 10d 02-Oct-23 13-Oct-23 47d, G-PR-31-2290 Fab & Deliver - Security - SWA (Convergent) 200d 16-Oct-23 29-Jul-24 47d |
| Fire Supression | Fire Supression | 203d | 14-Jul-23 | 30-Apr-24 | 1d | G-PR-23-1360 BIM - Fire Supression 30d 14-Jul-23 22-Nov-23 1d, G-PR-23-1090 Submittal Prep - Fire Supression 25d 27-Nov-23 02-Jan-24 1d, G-PR-23-1100 McC Review - Fire Supression 5d 03-Jan-24 09-Jan-24 1d, G-PR-23-1110 A/E Review & Approve - Fire Supression 10d 10-Jan-24 23-Jan-24 1d, G-PRECN-6400 Deferred Submittal - Fire Supression 60d 24-Jan-24 16-Apr-24 1d, G-PR-23-1080 Fab & Deliver - Fire Supression 10d 17-Apr-24 30-Apr-24 1d |
| Fire Pump | Fire Pump | 160d | 15-Aug-23 | 01-Apr-24 | 122d | G-PR-23-1380 Submittal Prep - Fire Pump 35d 15-Aug-23 17-Oct-23 -7d, G-PR-23-1390 McC Review - Fire Pump 5d 18-Oct-23 24-Oct-23 122d, G-PR-23-1400 A/E Review & Approve - Fire Pump 10d 25-Oct-23 07-Nov-23 122d, G-PR-23-1370 Fab & Deliver - Fire Pump 100d 08-Nov-23 01-Apr-24 122d |
| ZRF Fire Sprinkler Head | ZRF Fire Sprinkler Head | 179d | 15-Aug-23 | 26-Apr-24 | 84d | G-PR-23-1420 Submittal Prep - ZRF Fire Sprinkler Head 60d 15-Aug-23 13-Dec-23 84d, G-PR-23-1430 McC Review - ZRF Fire Sprinkler Head 5d 14-Dec-23 20-Dec-23 84d, G-PR-23-1440 A/E Review & Approve - ZRF Fire Sprinkler Head 10d 21-Dec-23 05-Jan-24 84d, G-PR-23-1410 Fab & Deliver - ZRF Fire Sprinkler Head 80d 08-Jan-24 26-Apr-24 84d |
| Fire Alarm | Fire Alarm | 205d | 21-Jul-23 | 09-May-24 | 110d | G-PR-23-1130 Submittal Prep - Fire Alarm 60d 21-Jul-23 27-Oct-23 110d, G-PR-23-1140 McC Review - Fire Alarm 5d 30-Oct-23 03-Nov-23 110d, G-PR-23-1150 A/E Review & Approve - Fire Alarm 10d 06-Nov-23 17-Nov-23 110d, G-PRECN-6420 Deferred Submittal - Fire Alarm & Signaling 60d 20-Nov-23 15-Feb-24 110d, G-PRECN-6430 Deferred Submittal - Fire Alarm & Signaling: Zinwav e (Radio Enhansement System) 60d 20-Nov-23 15-Feb-24 110d, G-PR-23-1120 Fab & Deliver - Fire Alarm 60d 16-Feb-24 09-May-24 110d |
| Concrete Mix Design - Grade Beams & Pier Caps | Concrete Mix Design - Grade Beams & Pier Caps | 41d | 30-Aug-23 | 26-Oct-23 | -17d | G-PR-31-1140 McC Review - Concrete Mix Design - Grade Beams & Pi er Caps 3d 30-Aug-23 05-Oct-23 -17d, G-PR-31-1150 A/E Review & Approve - Concrete Mix Design - Grade Beams & Pier Caps 10d 06-Oct-23 19-Oct-23 -17d, G-PR-31-1120 Fab & Deliver - Concrete - Grade Beams & Pier Caps 5d 20-Oct-23 26-Oct-23 -17d |
| Concrete Mix Design - SOG / SOD | Concrete Mix Design - SOG / SOD | 41d | 30-Aug-23 | 26-Oct-23 | 28d | G-PR-31-2660 McC Review - Concrete Mix Design - SOG / SOD 3d 30-Aug-23 05-Oct-23 28d, G-PR-31-2670 A/E Review & Approve - Concrete Mix Design - SOG / SOD 10d 06-Oct-23 19-Oct-23 28d, G-PR-31-2640 Fab & Deliver - Concrete - SOG / SOD 5d 20-Oct-23 26-Oct-23 28d |
| Concrete Mix Design - Tilt Panels | Concrete Mix Design - Tilt Panels | 41d | 30-Aug-23 | 26-Oct-23 | 31d | G-PR-31-2700 McC Review - Concrete Mix Design - Tilt Panels 3d 30-Aug-23 05-Oct-23 31d, G-PR-31-2710 A/E Review & Approve - Concrete Mix Design - Tilt P anels 10d 06-Oct-23 19-Oct-23 31d, G-PR-31-2680 Fab & Deliver - Concrete - Tilt Panels 5d 20-Oct-23 26-Oct-23 31d |
| Drilled Piers | Drilled Piers | 10d | 06-Oct-23 | 19-Oct-23 | -31d | G-PR-31-2200 Fab & Deliver - Drilled Piers 10d 06-Oct-23 19-Oct-23 -31d |
| Rebar Shop Dwgs - Grade Beams | Rebar Shop Dwgs - Grade Beams | 50d | 24-Aug-23 | 02-Nov-23 | -22d | G-PR-31-1180 McC Review - Rebar Shop Dwgs - Grade Beams 5d 24-Aug-23 05-Oct-23 -22d, G-PR-31-1190 A/E Review & Approve - Rebar Shop Dwgs - Grade Beam s 10d 06-Oct-23 19-Oct-23 -22d, G-PR-31-1160 Fab & Deliver - Rebar - Grade Beams 10d 20-Oct-23 02-Nov-23 -22d |
| Tilt Panels | Tilt Panels | 10d | 21-Sep-23 | 06-Oct-23 | 17d | G-PR-31-2470 A/E Review & Approve - Tilt Panels (Product Data) 10d 21-Sep-23 06-Oct-23 17d |
| SOG & Grade Beams - Anchor Bolts & Embeds | SOG & Grade Beams - Anchor Bolts & Embeds | 45d | 21-Jul-23 | 17-Nov-23 | 5d | G-PR-05-1320 Fab & Deliver - SOG & Grade Beams Anchor Bolts & Em beds 45d 21-Jul-23 17-Nov-23 5d |
| Tilt Panel - Embeds | Tilt Panel - Embeds | 45d | 15-Aug-23 | 01-Dec-23 | 9d | G-PR-05-1360 Fab & Deliver - Tilt Panels Embeds 45d 15-Aug-23 01-Dec-23 9d |
| Structural Steel - Joists & Decking | Structural Steel - Joists & Decking | 155d | 21-Jul-23 | 29-Feb-24 | 26d | G-PR-05-1010 McC Review - Steel Joists & Decking 6d 21-Jul-23 20-Oct-23 -23d, G-PR-05-1020 A/E Review & Approve - Steel Joists & Decking 10d 23-Oct-23 03-Nov-23 -23d, G-PR-05-1030 Fab & Deliver - Steel Joists & Decking 80d 06-Nov-23 29-Feb-24 26d |
| Structural Steel - Columns & Beams | Structural Steel - Columns & Beams | 113d | 22-Sep-23 | 29-Feb-24 | 20d | G-PR-05-1250 McC Review - Columns & Beams 10d 22-Sep-23 20-Oct-23 20d, G-PR-05-1260 A/E Review & Approve - Columns & Beams 10d 23-Oct-23 03-Nov-23 20d, G-PR-05-1270 Fab & Deliver - Columns & Beams 80d 06-Nov-23 29-Feb-24 20d |
| Insulated Core Metal Panels | Insulated Core Metal Panels | 134d | 28-Aug-23 | 07-Mar-24 | 100d | G-PR-05-1090 Submittal Prep - Insulated Core Metal Panels 50d 28-Aug-23 13-Oct-23 86d, G-PR-05-1100 McC Review - Insulated Core Metal Panels 5d 16-Oct-23 20-Oct-23 86d, G-PR-05-1110 A/E Review & Approve - Insulated Core Metal Panels 10d 23-Oct-23 03-Nov-23 86d, G-PR-05-1160 Fab & Deliver - Insulated Core Metal Panels 85d 06-Nov-23 07-Mar-24 100d |
| Masonry | Masonry | 135d | 25-Sep-23 | 04-Apr-24 | 70d | G-PR-05-1200 Submittal Prep - Masonry 60d 25-Sep-23 19-Dec-23 70d, G-PR-05-1210 McC Review - Masonry 5d 20-Dec-23 27-Dec-23 70d, G-PR-05-1220 A/E Review & Approve - Masonry 10d 28-Dec-23 11-Jan-24 70d, G-PR-05-1190 Fab & Deliver - Masonry 60d 12-Jan-24 04-Apr-24 70d |
| Roofing Material | Roofing Material | 20d | 24-May-24 | 21-Jun-24 | -15d | G-PR-07-1030 Fab & Deliver - Roofing Material 20d 24-May-24 21-Jun-24 -15d |
| Roofing Shop Dwgs | Roofing Shop Dwgs | 55d | 15-Aug-23 | 31-Oct-23 | 148d | G-PR-07-1050 Submittal Prep - Roofing Shop Dwgs 30d 15-Aug-23 10-Oct-23 148d, G-PR-07-1060 McC Review - Roofing Shop Dwgs 5d 11-Oct-23 17-Oct-23 148d, G-PR-07-1070 A/E Review & Approve - Roofing Shop Dwgs 10d 18-Oct-23 31-Oct-23 148d |
| Glass / Aluminum Storefront | Glass / Aluminum Storefront | 88d | 09-Oct-23 | 13-Feb-24 | 77d | G-PR-08-1000 Submittal Prep - Glass / Aluminum Storefront 15d 09-Oct-23 27-Oct-23 77d, G-PR-08-1010 McC Review - Glass / Aluminum Storefront 5d 26-Oct-23 01-Nov-23 77d, G-PR-08-1020 A/E Review & Approve - Glass / Aluminum Storefront 10d 02-Nov-23 15-Nov-23 77d, G-PR-08-1030 Fab & Deliver - Glass / Aluminum Storefront 60d 16-Nov-23 13-Feb-24 77d, G-PRECN-6410 Deferred Submittal - Exterior Window Wall System 60d 16-Nov-23 13-Feb-24 77d |
| Illuminated Signage | Illuminated Signage | 195d | 16-Oct-23 | 22-Jul-24 | 102d | G-PRCR-9020 Submittal Prep - Illuminated Signage 60d 16-Oct-23 11-Jan-24 102d, G-PRCR-9030 McC Review - Illuminated Signage 5d 12-Jan-24 18-Jan-24 102d, G-PRCR-9040 A/E Review & Approve - Illuminated Signage 10d 19-Jan-24 01-Feb-24 102d, G-PRCR-9010 Fab & Deliver - Illuminated Signage 120d 02-Feb-24 22-Jul-24 102d |
| Custom Coiling Doors | Custom Coiling Doors | 238d | 21-Jul-23 | 02-Aug-24 | 45d | G-PR-31-1760 Design Custom Coiling Doors 125d 21-Jul-23 17-Jan-24 45d, G-PR-31-1560 Wind Load Testing 10d 18-Jan-24 31-Jan-24 45d, G-PR-31-1050 Submittal Prep - Custom Coiling Doors 15d 01-Feb-24 21-Feb-24 45d, G-PR-31-1060 McC Review - Custom Coiling Doors 5d 22-Feb-24 28-Feb-24 45d, G-PR-31-1070 A/E Review & Approve - Custom Coiling Doors 10d 29-Feb-24 13-Mar-24 45d, G-PR-31-2530 Fab & Deliver - Custom Coiling Doors 100d 14-Mar-24 02-Aug-24 45d |
| Coiling Doors | Coiling Doors | 224d | 01-Aug-23 | 18-Jul-24 | 26d | G-PR-31-2750 McC Review - Coiling Doors 5d 01-Aug-23 22-Dec-23 26d, G-PR-31-2760 A/E Review & Approve - Coiling Doors 10d 26-Dec-23 09-Jan-24 26d, G-PR-31-2730 Fab & Deliver - Coiling Doors 135d 10-Jan-24 18-Jul-24 26d |
| High Speed Fabric Doors | High Speed Fabric Doors | 149d | 01-Aug-23 | 02-Apr-24 | 101d | G-PR-31-2800 McC Review - High Speed Fabric Doors 5d 01-Aug-23 22-Dec-23 101d, G-PR-31-2810 A/E Review & Approve - High Speed Fabric Doors 10d 26-Dec-23 09-Jan-24 101d, G-PR-31-2780 Fab & Deliver - High Speed Fabric Doors 60d 10-Jan-24 02-Apr-24 101d |

| id | name | duration | start | finish | total_float | activities |
| --- | --- | --- | --- | --- | --- | --- |
| Bridge Crane | Bridge Crane | 153d | 25-Sep-23 | 30-Apr-24 | 106d | G-PR-31-1100 McC Review - Bridge Crane 63d 25-Sep-23 22-Dec-23 11d, G-PR-31-1110 A/E Review & Approve - Bridge Crane 10d 26-Dec-23 09-Jan-24 11d, G-PR-31-1080 Fab & Deliver - Bridge Crane 80d 10-Jan-24 30-Apr-24 106d |
| Freezer / Cooler | Freezer / Cooler | 220d | 10-Aug-23 | 21-Aug-24 | -4d | G-PR-31-1220 McC Review - Freezer / Cooler 5d 10-Aug-23 30-Nov-23 -4d, G-PR-31-1230 A/E Review & Approve - Freezer / Cooler 10d 01-Dec-23 14-Dec-23 -4d, G-PR-31-1200 Fab & Deliver - Freezer / Cooler 175d 15-Dec-23 21-Aug-24 -4d |
| Ice Machine | Ice Machine | 192d | 12-Jun-23 | 21-Mar-24 | 103d | G-PR-31-2410 Submittal Prep - Ice Machine 20d 12-Jun-23 06-Oct-23 0d, G-PR-31-2420 McC Review - Ice Machine 5d 09-Oct-23 13-Oct-23 59d, G-PR-31-2430 A/E Review & Approve - Ice Machine 10d 16-Oct-23 27-Oct-23 59d, G-PR-31-2400 Fab & Deliver - Ice Machine 100d 30-Oct-23 21-Mar-24 103d |
| Paint Booth | Paint Booth | 270d | 09-Oct-23 | 29-Oct-24 | 11d | G-PR-31-1250 Submittal Prep - Paint Booth 15d 09-Oct-23 27-Oct-23 11d, G-PR-31-1260 McC Review - Paint Booth 5d 30-Oct-23 03-Nov-23 11d, G-PR-31-1270 A/E Review & Approve - Paint Booth 10d 06-Nov-23 17-Nov-23 11d, G-PR-31-1240 Fab & Deliver - Paint Booth 240d 20-Nov-23 29-Oct-24 11d |
| Auto Lifts | Auto Lifts | 222d | 25-Aug-23 | 11-Jul-24 | 66d | G-PR-31-1980 McC Review - Auto Lifts 15d 25-Aug-23 22-Dec-23 11d, G-PR-31-1990 A/E Review & Approve - Auto Lifts 10d 26-Dec-23 09-Jan-24 11d, G-PR-31-1960 Fab & Deliver - Auto Lifts 130d 10-Jan-24 11-Jul-24 66d |
| BP Fluid Systems | BP Fluid Systems | 145d | 09-Oct-23 | 02-May-24 | 109d | G-PR-31-2170 Submittal Prep - Eaton Fluid Systems 30d 09-Oct-23 17-Nov-23 29d, G-PR-31-2180 McC Review - Eaton Fluid Systems 5d 20-Nov-23 28-Nov-23 29d, G-PR-31-2190 A/E Review & Approve - Eaton Fluid Systems 10d 29-Nov-23 12-Dec-23 29d, G-PR-31-2160 Fab & Deliver - Eaton Fluid Systems 100d 13-Dec-23 02-May-24 109d |
| Warehouse Racking | Warehouse Racking | 148d | 09-Oct-23 | 07-May-24 | 138d | G-PR-31-1810 Submittal Prep - Warehouse Racking 53d 09-Oct-23 22-Dec-23 138d, G-PR-31-1820 McC Review - Warehouse Racking 5d 26-Dec-23 02-Jan-24 138d, G-PR-31-1830 A/E Review & Approve - Warehouse Racking 10d 03-Jan-24 16-Jan-24 138d, G-PR-31-1800 Fab & Deliver - Warehouse Racking 80d 17-Jan-24 07-May-24 138d |
| Lockers | Lockers | 138d | 25-Sep-23 | 09-Apr-24 | 138d | G-PR-31-1330 Submittal Prep - Lockers 63d 25-Sep-23 22-Dec-23 138d, G-PR-31-1340 McC Review - Lockers 5d 26-Dec-23 02-Jan-24 138d, G-PR-31-1350 A/E Review & Approve - Lockers 10d 03-Jan-24 16-Jan-24 138d, G-PR-31-1320 Fab & Deliver - Lockers 60d 17-Jan-24 09-Apr-24 138d |
| Tile | Tile | 193d | 21-Jul-23 | 23-Apr-24 | 92d | G-PR-31-1490 Submittal Prep - Tile 60d 21-Jul-23 22-Dec-23 92d, G-PR-31-1500 McC Review - Tile 5d 26-Dec-23 02-Jan-24 92d, G-PR-31-1510 A/E Review & Approve - Tile 10d 03-Jan-24 16-Jan-24 92d, G-PR-31-1480 Fab & Deliver - Tile 70d 17-Jan-24 23-Apr-24 92d |
| Carpet | Carpet | 203d | 21-Jul-23 | 07-May-24 | 119d | G-PR-31-1530 Submittal Prep - Carpet 60d 21-Jul-23 22-Dec-23 119d, G-PR-31-1540 McC Review - Carpet 5d 26-Dec-23 02-Jan-24 119d, G-PR-31-1550 A/E Review & Approve - Carpet 10d 03-Jan-24 16-Jan-24 119d, G-PR-31-1520 Fab & Deliver - Carpet 80d 17-Jan-24 07-May-24 119d |
| Concrete Seal | Concrete Seal | 100d | 21-Jul-23 | 12-Dec-23 | 261d | G-PR-31-1570 Submittal Prep - Concrete Seal 60d 21-Jul-23 27-Oct-23 261d, G-PR-31-1580 McC Review - Concrete Seal 5d 30-Oct-23 03-Nov-23 261d, G-PR-31-1590 A/E Review & Approve - Concrete Seal 10d 06-Nov-23 17-Nov-23 261d, G-PR-31-2040 Fab & Deliver - Concrete Seal 15d 20-Nov-23 12-Dec-23 261d |
| Misc Metals | Misc Metals | 125d | 21-Jul-23 | 18-Jan-24 | 232d | G-PR-31-1610 Submittal Prep - Misc Metals 60d 21-Jul-23 27-Oct-23 232d, G-PR-31-1620 McC Review - Misc Metals 5d 30-Oct-23 03-Nov-23 232d, G-PR-31-1630 A/E Review & Approve - Misc Metals 10d 06-Nov-23 17-Nov-23 232d, G-PR-31-1600 Fab & Deliver - Misc Metals 40d 20-Nov-23 18-Jan-24 232d |
| Interior Fencing | Interior Fencing | 130d | 21-Jul-23 | 25-Jan-24 | 241d | G-PR-31-2070 Submittal Prep - Interior Fencing 60d 21-Jul-23 03-Nov-23 241d, G-PR-31-2080 McC Review - Interior Fencing 5d 06-Nov-23 10-Nov-23 241d, G-PR-31-2090 A/E Review & Approve - Interior Fencing 10d 13-Nov-23 28-Nov-23 241d, G-PR-31-2060 Fab & Deliver - Interior Fencing 40d 29-Nov-23 25-Jan-24 241d |
| AOA / Exterior Fencing | AOA / Exterior Fencing | 125d | 21-Jul-23 | 18-Jan-24 | 227d | G-PR-31-2830 Submittal Prep - AOA / Exterior Fencing 60d 21-Jul-23 27-Oct-23 227d, G-PR-31-2840 McC Review - AOA / Exterior Fencing 5d 30-Oct-23 03-Nov-23 227d, G-PR-31-2850 A/E Review & Approve - AOA / Exterior Fencing 10d 06-Nov-23 17-Nov-23 227d, G-PR-31-2820 Fab & Deliver - AOA / Exterior Fencing 40d 20-Nov-23 18-Jan-24 227d |
| Specialties | Specialties | 148d | 25-Sep-23 | 23-Apr-24 | 107d | G-PR-31-1690 Submittal Prep - Specialties 63d 25-Sep-23 22-Dec-23 107d, G-PR-31-1700 McC Review - Specialties 5d 26-Dec-23 02-Jan-24 107d, G-PR-31-1710 A/E Review & Approve - Specialties 10d 03-Jan-24 16-Jan-24 107d, G-PR-31-1680 Fab & Deliver - Specialties 70d 17-Jan-24 23-Apr-24 107d |
| Millwork / Cabinets | Millwork / Cabinets | 148d | 25-Sep-23 | 23-Apr-24 | 97d | G-PR-31-1730 Submittal Prep - Millwork / Cabinets 63d 25-Sep-23 22-Dec-23 97d, G-PR-31-1740 McC Review - Millwork / Cabinets 5d 26-Dec-23 02-Jan-24 97d, G-PR-31-1750 A/E Review & Approve - Millwork / Cabinets 10d 03-Jan-24 16-Jan-24 97d, G-PR-31-1720 Fab & Deliver - Millwork / Cabinets 70d 17-Jan-24 23-Apr-24 97d |
| Doors & Hardware | Doors & Hardware | 177d | 26-Sep-23 | 05-Jun-24 | 81d | G-PR-31-1850 Submittal Prep - Doors & Hardware 62d 26-Sep-23 22-Dec-23 81d, G-PR-31-1860 McC Review - Doors & Hardware 5d 26-Dec-23 02-Jan-24 81d, G-PR-31-1870 A/E Review & Approve - Doors & Hardware 10d 03-Jan-24 16-Jan-24 81d, G-PR-31-1840 Fab & Deliver - Doors & Hardware 100d 17-Jan-24 05-Jun-24 81d |
| Door Frames | Door Frames | 157d | 26-Sep-23 | 07-May-24 | 29d | G-PR-31-1890 Submittal Prep - Door Frames 62d 26-Sep-23 22-Dec-23 29d, G-PR-31-1900 McC Review - Door Frames 5d 26-Dec-23 02-Jan-24 29d, G-PR-31-1910 A/E Review & Approve - Door Frames 10d 03-Jan-24 16-Jan-24 29d, G-PR-31-1880 Fab & Deliver - Door Frames 80d 17-Jan-24 07-May-24 29d |
| Dock Levelers | Dock Levelers | 246d | 06-Jun-23 | 23-May-24 | 116d | G-PR-31-2010 Submittal Prep - Dock Levelers 20d 06-Jun-23 20-Oct-23 -10d, G-PR-31-2020 McC Review - Dock Levelers 10d 23-Oct-23 03-Nov-23 116d, G-PR-31-2030 A/E Review & Approve - Dock Levelers 10d 06-Nov-23 17-Nov-23 116d, G-PR-31-2000 Fab & Deliver - Dock Levelers 130d 20-Nov-23 23-May-24 116d |
| Asphalt | Asphalt | 105d | 21-Jul-23 | 19-Dec-23 | 231d | G-PR-31-1370 Submittal Prep - Asphalt 60d 21-Jul-23 27-Oct-23 231d, G-PR-31-1380 McC Review - Asphalt 5d 30-Oct-23 03-Nov-23 231d, G-PR-31-1390 A/E Review & Approve - Asphalt 10d 06-Nov-23 17-Nov-23 231d, G-PR-31-1360 Fab & Deliver - Asphalt 20d 20-Nov-23 19-Dec-23 231d |
| Striping | Striping | 165d | 21-Jul-23 | 14-Mar-24 | 171d | G-PR-31-1650 Submittal Prep - Striping 60d 21-Jul-23 27-Oct-23 171d, G-PR-31-1660 McC Review - Striping 5d 30-Oct-23 03-Nov-23 171d, G-PR-31-1670 A/E Review & Approve - Striping 10d 06-Nov-23 17-Nov-23 171d, G-PR-31-1640 Fab & Deliver - Striping 80d 20-Nov-23 14-Mar-24 171d |
| Site Concrete | Site Concrete | 115d | 21-Jul-23 | 04-Jan-24 | 216d | G-PR-31-1410 Submittal Prep - Site Concrete 60d 21-Jul-23 27-Oct-23 216d, G-PR-31-1420 McC Review - Site Concrete 5d 30-Oct-23 03-Nov-23 216d, G-PR-31-1430 A/E Review & Approve - Site Concrete 10d 06-Nov-23 17-Nov-23 216d, G-PR-31-1400 Fab & Deliver - Site Concrete 30d 20-Nov-23 04-Jan-24 216d |
| Landscaping | Landscaping | 135d | 25-Sep-23 | 04-Apr-24 | 186d | G-PR-31-1450 Submittal Prep - Landscaping 60d 25-Sep-23 19-Dec-23 186d, G-PR-31-1460 McC Review - Landscaping 5d 20-Dec-23 27-Dec-23 186d, G-PR-31-1470 A/E Review & Approve - Landscaping 10d 28-Dec-23 11-Jan-24 186d, G-PR-31-1440 Fab & Deliver - Landscaping 60d 12-Jan-24 04-Apr-24 186d |
| VDC Modeling | VDC Modeling | 167d | 21-Aug-23 | 16-Apr-24 | 11d |  |
| SOG | SOG | 30d | 09-Oct-23 | 17-Nov-23 | -10d | G-VDC-1040 Incorporate Approved Material into SOG Model (Pipe, Fittings, Etc.) 10d 09-Oct-23 20-Oct-23 -10d, G-VDC-1050 Finalize Model / Develop Shop Dwgs for SOG 10d 23-Oct-23 03-Nov-23 -10d, G-VDC-1140 A/E Review & Approve Shop Dwgs for SOG 10d 06-Nov-23 17-Nov-23 -10d |
| Tilt Panels | Tilt Panels | 104d | 21-Aug-23 | 18-Jan-24 | -23d | G-PR-31-2720 Rebar Shop Dwgs for Tilt Panels 14d 21-Aug-23 05-Oct-23 -2d, G-VDC-1220 Incorporate Approved Material into Tilt Panels Mode l 10d 06-Nov-23 17-Nov-23 -23d, G-VDC-1230 Finalize Model / Develop Shop Dwgs for Tilt Panels 10d 20-Nov-23 05-Dec-23 -23d, G-VDC-1240 A/E Review & Approve Shop Dwgs for Tilt Panels 10d 06-Dec-23 19-Dec-23 -23d, G-PR-31-2520 Fab & Deliver - Tilt Panel Rebar / Insulation / Acc essories 20d 20-Dec-23 18-Jan-24 -23d |
| Interior Fitout | Interior Fitout | 70d | 10-Jan-24 | 16-Apr-24 | 11d | G-VDC-1100 Incorporate Approved Material into Model for Interi or Fitout 40d 10-Jan-24 05-Mar-24 11d, G-VDC-1120 Clash Coordination w/ Trades for Interior Fitout 10d 06-Mar-24 19-Mar-24 11d, G-VDC-1110 Finalize Model / Develop Shop Dwgs for Interior Fit out 10d 20-Mar-24 02-Apr-24 11d, G-VDC-1160 A/E Review & Approve Shop Dwgs for Interior Fitout 10d 03-Apr-24 16-Apr-24 11d |
| Construction | Construction | 449d | 12-Jun-23 | 02-May-25 | 30d |  |
| Earthwork | Earthwork | 71d | 12-Jun-23 | 06-Nov-23 | 206d | G-CON-6250 North Building Underdrain - Lift 2 - 524 LF (Grid J -A) 6d 22-Sep-23 28-Sep-23 -28d, G-CON-7800 Plumbing Sleeves at Underdrain - Building South 10d 18-Sep-23 29-Sep-23 -22d, G-CON-6930 Plumbing Sleeves at Underdrain - Building North 5d 29-Sep-23 05-Oct-23 -7d, G-CON-1470 Fill from Stockpile South Fill 2 Building & Region 7 - 1,900 CY's - Building Pad 1d 17-Oct-23 17-Oct-23 -15d, G-CON-1480 Certify Building Pad - North & Parking Areas 4d 18-Oct-23 23-Oct-23 -15d |
| FRAGNET 01 - New Geo-Technical Requirements | FRAGNET 01 - New Geo-Technical Requirements | 71d | 12-Jun-23 | 06-Nov-23 | 206d | G-FRG-01-1280 Cut Region 8 to 6 - 7,900 CY's 4d 21-Sep-23 25-Sep-23 -31d, G-FRG-01-1430 Jviation & GEG Coordinate for Direction at Failed A reas 10d 22-Sep-23 25-Sep-23 -25d, G-FRG-01-1180 Take Swell T est #2 of Stockpile South (South Ribbon ) after 10K CY's Place and Processed 10d 28-Aug-23 26-Sep-23 -31d, G-FRG-01-1390 Region 7 Cut to Fill 3 - 2,400 CY's 1d 26-Sep-23 26-Sep-23 -31d, G-FRG-01-1230 South Building Underdrain - Lift 2 - 1335 LF - (Gri d J-R) 8d 14-Sep-23 29-Sep-23 -30d, G-FRG-01-1050 Owner Review and Approval Pricing - New Geo Tech Re quirements 15d 21-Jul-23 02-Oct-23 31d, G-FRG-01-1250 Region 8 Cut to Fill 3 - 9,400 CY's (Region South) 5d 27-Sep-23 03-Oct-23 -31d, G-FRG-01-1420 Rework Top 2 Ft of Area 1B & Region 2 3d 29-Sep-23 03-Oct-23 -28d, G-FRG-01-1220 Fill from Stockpile South to Fill 1 Building - 16,5 00 CY's - Building Pad 7d 04-Oct-23 12-Oct-23 -31d, G-FRG-01-1400 Fill from Stockpile South to Fill 2 Building - 2,90 0 CY's - N Building Pad 2d 13-Oct-23 16-Oct-23 -15d, G-FRG-01-1340 Cut Region 8 to Fill 7 - 2,100 CY's 1d 18-Oct-23 18-Oct-23 15d, G-FRG-01-1300 Certify Building Pad - South & Parking Area 5d 13-Oct-23 19-Oct-23 -31d, G-FRG-01-1060 Additional Earthwork - Stockpile & Over Excavation & Fill Site 31d 12-Jun-23 24-Oct-23 15d, G-FRG-01-1350 Cut Region 9 to Fill 7 - 9,500 CY's 4d 19-Oct-23 24-Oct-23 15d, G-FRG-01-1290 Cut Region 9 & 10 to Export / Stockpile - 7,600 CY' s 3d 25-Oct-23 27-Oct-23 208d, G-FRG-01-1360 Pond Cut to Fill Region NW - 10,866 CY's 5d 25-Oct-23 31-Oct-23 206d, G-FRG-01-1370 Pond/Trac t to Stockpile or Cargo - 7,290 CY's 4d 01-Nov-23 06-Nov-23 206d |
| Site Utilities | Site Utilities | 289d | 04-Oct-23 | 20-Nov-24 | 143d |  |
| Storm / Sewer / Water | Storm / Sewer / Water | 192d | 04-Oct-23 | 05-Jul-24 | 240d |  |
| Sanitary Sewer | Sanitary Sewer | 18d | 04-Oct-23 | 27-Oct-23 | 414d | G-CON-5125 Sanitary EX MH-1 to MH6 - 92LF+CTE+MH 2d 04-Oct-23 05-Oct-23 6d, G-CON-5145 Sanitary MH6 to MH3 - 327LF+OWS+3MH 4d 17-Oct-23 20-Oct-23 6d, G-CON-8390 Sanitary MH3 to MH1 - 406LF + MH 3d 23-Oct-23 25-Oct-23 6d, G-CON-8400 Sanitary Testing 2d 26-Oct-23 27-Oct-23 414d |
| Storm Sewer | Storm Sewer | 55d | 06-Oct-23 | 26-Dec-23 | 173d | G-CON-5135 Storm SDG South 1 - MH 1 to MH3 - 498LF+4MH 4d 06-Oct-23 11-Oct-23 6d, G-CON-5070 Storm SDG South 1 - Laterals - 172LF+MH+3INLET 3d 12-Oct-23 16-Oct-23 6d, G-CON-5270 Storm SDG West 1 - MH1 to MH13 - 253LF+4MH 4d 26-Oct-23 31-Oct-23 6d, G-CON-7790 Storm SDG North 3 - MH13 to MH27 - 456LF+4MH 4d 01-Nov-23 06-Nov-23 6d, G-CON-5155 Storm SDG North 1 - MH5 to IN10 - 390LF+2MH+2INLET 3d 07-Nov-23 09-Nov-23 6d, G-CON-5165 Storm SDG East 1 - MH16 to MH18 - 234LF+2MH 2d 10-Nov-23 13-Nov-23 173d, G-CON-5175 Storm SDG East 2 - IN7 to IN6 - 168LF+2INLET 2d 14-Nov-23 15-Nov-23 173d, G-CON-8410 Storm SDG East 3 - IN9 to MH20 - 168LF+2MH+INLET 2d 16-Nov-23 17-Nov-23 173d, G-CON-8420 Storm SDG West 1 - MH13 to FES - 252LF+2MH+FES 3d 20-Nov-23 22-Nov-23 173d, G-CON-8430 Storm SDG West 3 - OS to EX IN - 366LF+2MH 4d 27-Nov-23 30-Nov-23 173d, G-CON-8440 Storm SDG South 1 - MH3 to FES - 340LF+MH+FES 3d 01-Dec-23 05-Dec-23 173d, G-CON-8450 Storm SGD North 1 - IN16 to MH5 - 328LF+4MH+INLET 3d 06-Dec-23 08-Dec-23 173d, G-CON-8460 Storm SDG West 2 - IN14 to IN15 - 100LF+2INLET 1d 11-Dec-23 11-Dec-23 173d, G-CON-8470 Storm SDG West 6 & SDG North 2 - 32LF+2INLET 1d 12-Dec-23 12-Dec-23 173d, G-CON-8480 Storm SDG West 4 & SDG West 5 - 232LF+8FES 3d 13-Dec-23 15-Dec-23 173d, G-CON-8490 Storm SDG West 1 - Laterals - 81LF+2INLET 1d 18-Dec-23 18-Dec-23 173d, G-CON-8500 Storm Testing 5d 19-Dec-23 26-Dec-23 173d |
| Water Main | Water Main | 36d | 09-Oct-23 | 29-Nov-23 | 6d | G-CON-5090 Water STA 0+00 to 4+00 - 400LF+CTE+3 LOWER 4d 09-Oct-23 12-Oct-23 38d, G-CON-5860 Water STA 4+00 to 6+50 - 250LF+2 LOWER 3d 01-Nov-23 03-Nov-23 10d, G-CON-5220 Water STA 6+50 to 13+00 - 650LF+3 LOWER 5d 10-Nov-23 16-Nov-23 6d, G-CON-8530 Water STA 13+00 to 17+52 - 450LF+CTE+3 LOWER 5d 17-Nov-23 27-Nov-23 6d, G-CON-8540 Water 3" & 3/4" Building Services 1d 28-Nov-23 28-Nov-23 6d, G-CON-8550 Water Test 1d 29-Nov-23 29-Nov-23 6d |
| Gas Ex/BF | Gas Ex/BF | 22d | 05-Jun-24 | 05-Jul-24 | 38d | G-CON-8510 Excavate Gas Main - 1000LF 6d 05-Jun-24 12-Jun-24 38d, G-CON-8520 Backfill Gas Main - 1000LF 6d 27-Jun-24 05-Jul-24 38d |
| Electrical / Gas | Electrical / Gas | 274d | 25-Oct-23 | 20-Nov-24 | -15d | G-CON-5160 Electrical Ductbank (from Xcel Tie-in) 15d 25-Oct-23 14-Nov-23 -10d, G-CON-5150 Telecom Ductbank for Fiber Optic Line 20d 15-Nov-23 14-Dec-23 -10d, G-CON-5140 Xcel - Gas Line Install 10d 13-Jun-24 26-Jun-24 38d, G-CON-6760 Set Transformer Vault & F/R/P Electrical Gear Pad f or SCC-101 5d 24-Jun-24 28-Jun-24 77d, G-CON-5130 Xcel - Electrical MV Ductbank Install 25d 07-Aug-24 11-Sep-24 26d, G-CON-6750 Install SCC-101 (Feed from Xcel) 2d 12-Sep-24 13-Sep-24 26d, G-CON-5170 Xcel Transformer - Set & Pull Wire 5d 16-Sep-24 20-Sep-24 26d, G-CON-5180 Xcel Set Meter - After Electrical Final Interiors 2d 19-Nov-24 20-Nov-24 -15d |
| Structure | Structure | 268d | 15-Aug-23 | 03-Sep-24 | -5d |  |
| Mockup | Mockup | 94d | 25-Sep-23 | 07-Feb-24 | 86d |  |
| Mockup Procurement | Mockup Procurement | 90d | 25-Sep-23 | 01-Feb-24 | 87d | MU-1070 MU Procure - Framing 5d 09-Oct-23 13-Oct-23 22d, MU-1090 MU Procure - Paint 5d 09-Oct-23 13-Oct-23 22d, MU-1040 MU Procure - Formwork 10d 09-Oct-23 20-Oct-23 17d, MU-1020 MU Procure - Rebar 10d 20-Oct-23 02-Nov-23 8d, MU-1110 MU Procure - Roofing 35d 25-Sep-23 10-Nov-23 2d, MU-1060 MU Procure - Metal Panels & Coping Cap 10d 06-Nov-23 17-Nov-23 136d, MU-1030 MU Procure - Steel 15d 06-Nov-23 28-Nov-23 1d, MU-1100 MU Procure - Plumbing 54d 25-Sep-23 11-Dec-23 -10d, MU-1050 MU Procure - Glazing 40d 16-Nov-23 16-Jan-24 99d, MU-1080 MU Procure - Translucent Panels 60d 06-Nov-23 01-Feb-24 86d |
| Mockup Construction | Mockup Construction | 59d | 13-Nov-23 | 07-Feb-24 | 86d | MU-1010 MU - Excavate and Grade for footing/SOG 2d 13-Nov-23 14-Nov-23 2d, MU-1120 MU - Install Rebar and Place Embeds for Grade Beam/ SOG (Pre-Pour Inspection) 2d 15-Nov-23 16-Nov-23 2d, MU-1130 MU - P/F/C GB/SOG/Waste Slab 1d 16-Nov-23 16-Nov-23 2d, MU-1140 MU - Strip, Clean, and Prep Slabs 1d 17-Nov-23 17-Nov-23 2d, MU-1150 MU - Layout and Form up Tilt Panels 2d 20-Nov-23 21-Nov-23 2d, MU-1160 MU - Place WWF and MEP Rough-in (Pre-Pour Inspectio n) 1d 12-Dec-23 12-Dec-23 -10d, MU-1170 MU - P/F Architectural Pour 1 and Insulation/Pins 1d 13-Dec-23 13-Dec-23 -10d, MU-1180 MU - Install Rebar, Embeds, and Pick Points for Pou r 2 (Pre-Pour Inspection 2d 14-Dec-23 15-Dec-23 -10d, MU-1190 MU - P/F/C Pour 2 3d 15-Dec-23 19-Dec-23 -10d, MU-1200 MU - Weld Connections (Inspect Welds) 1d 19-Dec-23 19-Dec-23 -10d, MU-1210 MU - Install Bracing for Tilt Panels 1d 20-Dec-23 20-Dec-23 -10d, MU-1220 MU - Tilt Crane Mob (Assembly Inspection) 1d 21-Dec-23 21-Dec-23 -10d, MU-1230 MU - Place Rigging and Erect Tilt Panels 1d 21-Dec-23 21-Dec-23 -10d, MU-1250 MU - Demob Crane 1d 21-Dec-23 21-Dec-23 -10d, MU-1240 MU - Weld Connections (Inspect Welds) 1d 22-Dec-23 22-Dec-23 -10d, MU-1260 MU - AE Review and Sign Off on Concrete 1d 26-Dec-23 26-Dec-23 -10d, MU-1270 MU - Backfill Pour Back Strip 1d 27-Dec-23 27-Dec-23 -10d, MU-1280 MU - Bulkhead Pour Back Strip and P/F/C pour back ( Pre-Pour Inspection) 2d 27-Dec-23 28-Dec-23 -10d, MU-1290 MU - Exterior Caulking 1d 29-Dec-23 29-Dec-23 105d, MU-1370 MU - AE Review and Sign Off on Tilt Mockup 1d 29-Dec-23 29-Dec-23 -10d, MU-1300 MU - Place Exterior Coating 1d 02-Jan-24 02-Jan-24 105d, MU-1310 MU - AE Review and Sign Off on Coating 1d 03-Jan-24 03-Jan-24 110d, MU-1320 MU - Install Canopy Framing and Metal Decking 2d 03-Jan-24 04-Jan-24 105d, MU-1330 MU - Install Roof Drain Piping (Close-in Inspection ) 1d 04-Jan-24 04-Jan-24 105d, MU-1340 MU - Install Sheathing/Roofing System at Canopy, Tr im Out Drain and Scupper 1d 05-Jan-24 05-Jan-24 105d, MU-1350 MU - Install Metal Panels and Coping Cap 2d 02-Feb-24 05-Feb-24 86d, MU-1360 MU - Install Glazing and Translucent Panel 2d 05-Feb-24 06-Feb-24 86d, MU-1380 MU - AE Review and Sign Off on Mockup w/ Exterior F inishes 1d 07-Feb-24 07-Feb-24 86d |
| Foundations & SOG | Foundations & SOG | 268d | 15-Aug-23 | 03-Sep-24 | -6d |  |
| Drilled Piers | Drilled Piers | 74d | 15-Aug-23 | 29-Nov-23 | -17d | G-CON-5060 Pre-Mob Prep for Drilled Piers (7460 Review with DE N) 20d 15-Aug-23 09-Oct-23 -23d, G-CON-5010 Mobilize Equipment for Drilled Piers 2d 20-Oct-23 23-Oct-23 -31d, G-CON-5870 Drilled Piers Sequence W1 - Grid 5-14, M-N - Orange 5d 24-Oct-23 30-Oct-23 -31d, G-CON-5880 Drilled Piers Sequence W2 - Grid 10-15, M-R - Blue 5d 31-Oct-23 06-Nov-23 -30d, G-CON-5890 Drilled Piers Sequence W3 - Grid 8-16, J-R - Green 5d 07-Nov-23 13-Nov-23 -30d, G-CON-5900 Drilled Piers Sequence W4 - Grid 3-14, A-L Red 5d 14-Nov-23 20-Nov-23 -30d, G-CON-5910 Drilled Piers Sequence W5 - Grid 1-4, A-Q Magenta 5d 21-Nov-23 29-Nov-23 -17d |
| Earthwork for Grade Beams | Earthwork for Grade Beams | 48d | 31-Oct-23 | 10-Jan-24 | -27d | G-CON-6350 Underground Electrical & Telecomm Ductbank Under Gr ade Beams 5d 31-Oct-23 06-Nov-23 -31d, G-CON-5920 Exc / Grade 1:1 & Place ABC for GB - Drilled Piers Sequence W1 - Orange 7d 07-Nov-23 15-Nov-23 -31d, G-CON-6790 Underground Plumbing Under Grade Beams (West to Eas t) 5d 17-Nov-23 27-Nov-23 -30d, G-CON-5930 Exc / Grade 1:1 & Place ABC for GB - Drilled Piers Sequence W2 - Blue 7d 16-Nov-23 28-Nov-23 -31d, G-CON-5940 Exc / Grade 1:1 & Place ABC for GB - Drilled Piers Sequence W3 - Green 7d 29-Nov-23 07-Dec-23 -31d, G-CON-6150 Underground Plumbing for SOG 1 Grid L-Q, 10-15 8d 28-Nov-23 07-Dec-23 -30d, G-CON-5950 Exc / Grade 1:1 & Place ABC for GB - Drilled Piers Sequence W4 - Red 7d 08-Dec-23 18-Dec-23 -31d, G-CON-8000 Underground Electrical for SOG 1 Grid L-Q, 10-15 10d 05-Dec-23 18-Dec-23 -30d, G-CON-7770 Underground Plumbing for SOG 2 Grid L-Q, 10-1 8d 08-Dec-23 19-Dec-23 -28d, G-CON-5960 Exc / Grade 1:1 & Place ABC for GB - Drilled Piers Sequence W5 - Magenta 7d 19-Dec-23 28-Dec-23 -30d, G-CON-7780 Underground Plumbing for SOG 3 Grid Grid L-A, 6-1 8d 20-Dec-23 02-Jan-24 -23d, G-CON-8010 Underground Electrical for SOG 2 Grid L-Q, 10-1 10d 19-Dec-23 03-Jan-24 -30d, G-CON-8020 Underground Electrical for SOG 3 Grid Grid L-A, 6-1 5d 04-Jan-24 10-Jan-24 -27d |
| Grade Beams | Grade Beams | 49d | 16-Nov-23 | 29-Jan-24 | 102d |  |
| Crew 1 - Grade Beams | Crew 1 - Grade Beams | 49d | 16-Nov-23 | 29-Jan-24 | 102d |  |
| GB2 - Grid Q, 5-12 | GB2 - Grid Q, 5-12 | 9d | 16-Nov-23 | 30-Nov-23 | -22d | G-CON-1060 GB2 Layout Grade Beams - Grid Q, 5-12 1d 16-Nov-23 16-Nov-23 -31d, G-CON-5210 GB2 Form One Side of GB & Install Void Form - Grid Q, 5-12 1d 17-Nov-23 17-Nov-23 -31d, G-CON-5230 GB2 Install Rebar for GB - Grid Q, 5-12 2d 20-Nov-23 21-Nov-23 -24d, G-CON-5970 GB2 Close Form for GB - Grid Q, 5-12 2d 21-Nov-23 22-Nov-23 -24d, G-CON-5980 GB2 Install Anchor Bolts/ Clean Up - Grid Q, 5-12 2d 21-Nov-23 22-Nov-23 -24d, G-CON-5990 GB2 Inspection - Grid Q, 5-12 1d 22-Nov-23 22-Nov-23 -24d, G-CON-5240 GB2 Set and Pour GB - Grid Q, 5-12 3d 27-Nov-23 29-Nov-23 -22d, G-CON-5260 GB2 Strip, Clean, & Move Formwork - Grid Q, 5-12 1d 30-Nov-23 30-Nov-23 -22d |
| GB4 - Grid Q-P, 12-15 | GB4 - Grid Q-P, 12-15 | 9d | 28-Nov-23 | 08-Dec-23 | -26d | G-CON-5480 GB4 Layout Grade Beams - Grid Q-P, 12-15 1d 28-Nov-23 28-Nov-23 -26d, G-CON-5250 GB4 Form One Side of GB & Install Void Form - Grid Q-P, 12-15 1d 29-Nov-23 29-Nov-23 -26d, G-CON-5280 GB4 Install Rebar for GB - Grid Q-P, 12-15 2d 30-Nov-23 01-Dec-23 -26d, G-CON-6000 GB4 Close Form for GB - Grid Q-P, 12-15 2d 01-Dec-23 04-Dec-23 -26d, G-CON-6010 GB4 Install Anchor Bolts/ Clean Up - Grid Q-P, 12-1 5 2d 01-Dec-23 04-Dec-23 -26d, G-CON-6020 GB4 Inspection - Grid Q-P, 12-15 1d 04-Dec-23 04-Dec-23 -26d, G-CON-5290 GB4 Set and Pour GB - Grid Q-P, 12-15 3d 05-Dec-23 07-Dec-23 -26d, G-CON-5660 GB4 Strip, Clean, & Move Formwork - Grid Q-P, 12-1 5 1d 08-Dec-23 08-Dec-23 -26d |
| GB6 - Grid L-N, 13-15 | GB6 - Grid L-N, 13-15 | 19d | 01-Dec-23 | 28-Dec-23 | -31d | G-CON-5490 GB6 Layout Grade Beams - Grid L-N, 13-15 1d 01-Dec-23 01-Dec-23 -22d, G-CON-5300 GB6 Form One Side of GB & Install Void Form - Grid L-N, 13-15 1d 08-Dec-23 08-Dec-23 -26d, G-CON-5320 GB6 nstall Rebar for GB - Grid L-N, 13-15 2d 11-Dec-23 12-Dec-23 -25d, G-CON-5310 GB6 Close Form for GB - Grid L-N, 13-15 2d 20-Dec-23 21-Dec-23 -31d, G-CON-5350 GB6 Install Anchor Bolts/ Clean Up - Grid L-N, 13-1 5 2d 20-Dec-23 21-Dec-23 -31d, G-CON-5400 GB6 Inspection - Grid L-N, 13-15 1d 21-Dec-23 21-Dec-23 -31d, G-CON-5340 GB6 Set and Pour GB - Grid L-N, 13-15 3d 22-Dec-23 27-Dec-23 -31d, G-CON-5370 GB6 Strip, Clean, & Move Formwork - Grid L-N, 13-1 5 1d 28-Dec-23 28-Dec-23 -31d |
| GB8 - Grid L, 7-13 | GB8 - Grid L, 7-13 | 15d | 11-Dec-23 | 02-Jan-24 | -31d | G-CON-7250 GB8 Layout Grade Beams - Grid L, 7-13 1d 11-Dec-23 11-Dec-23 -26d, G-CON-5330 GB8 Form One Side of GB & Install Void Form - Grid L, 7-13 1d 19-Dec-23 19-Dec-23 -31d, G-CON-5360 GB8 Install Rebar for GB - Grid L, 7-13 2d 20-Dec-23 21-Dec-23 -30d, G-CON-5440 GB8 Close Form for GB - Grid L, 7-13 2d 22-Dec-23 26-Dec-23 -31d, G-CON-6030 GB8 Install Anchor Bolts/ Clean Up - Grid L, 7-13 2d 22-Dec-23 26-Dec-23 -31d, G-CON-6040 GB8 Inspection - Grid L, 7-13 1d 26-Dec-23 26-Dec-23 -31d, G-CON-5380 GB8 Set and Pour GB - Grid L, 7-13 3d 27-Dec-23 29-Dec-23 -31d, G-CON-5670 GB8 Strip, Clean, & Move Formwork - Grid L, 7-13 1d 02-Jan-24 02-Jan-24 -31d |
| GB10 - Grid C-L, 6-8 | GB10 - Grid C-L, 6-8 | 10d | 29-Dec-23 | 12-Jan-24 | -30d | G-CON-5500 GB10 Layout Grade Beams - Grid C-L, 6-8 1d 29-Dec-23 29-Dec-23 -31d, G-CON-5390 GB10 Form One Side of GB & Install Void Form - Grid C-L, 6-8 1d 02-Jan-24 02-Jan-24 -31d, G-CON-5410 GB10 Install Rebar for GB - Grid C-L, 6-8 2d 03-Jan-24 04-Jan-24 -30d, G-CON-6050 GB10 Close Form for GB - Grid C-L, 6-8 2d 05-Jan-24 08-Jan-24 -31d, G-CON-6060 GB10 Install Anchor Bolts/ Clean Up - Grid C-L, 6-8 2d 05-Jan-24 08-Jan-24 -30d, G-CON-6070 GB10 Inspection - Grid C-L, 6-8 1d 08-Jan-24 08-Jan-24 -30d, G-CON-5430 GB10 Set and Pour GB - Grid C-L, 6-8 3d 09-Jan-24 11-Jan-24 -30d, G-CON-5460 GB10 Strip, Clean, & Move Formwork - Grid C-L, 6-8 1d 12-Jan-24 12-Jan-24 -30d |
| GB12 - Grid A-C, 1-6 | GB12 - Grid A-C, 1-6 | 10d | 03-Jan-24 | 16-Jan-24 | -31d | G-CON-7260 GB12 Layout Grade Beams - Grid A-C, 1-6 1d 03-Jan-24 03-Jan-24 -31d, G-CON-5420 GB12 Form One Side of GB & Install Void Form - Grid A-C, 1-6 1d 04-Jan-24 04-Jan-24 -31d, G-CON-5450 GB12 Install Rebar for GB - Grid A-C, 1-6 2d 05-Jan-24 08-Jan-24 -30d, G-CON-6080 GB12 Close Form for GB - Grid A-C, 1-6 2d 09-Jan-24 10-Jan-24 -31d, G-CON-6090 GB12 Install Anchor Bolts/ Clean Up - Grid A-C, 1-6 2d 09-Jan-24 10-Jan-24 -31d, G-CON-6100 GB12 Inspection - Grid A-C, 1-6 1d 10-Jan-24 10-Jan-24 -31d, G-CON-5470 GB12 Set and Pour GB - Grid A-C, 1-6 3d 11-Jan-24 15-Jan-24 -31d, G-CON-5680 GB12 Strip, Clean, & Move Formwork - Grid A-C, 1-6 1d 16-Jan-24 16-Jan-24 -31d |
| GB14 - Grid C-M, 1 | GB14 - Grid C-M, 1 | 9d | 15-Jan-24 | 25-Jan-24 | 104d | G-CON-7580 GB14 Layout Grade Beams - Grid C-M, 1 1d 15-Jan-24 15-Jan-24 102d, G-CON-7510 GB14 Form One Side of GB & Install Void Form - Grid C-M, 1 1d 16-Jan-24 16-Jan-24 102d, G-CON-7520 GB14 Install Rebar for GB - Grid C-M, 1 2d 17-Jan-24 18-Jan-24 102d, G-CON-7550 GB14 Close Form for GB - Grid C-M, 1 2d 18-Jan-24 19-Jan-24 102d, G-CON-7560 GB14 Install Anchor Bolts/ Clean Up - Grid C-M, 1 2d 18-Jan-24 19-Jan-24 104d, G-CON-7570 GB14 Inspection - Grid C-M, 1 1d 19-Jan-24 19-Jan-24 104d, G-CON-7530 GB14 Set and Pour GB - Grid C-M, 1 3d 22-Jan-24 24-Jan-24 104d, G-CON-7540 GB14 Strip, Clean, & Move Formwork - Grid C-M, 1 1d 25-Jan-24 25-Jan-24 104d |
| GB15 - Grid M-Q, 1-5 | GB15 - Grid M-Q, 1-5 | 10d | 16-Jan-24 | 29-Jan-24 | 102d | G-CON-7660 GB15 Layout Grade Beams - Grid M-Q, 1-5 1d 16-Jan-24 16-Jan-24 102d, G-CON-7590 GB15 Form One Side of GB & Install Void Form - Grid M-Q, 1-5 1d 17-Jan-24 17-Jan-24 102d, G-CON-7600 GB15 Install Rebar for GB - Grid M-Q, 1-5 2d 18-Jan-24 19-Jan-24 103d, G-CON-7630 GB15 Close Form for GB - Grid M-Q, 1-5 2d 22-Jan-24 23-Jan-24 102d, G-CON-7640 GB15 Install Anchor Bolts/ Clean Up - Grid M-Q, 1-5 2d 22-Jan-24 23-Jan-24 102d, G-CON-7650 GB15 Inspection - Grid M-Q, 1-5 1d 23-Jan-24 23-Jan-24 102d, G-CON-7610 GB15 Set and Pour GB - Grid M-Q, 1-5 3d 24-Jan-24 26-Jan-24 102d, G-CON-7620 GB15 Strip, Clean, & Move Formwork - Grid M-Q, 1-5 1d 29-Jan-24 29-Jan-24 102d |
| Crew 2 - Grade Beams & Pier Caps | Crew 2 - Grade Beams & Pier Caps | 36d | 20-Nov-23 | 12-Jan-24 | -29d |  |
| PC1 - Grid M-N,5-14 | PC1 - Grid M-N,5-14 | 7d | 20-Nov-23 | 30-Nov-23 | -17d | G-CON-7030 PC1 Layout Pier Caps - Grid M-N, 5-14 1d 20-Nov-23 20-Nov-23 -31d, G-CON-7040 PC1 Formwork Pier Caps & Install Void Form - Grid M -N, 5-14 1d 21-Nov-23 21-Nov-23 -31d, G-CON-7050 PC1 Install Rebar for Pier Caps - Grid M-N, 5-14 1d 22-Nov-23 22-Nov-23 -17d, G-CON-7070 PC1 Install Anchor Bolts/ Clean Up - Grid M-N, 5-14 1d 27-Nov-23 27-Nov-23 -17d, G-CON-7080 PC1 Inspection - Grid M-N, 5-14 1d 28-Nov-23 28-Nov-23 -17d, G-CON-7090 PC1 Set and Pour Pier Caps - Grid M-N, 5-14 1d 29-Nov-23 29-Nov-23 -17d, G-CON-7100 PC1 Strip, Clean, & Move Pier Caps Formwork - Grid M-N, 5-14 1d 30-Nov-23 30-Nov-23 -17d |
| GB3 - Grid R, 10-14 | GB3 - Grid R, 10-14 | 9d | 22-Nov-23 | 06-Dec-23 | -31d | G-CON-7340 GB3 Layout Grade Beams - Grid R, 10-14 1d 22-Nov-23 22-Nov-23 -31d, G-CON-7270 GB3 Form One Side of GB & Install Void Form - Grid R, 10-14 1d 27-Nov-23 27-Nov-23 -31d, G-CON-7280 GB3 Install Rebar for GB - Grid R, 10-14 2d 28-Nov-23 29-Nov-23 -31d, G-CON-7310 GB3 Close Form for GB - Grid R, 10-14 2d 29-Nov-23 30-Nov-23 -31d, G-CON-7320 GB3 Install Anchor Bolts/ Clean Up - Grid R, 10-14 2d 29-Nov-23 30-Nov-23 -31d, G-CON-7330 GB3 Inspection - Grid R, 10-14 1d 30-Nov-23 30-Nov-23 -31d, G-CON-7290 GB3 Set and Pour GB - Grid R, 10-14 3d 01-Dec-23 05-Dec-23 -31d, G-CON-7300 GB3 Strip, Clean, & Move Formwork - Grid R, 10-14 1d 06-Dec-23 06-Dec-23 -31d |
| GB5 - Grid N-R, 14-16 | GB5 - Grid N-R, 14-16 | 10d | 27-Nov-23 | 08-Dec-23 | -29d | G-CON-7420 GB5 Layout Grade Beams - Grid N-R, 14-16 1d 27-Nov-23 27-Nov-23 -31d, G-CON-7350 GB5 Form One Side of GB & Install Void Form - Grid N-R, 14-16 1d 28-Nov-23 28-Nov-23 -31d, G-CON-7360 GB5 Install Rebar for GB - Grid N-R, 14-16 2d 29-Nov-23 30-Nov-23 -28d, G-CON-7390 GB5 Close Form for GB - Grid N-R, 14-16 2d 01-Dec-23 04-Dec-23 -29d, G-CON-7400 GB5 Install Anchor Bolts/ Clean Up - Grid N-R, 14-1 6 2d 01-Dec-23 04-Dec-23 -29d, G-CON-7410 GB5 Inspection - Grid N-R, 14-16 1d 04-Dec-23 04-Dec-23 -29d, G-CON-7370 GB5 Set and Pour GB - Grid N-R, 14-16 3d 05-Dec-23 07-Dec-23 -29d, G-CON-7380 GB5 Strip, Clean, & Move Formwork - Grid N-R, 14-1 6 1d 08-Dec-23 08-Dec-23 -29d |
| GB7 - Grid J.1-P , 14-16 | GB7 - Grid J.1-P , 14-16 | 9d | 07-Dec-23 | 19-Dec-23 | -28d | G-CON-7500 GB7 Layout Grade Beams - Grid J.1-P, 14-16 1d 07-Dec-23 07-Dec-23 -31d, G-CON-7430 GB7 Form One Side of GB & Install Void Form - Grid J.1-P, 14-16 1d 08-Dec-23 08-Dec-23 -31d, G-CON-7440 GB7 Install Rebar for GB - Grid J.1-P , 14-16 2d 11-Dec-23 12-Dec-23 -31d, G-CON-7470 GB7 Close Form for GB - Grid J.1-P, 14-16 2d 12-Dec-23 13-Dec-23 -31d, G-CON-7480 GB7 Install Anchor Bolts/ Clean Up - Grid J.1-P, 14 -16 2d 12-Dec-23 13-Dec-23 -28d, G-CON-7490 GB7 Inspection - Grid J.1-P, 14-16 1d 13-Dec-23 13-Dec-23 -28d, G-CON-7450 GB7 Set and Pour GB - Grid J.1-P, 14-16 3d 14-Dec-23 18-Dec-23 -28d, G-CON-7460 GB7 Strip, Clean, & Move Formwork - Grid J.1-P, 14 -16 1d 19-Dec-23 19-Dec-23 -28d |
| GB9 - Grid J.1-L, 10-14 | GB9 - Grid J.1-L, 10-14 | 11d | 11-Dec-23 | 26-Dec-23 | -31d | G-CON-7740 GB9 Layout Grade Beams - Grid J.1-L, 10-14 1d 11-Dec-23 11-Dec-23 -29d, G-CON-7670 GB9 Form One Side of GB & Install Void Form - Grid J.1-L, 10-14 1d 14-Dec-23 14-Dec-23 -31d, G-CON-7680 GB9 Install Rebar for GB - Grid J.1-L, 10-14 2d 15-Dec-23 18-Dec-23 -31d, G-CON-7710 GB9 Close Form for GB - Grid J.1-L, 10-14 2d 18-Dec-23 19-Dec-23 -31d, G-CON-7720 GB9 Install Anchor Bolts/ Clean Up - Grid J.1-L, 10 -14 2d 18-Dec-23 19-Dec-23 -31d, G-CON-7730 GB9 Inspection - Grid J.1-L, 10-14 1d 19-Dec-23 19-Dec-23 -31d, G-CON-7690 GB9 Set and Pour GB - Grid J.1-L, 10-14 3d 20-Dec-23 22-Dec-23 -31d, G-CON-7700 GB9 Strip, Clean, & Move Formwork - Grid J.1-L, 10 -14 1d 26-Dec-23 26-Dec-23 -31d |
| PC11 - Grid B-L, 3-5 | PC11 - Grid B-L, 3-5 | 7d | 26-Dec-23 | 04-Jan-24 | -31d | G-CON-7110 PC11 Layout Pier Caps - Grid B-L, 3-5 1d 26-Dec-23 26-Dec-23 -31d, G-CON-7120 PC11 Formwork Pier Caps & Install Void Form - Grid B-L, 3-5 1d 27-Dec-23 27-Dec-23 -31d, G-CON-7130 PC11 Install Rebar for Pier Caps - Grid B-L, 3-5 1d 28-Dec-23 28-Dec-23 -31d, G-CON-7140 PC11 Install Anchor Bolts/ Clean Up - Grid B-L, 3-5 1d 29-Dec-23 29-Dec-23 -31d, G-CON-7150 PC11 Inspection - Grid B-L, 3-5 1d 02-Jan-24 02-Jan-24 -31d, G-CON-7160 PC11 Set and Pour Pier Caps - Grid B-L, 3-5 1d 03-Jan-24 03-Jan-24 -31d, G-CON-7170 PC11 Strip, Clean, & Move Pier Caps Formwork - Grid B-L, 3-5 1d 04-Jan-24 04-Jan-24 -31d |
| PC13 - Grid L-N, 2-4 | PC13 - Grid L-N, 2-4 | 7d | 04-Jan-24 | 12-Jan-24 | -29d | G-CON-7180 PC13 Layout Pier Caps - Grid L-N, 2-4 1d 04-Jan-24 04-Jan-24 -29d, G-CON-7190 PC13 Formwork Pier Caps & Install Void Form - Grid L-N, 2-4 1d 05-Jan-24 05-Jan-24 -29d, G-CON-7200 PC13 Install Rebar for Pier Caps - Grid L-N, 2-4 1d 08-Jan-24 08-Jan-24 -29d, G-CON-7210 PC13 Install Anchor Bolts/ Clean Up - Grid L-N, 2-4 1d 09-Jan-24 09-Jan-24 -29d, G-CON-7220 PC13 Inspection - Grid L-N, 2-4 1d 10-Jan-24 10-Jan-24 -29d, G-CON-7230 PC13 Set and Pour Pier Caps - Grid L-N, 2-4 1d 11-Jan-24 11-Jan-24 -29d, G-CON-7240 PC13 Strip, Clean, & Move Pier Caps Formwork - Grid L-N, 2-4 1d 12-Jan-24 12-Jan-24 -29d |
| SOG | SOG | 181d | 19-Dec-23 | 03-Sep-24 | -6d |  |
| SOG Pour #1 Grid L-Q, 10-15 | SOG Pour #1 Grid L-Q, 10-15 | 23d | 19-Dec-23 | 22-Jan-24 | -27d | G-CON-6110 Backfill & Rough Grade - SOG 1 - Grid L-Q, 10-15 5d 19-Dec-23 26-Dec-23 -29d, G-CON-6160 Granular Fill - SOG 1 - Grid L-Q, 10-15 4d 27-Dec-23 02-Jan-24 -29d, G-CON-1610 Electrical in Slab - SOG 1 - Grid L-Q, 10-15 3d 03-Jan-24 05-Jan-24 -27d, G-CON-6800 Plumbing in Slab - SOG 1 - Grid L-Q, 10-15 3d 03-Jan-24 05-Jan-24 -27d, G-CON-1070 Install Vapor Barrier - SOG 1 - Grid L-Q, 10-15 4d 08-Jan-24 11-Jan-24 -27d, G-CON-1550 Set Edge Form < 1' & Column Blockouts - SOG 1 - Gri d L-Q, 10-15 5d 09-Jan-24 15-Jan-24 -27d, G-CON-1560 Install Rebar & Slip Dowels - SOG 1 - Grid L-Q, 10- 15 4d 12-Jan-24 17-Jan-24 -27d, G-CON-1570 Install Hanging Form & Depressions - SOG 1 - Grid L -Q, 10-15 3d 16-Jan-24 18-Jan-24 -27d, G-CON-1580 Inspection & Clean Up - SOG 1 - Grid L-Q, 10-15 1d 18-Jan-24 18-Jan-24 -27d, G-CON-1590 Pour SOG - SOG 1 - Grid L-Q, 10-15 1d 19-Jan-24 19-Jan-24 -27d, G-CON-1240 Pour Waste Slab for Tilt - South & West 1d 22-Jan-24 22-Jan-24 -27d, G-CON-1600 Strip/ Clean C.J. & Patch Vapor Barrier - SOG 1 - G rid L-Q, 10-15 1d 22-Jan-24 22-Jan-24 -27d |
| SOG Pour #2 Grid L-A, 6-1 | SOG Pour #2 Grid L-A, 6-1 | 26d | 05-Jan-24 | 09-Feb-24 | -30d | G-CON-6120 Backfill & Rough Grade - SOG 2 - Grid L-A, 6-1 5d 05-Jan-24 11-Jan-24 -31d, G-CON-1040 Granular Fill - SOG 2 - Grid L-A, 6-1 4d 12-Jan-24 17-Jan-24 -31d, G-CON-6650 Electrical in Slab - SOG 2 - Grid L-A, 6-1 3d 18-Jan-24 22-Jan-24 -31d, G-CON-6810 Plumbing in Slab - SOG 2 - Grid L-A, 6-1 3d 18-Jan-24 22-Jan-24 -31d, G-CON-6170 Install Vapor Barrier - SOG 2 - Grid L-A, 6-1 4d 23-Jan-24 26-Jan-24 -31d, G-CON-6180 Set Edge Form < 1' & Column Blockouts - SOG 2 - Gri d L-A, 6-1 5d 26-Jan-24 01-Feb-24 -31d, G-CON-6190 Install Rebar & Slip Dowels - SOG 2 - Grid L-A, 6-1 4d 31-Jan-24 05-Feb-24 -31d, G-CON-6200 Install Hanging Form & Depressions - SOG 2 - Grid L -A, 6-1 3d 02-Feb-24 06-Feb-24 -31d, G-CON-6210 Inspection & Clean Up - SOG 2 - Grid L-A, 6-1 1d 06-Feb-24 06-Feb-24 -31d, G-CON-6220 Pour SOG - SOG 2 - Grid L-A, 6-1 1d 07-Feb-24 07-Feb-24 -31d, G-CON-6240 Pour Waste Slab for Tilt - Northwest 1d 08-Feb-24 08-Feb-24 -31d, G-CON-6230 Strip/ Clean C.J. & Patch Vapor Barrier - SOG 2 - G rid L-A, 6-1 2d 08-Feb-24 09-Feb-24 -30d |
| SOG Pour #3 Grid L-Q, 10-1 | SOG Pour #3 Grid L-Q, 10-1 | 28d | 17-Jan-24 | 23-Feb-24 | -31d | G-CON-6130 Backfill & Rough Grade - SOG 3 - Grid L-Q, 10-1 5d 17-Jan-24 23-Jan-24 -31d, G-CON-7760 Granular Fill - SOG 3 - Grid L-Q, 10-1 4d 24-Jan-24 29-Jan-24 -31d, G-CON-6670 Electrical in Slab - SOG 3 - Grid L-Q, 10-1 3d 30-Jan-24 01-Feb-24 -31d, G-CON-6820 Plumbing in Slab - SOG 3 - Grid L-Q, 10-1 3d 30-Jan-24 01-Feb-24 -31d, G-CON-6260 Install Vapor Barrier - SOG 3 - Grid L-Q, 10-1 5d 02-Feb-24 08-Feb-24 -31d, G-CON-6270 Set Edge Form < 1' & Column Blockouts - SOG 3 - Gri d L-Q, 10-1 7d 07-Feb-24 15-Feb-24 -31d, G-CON-6280 Install Rebar & Slip Dowels - SOG 3 - Grid L-Q, 10- 1 6d 12-Feb-24 19-Feb-24 -31d, G-CON-6290 Install Hanging Form & Depressions - SOG 3 - Grid L -Q, 10-1 4d 14-Feb-24 19-Feb-24 -31d, G-CON-6300 Inspection & Clean Up - SOG 3 - Grid L-Q, 10-1 1d 19-Feb-24 19-Feb-24 -31d, G-CON-6310 Pour SOG - SOG 3 - Grid L-Q, 10-1 1d 20-Feb-24 20-Feb-24 -31d, G-CON-6330 Pour Waste Slab for Tilt - North 1d 21-Feb-24 21-Feb-24 -31d, G-CON-6320 Strip/ Clean C.J. & Patch Vapor Barrier - SOG 3 - G rid L-Q, 10-1 3d 21-Feb-24 23-Feb-24 -31d |
| SOG Pour #4 (After Steel) | SOG Pour #4 (After Steel) | 25d | 23-Jul-24 | 26-Aug-24 | -2d | G-CON-7810 Plumbing Perimeter Trench Drain - Pour 4 6d 23-Jul-24 30-Jul-24 -6d, G-CON-7830 Backfill Perimeter Trench Drain - Pour 4 3d 31-Jul-24 02-Aug-24 -4d, G-CON-6850 Plumbing in Slab - Pour 4 4d 06-Aug-24 09-Aug-24 -5d, G-CON-6510 Install Vapor Barrier - Pour 4 4d 12-Aug-24 15-Aug-24 -5d, G-CON-6520 Set Edge Form < 1' & Column Blockouts - Pour 4 4d 13-Aug-24 16-Aug-24 -5d, G-CON-6530 Install Rebar & Slip Dowels - Pour 4 4d 16-Aug-24 21-Aug-24 -5d, G-CON-6540 Install Hanging Form & Depressions - Pour 4 3d 20-Aug-24 22-Aug-24 -4d, G-CON-6550 Inspection & Clean Up - Pour 4 1d 22-Aug-24 22-Aug-24 -2d, G-CON-6560 Pour SOG - Pour 4 1d 23-Aug-24 23-Aug-24 -2d, G-CON-6570 Strip/ Clean C.J. & Patch Vapor Barrier - Pour 4 1d 26-Aug-24 26-Aug-24 -2d |
| SOG Pour #5 (After Steel) | SOG Pour #5 (After Steel) | 24d | 31-Jul-24 | 03-Sep-24 | -6d | G-CON-7820 Plumbing Perimeter Trench Drain - Pour 5 6d 31-Jul-24 07-Aug-24 -6d, G-CON-7840 Backfill Perimeter Trench Drain - Pour 5 3d 08-Aug-24 12-Aug-24 -6d, G-CON-6860 Plumbing in Slab - Pour 5 4d 13-Aug-24 16-Aug-24 -6d, G-CON-6580 Install Vapor Barrier - Pour 5 4d 19-Aug-24 22-Aug-24 -6d, G-CON-6590 Set Edge Form < 1' & Column Blockouts - Pour 5 4d 20-Aug-24 23-Aug-24 -6d, G-CON-6600 Install Rebar & Slip Dowels - Pour 5 4d 23-Aug-24 28-Aug-24 -6d, G-CON-6610 Install Hanging Form & Depressions - Pour 5 3d 27-Aug-24 29-Aug-24 -6d, G-CON-6620 Inspection & Clean Up - Pour 5 1d 29-Aug-24 29-Aug-24 -6d, G-CON-6630 Pour SOG - Pour 5 1d 30-Aug-24 30-Aug-24 -6d, G-CON-6640 Strip/ Clean C.J. & Patch Vapor Barrier - Pour 5 1d 03-Sep-24 03-Sep-24 -6d |
| Tilt Structure | Tilt Structure | 148d | 23-Jan-24 | 19-Aug-24 | 5d |  |
| Tilt Pour #01 Panels 1-21 | Tilt Pour #01 Panels 1-21 | 31d | 23-Jan-24 | 05-Mar-24 | 9d | G-STRT-1000 Layout Tilt Wall Panels - Panels 1-21 3d 23-Jan-24 25-Jan-24 -27d, G-CON-1250 Form Tilt Wall Panels - Panels 1-21 8d 25-Jan-24 05-Feb-24 -27d, G-CON-1630 Prep Slab & Install Embeds - Panels 1-21 5d 30-Jan-24 05-Feb-24 8d, G-STRT-1020 Install Wire Mesh Arch Panel - Panels 1-21 3d 06-Feb-24 08-Feb-24 8d, G-STRT-1080 Pour Arch Panel Install Insulation - Panels 1-21 1d 09-Feb-24 09-Feb-24 8d, G-STRT-1090 Rebar Struct Panel - Panels 1-21 8d 12-Feb-24 21-Feb-24 8d, G-STRT-1030 MEP/Embeds/Pick Inserts/ Brace Inserts - Panels 1-2 1 7d 14-Feb-24 22-Feb-24 8d, G-STRT-1040 Pour Struct Panel - Panels 1-21 1d 27-Feb-24 27-Feb-24 8d, G-STRT-1050 Cure Tilt Wall Panels - Panels 1-21 5d 28-Feb-24 05-Mar-24 9d |

| id | name | duration | start | finish | total_float | activities |
| --- | --- | --- | --- | --- | --- | --- |
| Tilt Pour #02 Panels 22-41 | Tilt Pour #02 Panels 22-41 | 28d | 09-Feb-24 | 19-Mar-24 | -1d | G-CON-6255 Layout Tilt Wall Panels - Panels 22-41 3d 09-Feb-24 13-Feb-24 -31d, G-CON-5810 Form Tilt Wall Panels - Panels 22-41 8d 13-Feb-24 22-Feb-24 -31d, G-CON-6340 Prep Slab & Install Embeds - Panels 22-41 5d 16-Feb-24 22-Feb-24 -1d, G-STRT-1100 Install Wire Mesh Arch Panel - Panels 22-41 2d 23-Feb-24 26-Feb-24 -1d, G-STRT-1110 Pour Arch Panel Install Insulation - Panels 22-41 1d 27-Feb-24 27-Feb-24 -1d, G-STRT-1120 Rebar Struct Panel - Panels 22-41 8d 28-Feb-24 08-Mar-24 -1d, G-STRT-1130 MEP/Embeds/Pick Inserts/ Brace Inserts - Panels 22- 41 7d 01-Mar-24 11-Mar-24 -1d, G-STRT-1060 Pour Struct Panel - Panels 22-41 1d 12-Mar-24 12-Mar-24 -1d, G-STRT-1070 Cure Tilt Wall Panels - Panels 22-41 5d 13-Mar-24 19-Mar-24 -1d |
| Tilt Pour #03 Panels 42-62 | Tilt Pour #03 Panels 42-62 | 29d | 22-Feb-24 | 02-Apr-24 | -11d | G-CON-6950 Layout Tilt Wall Panels - Panels 42-62 3d 22-Feb-24 26-Feb-24 -31d, G-CON-5820 Form Tilt Wall Panels - Panels 42-62 8d 26-Feb-24 06-Mar-24 -31d, G-CON-6960 Prep Slab & Install Embeds - Panels 42-62 5d 29-Feb-24 06-Mar-24 -11d, G-STRT-1140 Install Wire Mesh Arch Panel - Panels 42-62 3d 07-Mar-24 11-Mar-24 -11d, G-STRT-1150 Pour Arch Panel Install Insulation - Panels 42-62 1d 12-Mar-24 12-Mar-24 -11d, G-STRT-1160 Rebar Struct Panel - Panels 42-62 8d 13-Mar-24 22-Mar-24 -11d, G-STRT-1170 MEP/Embeds/Pick Inserts/ Brace Inserts - Panels 42- 62 7d 15-Mar-24 25-Mar-24 -11d, G-STRT-1180 Pour Struct Panel - Panels 42-62 1d 26-Mar-24 26-Mar-24 -11d, G-STRT-1190 Cure Tilt Wall Panels - Panels 42-62 5d 27-Mar-24 02-Apr-24 -11d |
| Tilt Pour #04 Panels 63-81 | Tilt Pour #04 Panels 63-81 | 29d | 06-Mar-24 | 15-Apr-24 | -20d | G-CON-6970 Layout Tilt Wall Panels - Panels 63-81 3d 06-Mar-24 08-Mar-24 -31d, G-CON-5830 Form Tilt Wall Panels - Panels 63-81 8d 08-Mar-24 19-Mar-24 -31d, G-CON-6980 Prep Slab & Install Embeds - Panels 63-81 5d 13-Mar-24 19-Mar-24 -20d, G-STRT-1200 Install Wire Mesh Arch Panel - Panels 63-81 3d 20-Mar-24 22-Mar-24 -20d, G-STRT-1210 Pour Arch Panel Install Insulation - Panels 63-81 1d 25-Mar-24 25-Mar-24 -20d, G-STRT-1220 Rebar Struct Panel - Panels 63-81 8d 26-Mar-24 04-Apr-24 -20d, G-STRT-1230 MEP/Embeds/Pick Inserts/ Brace Inserts - Panels 63- 81 7d 28-Mar-24 05-Apr-24 -20d, G-STRT-1240 Pour Struct Panel - Panels 63-81 1d 08-Apr-24 08-Apr-24 -20d, G-STRT-1250 Cure Tilt Wall Panels - Panels 63-81 5d 09-Apr-24 15-Apr-24 -20d |
| Tilt Pour #05 Panels 82-100 | Tilt Pour #05 Panels 82-100 | 30d | 19-Mar-24 | 29-Apr-24 | -29d | G-CON-6990 Layout Tilt Wall Panels - Panels 82-100 3d 19-Mar-24 21-Mar-24 -31d, G-CON-5840 Form Tilt Wall Panels - Panels 82-100 8d 22-Mar-24 02-Apr-24 -31d, G-CON-7000 Prep Slab & Install Embeds - Panels 82-100 5d 27-Mar-24 02-Apr-24 -29d, G-STRT-1260 Install Wire Mesh Arch Panel - Panels 82-100 3d 03-Apr-24 05-Apr-24 -29d, G-STRT-1270 Pour Arch Panel Install Insulation - Panels 82-100 1d 08-Apr-24 08-Apr-24 -29d, G-STRT-1280 Rebar Struct Panel - Panels 82-100 8d 09-Apr-24 18-Apr-24 -29d, G-STRT-1290 MEP/Embeds/Pick Inserts/ Brace Inserts - Panels 82- 100 7d 11-Apr-24 19-Apr-24 -29d, G-STRT-1300 Pour Struct Panel - Panels 82-100 1d 22-Apr-24 22-Apr-24 -29d, G-STRT-1310 Cure Tilt Wall Panels - Panels 82-100 5d 23-Apr-24 29-Apr-24 -29d |
| Tilt Pour #06 Panels 101-106 | Tilt Pour #06 Panels 101-106 | 19d | 02-Apr-24 | 26-Apr-24 | -29d | G-CON-7010 Layout Tilt Wall Panels - Panels 101-106 1d 02-Apr-24 02-Apr-24 -31d, G-CON-5850 Form Tilt Wall Panels - Panels 101-106 3d 03-Apr-24 05-Apr-24 -31d, G-CON-7020 Prep Slab & Install Embeds - Panels 101-106 2d 05-Apr-24 08-Apr-24 -31d, G-STRT-1320 Install Wire Mesh Arch Panel - Panels 101-106 2d 09-Apr-24 10-Apr-24 -31d, G-STRT-1330 Pour Arch Panel Install Insulation - Panels 101-106 1d 11-Apr-24 11-Apr-24 -31d, G-STRT-1340 Rebar Struct Panel - Panels 101-106 3d 12-Apr-24 16-Apr-24 -31d, G-STRT-1350 MEP/Embeds/Pick Inserts/ Brace Inserts - Panels 101 -106 3d 16-Apr-24 18-Apr-24 -31d, G-STRT-1360 Pour Struct Panel - Panels 101-106 1d 19-Apr-24 19-Apr-24 -31d, G-STRT-1370 Cure Tilt Wall Panels - Panels 101-106 5d 22-Apr-24 26-Apr-24 -29d |
| Tilt Structure | Tilt Structure | 84d | 22-Apr-24 | 19-Aug-24 | 5d | G-CON-1680 Prep for Tilt Erection 5d 22-Apr-24 26-Apr-24 -31d, G-CON-1690 Mobilize & Assemble Crane 2d 29-Apr-24 30-Apr-24 -31d, G-CON-1360 Erect Tilt Panels 8d 01-May-24 10-May-24 -31d, G-CON-1700 Disassemble & Mob-Out Crane 2d 13-May-24 14-May-24 -15d, G-CON-1410 Layout Walls & MEP Main Runs 5d 13-May-24 17-May-24 39d, G-CON-7750 Electrical Rough-in in Pour Back Strips 5d 01-Jul-24 08-Jul-24 -11d, G-CON-1370 Backfill & Base Perimeter Strip 15d 24-Jun-24 15-Jul-24 -21d, G-CON-1720 Plumbing Rough-in in Pour Back Strips 15d 01-Jul-24 22-Jul-24 -21d, G-CON-1260 F/R/P/S Perimeter SOG Pour Back & Column Diamonds 10d 23-Jul-24 05-Aug-24 -21d, G-CON-1110 Masonry Walls ( Incld Door Frames) 15d 30-Jul-24 19-Aug-24 -10d, G-CON-5020 MEP Rough-in CMU Walls 15d 30-Jul-24 19-Aug-24 5d |
| Structural Steel | Structural Steel | 59d | 13-May-24 | 05-Aug-24 | 92d |  |
| Steel - Lot 1 Grid 1-10, Q-N | Steel - Lot 1 Grid 1-10, Q-N | 16d | 13-May-24 | 04-Jun-24 | -31d | G-CON-1440 Steel - Set Crane 2d 13-May-24 14-May-24 -31d, G-CON-1980 Steel - Enabling Work - Lot 1 Grid 1-10, Q-N 3d 13-May-24 15-May-24 -31d, G-CON-1280 Steel - Erect Columns & Framing - Lot 1 Grid 1-10, Q-N 5d 15-May-24 21-May-24 -31d, G-CON-1090 Steel - Decking & Detailing - Lot 1 Grid 1-10, Q-N 10d 21-May-24 04-Jun-24 -31d |
| Steel - Lot 2 Grid 10-16, R-N | Steel - Lot 2 Grid 10-16, R-N | 21d | 16-May-24 | 14-Jun-24 | -31d | G-CON-8090 Steel - Enabling Work - Lot 2 Grid 10-16, R-N 3d 16-May-24 20-May-24 -26d, G-CON-8100 Steel - Erect Columns & Framing - Lot 2 Grid 10-16, R-N 5d 22-May-24 29-May-24 -28d, G-CON-8110 Steel - Decking & Detailing - Lot 2 Grid 10-16, R-N 10d 03-Jun-24 14-Jun-24 -31d |
| Steel - Lot 3 Grid 16-10, N-J | Steel - Lot 3 Grid 16-10, N-J | 20d | 21-May-24 | 18-Jun-24 | -31d | G-CON-8120 Steel - Enabling Work - Lot 3 Grid 16-10, N-J 3d 21-May-24 23-May-24 -24d, G-CON-8140 Steel - Erect Columns & Framing - Lot 3 Grid 16-10, N-J 3d 30-May-24 03-Jun-24 -28d, G-CON-8160 Steel - Decking & Detailing - Lot 3 Grid 16-10, N-J 7d 10-Jun-24 18-Jun-24 -31d |
| Steel - Mezzanine - Lot 8 Grid 4-1, N-L | Steel - Mezzanine - Lot 8 Grid 4-1, N-L | 35d | 04-Jun-24 | 23-Jul-24 | -29d | G-CON-5100 Steel - Mezzanine Columns & Framing - Lot 8 Grid 4- 1, N-L 3d 04-Jun-24 06-Jun-24 -28d, G-CON-8240 Steel - Mezzanine Decking & Detailing - Lot 8 Grid 4-1, N-L 6d 09-Jul-24 16-Jul-24 -29d, G-CON-8290 Concrete - Rebar & Pour Mezzanine 5d 17-Jul-24 23-Jul-24 -29d |
| Steel - Lot 4 Grid 10-3, N-L | Steel - Lot 4 Grid 10-3, N-L | 22d | 24-May-24 | 25-Jun-24 | -31d | G-CON-8130 Steel - Enabling Work - Lot 4 Grid 10-3, N-L 3d 24-May-24 29-May-24 -21d, G-CON-8150 Steel - Erect Columns & Framing - Lot 4 Grid 10-3, N-L 3d 07-Jun-24 11-Jun-24 -28d, G-CON-8170 Steel - Decking & Detailing - Lot 4 Grid 10-3, N-L 7d 17-Jun-24 25-Jun-24 -31d |
| Steel - Lot 5 Grid L-A, 6-3 | Steel - Lot 5 Grid L-A, 6-3 | 24d | 30-May-24 | 02-Jul-24 | -29d | G-CON-8180 Steel - Enabling Work - Lot 5 Grid L-A, 6-3 3d 30-May-24 03-Jun-24 -17d, G-CON-8200 Steel - Erect Columns & Framing - Lot 5 Grid 6-3, L -A 3d 12-Jun-24 14-Jun-24 -24d, G-CON-8220 Steel - Decking & Detailing - Lot 5 Grid L-A, 6-3 7d 24-Jun-24 02-Jul-24 -29d |
| Steel - Lot 6 Grid 3-1, M-A | Steel - Lot 6 Grid 3-1, M-A | 26d | 04-Jun-24 | 10-Jul-24 | -29d | G-CON-8190 Steel - Enabling Work - Lot 6 Grid 3-1, M-A 3d 04-Jun-24 06-Jun-24 -15d, G-CON-8210 Steel - Erect Columns & Framing - Lot 6 Grid 3-1, M -A 3d 17-Jun-24 19-Jun-24 -22d, G-CON-8230 Steel - Decking & Detailing - Lot 6 Grid 3-1, M-A 7d 01-Jul-24 10-Jul-24 -29d |
| Steel - Eyebrow - Lot 7 Grid 10-3, N-L | Steel - Eyebrow - Lot 7 Grid 10-3, N-L | 41d | 07-Jun-24 | 05-Aug-24 | 92d | G-CON-8250 Steel - Enabling Work - Eyebrow - Lot 7 Grid 10-3, N-L 4d 07-Jun-24 12-Jun-24 113d, G-CON-8260 Steel - Erect Columns & Framing - Eyebrow - Lot 7 G rid 10-3, N-L 5d 20-Jun-24 26-Jun-24 106d, G-CON-8270 Steel - Decking & Detailing - Eyebrow - Lot 7 Grid 10-3, N-L 15d 16-Jul-24 05-Aug-24 92d |
| Roof / Skin Finishes | Roof / Skin Finishes | 73d | 05-Jun-24 | 17-Sep-24 | 86d |  |
| Roof - Zone 1 Grid 16-12 | Roof - Zone 1 Grid 16-12 | 42d | 19-Jun-24 | 16-Aug-24 | -1d | G-CON-5120 Elect - Stubups (Incld Lightning Protection) - Z1 G rids 16-12 2d 19-Jun-24 20-Jun-24 -14d, G-CON-5080 HVAC - Set Roof Curbs - Z1 Grids 16-12 3d 19-Jun-24 21-Jun-24 -15d, G-CON-5110 Plumb Stub Ups - Z1 Grids 16-12 3d 19-Jun-24 21-Jun-24 -15d, G-CON-1100 Roofing - Z1 Grids 16-12 10d 24-Jun-24 08-Jul-24 -15d, G-CON-5040 Set HVAC Gear - Z1 Grids 16-12 2d 15-Aug-24 16-Aug-24 -1d |
| Roof - Zone 2 Grid 12-7 | Roof - Zone 2 Grid 12-7 | 39d | 26-Jun-24 | 20-Aug-24 | -1d | G-CON-7860 Elect - Stubups (Incld Lightning Protection)- Z2 Gr id 12-7 2d 26-Jun-24 27-Jun-24 -9d, G-CON-7850 HVAC - Set Roof Curbs - Z2 Grid 12-7 3d 26-Jun-24 28-Jun-24 -10d, G-CON-7870 Plumb Stub Ups - Z2 Grid 12-7 3d 26-Jun-24 28-Jun-24 -10d, G-CON-8350 Roofing - Z2 Grid 12-7 10d 09-Jul-24 22-Jul-24 -15d, G-CON-7880 Set HVAC Gear - Z2 Grid 12-7 2d 19-Aug-24 20-Aug-24 -1d |
| Roof - Zone 3 Grid 7-1 | Roof - Zone 3 Grid 7-1 | 31d | 11-Jul-24 | 22-Aug-24 | -1d | G-CON-7890 HVAC - Set Roof Curbs - Z3 Grid 7-1 2d 11-Jul-24 12-Jul-24 -9d, G-CON-7910 Plumb Stub Ups - Z3 Grid 7-1 2d 11-Jul-24 12-Jul-24 -9d, G-CON-7900 Elect - Stubups (Incld Lightning Protection)- Z3 Gr id 7-1 2d 11-Jul-24 12-Jul-24 -9d, G-CON-8360 Roofing - Z3 Grid 7-1 11d 23-Jul-24 06-Aug-24 -15d, G-CON-7920 Set HVAC Gear - Z3 Grid 7-1 2d 21-Aug-24 22-Aug-24 -1d |
| Roof - Zone 4 Grid J-A | Roof - Zone 4 Grid J-A | 59d | 05-Jun-24 | 27-Aug-24 | -1d | G-CON-7970 Paint Booth Exhaust / Roof Stub Ups - Z4 Grid J-A 3d 05-Jun-24 07-Jun-24 41d, G-CON-7950 Plumb Stub Ups - Z4 Grid J-A 2d 15-Jul-24 16-Jul-24 15d, G-CON-7940 Elect - Stubups (Incld Lightning Protection)- Z4 Gr id J-A 2d 15-Jul-24 16-Jul-24 15d, G-CON-7930 HVAC - Set Roof Curbs - Z4 Grid J-A 4d 15-Jul-24 18-Jul-24 13d, G-CON-8370 Roofing - Z4 Grid J-A 11d 07-Aug-24 21-Aug-24 0d, G-CON-7960 Set HVAC Gear - Z4 Grid J-A 3d 23-Aug-24 27-Aug-24 -1d |
| Roof / Skin Finishes | Roof / Skin Finishes | 73d | 05-Jun-24 | 17-Sep-24 | 86d | G-CON-1350 Exterior Framing / Support Steel for Insulated Core Metal Panels at Entry & Strips to West & North 15d 05-Jun-24 25-Jun-24 3d, G-CON-1620 Electrical Rough-in at Storefront 4d 26-Jun-24 01-Jul-24 4d, G-CON-1330 Strorefront (Includes Entry Doors with Card Readers ) 15d 02-Jul-24 23-Jul-24 4d, G-CON-1390 Exterior Coating 20d 16-Jul-24 12-Aug-24 5d, G-CON-1310 Insulated Core Metal Panels 15d 24-Jul-24 13-Aug-24 4d, G-CON-1400 Glass / Glazing in Wall Panels 10d 14-Aug-24 27-Aug-24 4d, G-CON-8030 Electrical Exterior Trim & Lighting 15d 13-Aug-24 03-Sep-24 72d, G-CON-8280 Steel - Stairs & Bollards 8d 04-Sep-24 13-Sep-24 88d, G-CON-1320 Illuminated Signage 10d 04-Sep-24 17-Sep-24 72d |
| Interior Buildout | Interior Buildout | 156d | 17-Jun-24 | 28-Jan-25 | -5d |  |
| Rough-in | Rough-in | 124d | 17-Jun-24 | 11-Dec-24 | 13d |  |
| Rough-in - Zone 1 Grid 16-12 | Rough-in - Zone 1 Grid 16-12 | 123d | 17-Jun-24 | 10-Dec-24 | 14d |  |
| Rough-in - Zone 1 Grid 16-12 | Rough-in - Zone 1 Grid 16-12 | 72d | 17-Jun-24 | 26-Sep-24 | -4d | G-RI-P-1000 Fire Sprinkler Overhead Rough-in - Mains / Homeruns 6d 17-Jun-24 24-Jun-24 -31d, G-RI-P-1020 HVAC Duct Overhead Rough-in 7d 25-Jun-24 03-Jul-24 -31d, G-RI-P-1010 Electrical Overhead Rough-in - Mains / Homeruns 15d 17-Jun-24 08-Jul-24 -28d, G-RI-P-1130 Fire Sprinkler Overhead Rough-in - Branches 12d 25-Jun-24 11-Jul-24 -9d, G-RI-P-1050 Frame Priority Rooms ER, IDF, PPE (1116, 1115, 1120 ) 3d 16-Jul-24 18-Jul-24 -21d, G-RI-P-1060 Hang Drywall Priority Rooms ER, IDF, PPE (1116, 111 5, 1120) 2d 19-Jul-24 22-Jul-24 4d, G-RI-P-1030 HVAC Pipe Overhead Rough-in 14d 02-Jul-24 22-Jul-24 -31d, G-RI-P-1040 Plumbing Overhead Rough-in - Drains / Vents / Water 12d 05-Jul-24 22-Jul-24 -24d, G-RI-P-1090 Frame Walls (Including Door Frames) 4d 23-Jul-24 26-Jul-24 -23d, G-RI-P-1070 Tape & Finish Priority Rooms ER, IDF, PPE (1116, 11 15, 1120) 4d 23-Jul-24 26-Jul-24 4d, G-RI-P-1140 HVAC Duct & PipeTesting 5d 23-Jul-24 29-Jul-24 -17d, G-RI-P-1080 Prime & First Coat Paint Priority Rooms ER, IDF, PP E (1116, 1115, 1120) 2d 29-Jul-24 30-Jul-24 4d, G-RI-P-1410 Plumbing Overhead Rough-in - Gas - Including Loadin g Bay Perimeter 10d 23-Jul-24 05-Aug-24 -22d, G-RI-P-1100 I/W Plumbing Rough-in 4d 01-Aug-24 06-Aug-24 -23d, G-RI-P-1430 Plumbing Pipe Testing 5d 07-Aug-24 13-Aug-24 -21d, G-RI-P-1160 Prime & 1st Coat Paint - Structural, MEP 7d 06-Aug-24 14-Aug-24 -22d, G-RI-P-1170 Hang Drywall 4d 15-Aug-24 20-Aug-24 -22d, G-RI-P-1120 HVAC - Equipment (Hose Kits, IR Heaters, Unit Heate rs, Etc - Inlcd Loading Dock) 10d 15-Aug-24 28-Aug-24 -14d, G-RI-P-1180 Tape & Finish Drywall 8d 21-Aug-24 30-Aug-24 -22d, G-RI-P-1190 Prime & 1st Coat Paint - Walls & Finis hes 8d 03-Sep-24 12-Sep-24 -19d, G-RI-P-1200 Electrical Branch / Surface Mount (Incld Fire Alarm ) 10d 13-Sep-24 26-Sep-24 -4d |
| Provo ER - West Electrical Room 16M - GUB-01-1116 | Provo ER - West Electrical Room 16M - GUB-01-1116 | 82d | 31-Jul-24 | 22-Nov-24 | -15d | G-RI-ER116-1000 Set Equipment - GUB-01-1116 4d 31-Jul-24 05-Aug-24 4d, G-RI-ER116-1010 Rough-in Conduit - GUB-01-1116 10d 06-Aug-24 19-Aug-24 8d, G-RI-ER116-1020 Pull & T erm Wire - GUB-01-1116 10d 20-Aug-24 03-Sep-24 8d, G-RI-ER116-1030 Testing & Energization - GUB-01-1116 1d 22-Nov-24 22-Nov-24 -15d |
| Provo PPE - PPE Storage Room - GUB-01-3C-1120 | Provo PPE - PPE Storage Room - GUB-01-3C-1120 | 82d | 31-Jul-24 | 22-Nov-24 | -15d | G-RI-ER116-1040 Set Equipment - GUB-01-3C-1120 4d 31-Jul-24 05-Aug-24 4d, G-RI-ER116-1050 Rough-in Conduit - GUB-01-3C-1120 10d 06-Aug-24 19-Aug-24 8d, G-RI-ER116-1060 Pull & T erm Wire - GUB-01-3C-1120 10d 20-Aug-24 03-Sep-24 8d, G-RI-ER116-1070 Testing & Energization - GUB-01-3C-1120 1d 22-Nov-24 22-Nov-24 -15d |
| Provo - IDF Room GUB-01-1115 | Provo - IDF Room GUB-01-1115 | 88d | 06-Aug-24 | 10-Dec-24 | 14d | G-RI-ER115-1000 Set Equipment - GUB-01-1115 4d 06-Aug-24 09-Aug-24 4d, G-RI-ER115-1010 Rough-in Conduit - GUB-01-1115 10d 12-Aug-24 23-Aug-24 4d, G-RI-ER115-1020 Pull & T erm Wire - GUB-01-1115 10d 26-Aug-24 09-Sep-24 4d, G-RI-ER115-1030 Testing & Energization - GUB-01-1115 1d 02-Dec-24 02-Dec-24 -15d, G-CON-8580 Startup Splits - GUB-01-1115 3d 03-Dec-24 05-Dec-24 0d, G-RI-ER115-1040 Owner IT Equip - GUB-01-1115 3d 06-Dec-24 10-Dec-24 14d |
| Rough-in - Zone 2 Grid 12-7 | Rough-in - Zone 2 Grid 12-7 | 88d | 28-Jun-24 | 31-Oct-24 | -19d | G-RI-P-1210 Fire Sprinkler Overhead Rough-in - Mains / Homeruns 6d 28-Jun-24 08-Jul-24 -31d, G-RI-P-1280 Electrical Overhead Rough-in - Mains / Homeruns 15d 09-Jul-24 29-Jul-24 -28d, G-RI-P-1330 HVAC Duct Overhead Rough-in 15d 09-Jul-24 29-Jul-24 -31d, G-RI-P-1400 Fire Sprinkler Overhead Rough-in - Branches 12d 12-Jul-24 29-Jul-24 -9d, G-RI-P-1340 HVAC Pipe Overhead Rough-in 10d 23-Jul-24 05-Aug-24 -31d, G-RI-P-1390 HVAC Duct & PipeTesting 5d 06-Aug-24 12-Aug-24 -19d, G-RI-P-1350 Plumbing Overhead Rough-in - Drains / Vents / Water 12d 30-Jul-24 14-Aug-24 -29d, G-RI-P-1420 Plumbing Overhead Rough-in - Gas 10d 06-Aug-24 19-Aug-24 -24d, G-RI-P-1240 Frame Walls (Including Door Frames) 11d 06-Aug-24 20-Aug-24 -29d, G-RI-P-1470 Frame Ceilings 2d 21-Aug-24 22-Aug-24 -20d, G-RI-P-1250 I/W Electrical Rough-in 5d 21-Aug-24 27-Aug-24 -23d, G-RI-P-1230 Prime & 1st Coat Paint - Structural, MEP 7d 20-Aug-24 28-Aug-24 -24d, G-RI-P-1360 I/W Plumbing Rough-in 10d 15-Aug-24 28-Aug-24 -29d, G-RI-P-1440 Plumbing Pipe Testing 5d 29-Aug-24 05-Sep-24 -29d, G-RI-P-1380 HVAC - Equipment (Hose Kits, IR Heaters, Unit Heate rs, Etc - Inlcd Loading Dock) 10d 29-Aug-24 12-Sep-24 -14d, G-RI-P-1260 Hang Drywall Walls 8d 06-Sep-24 17-Sep-24 -29d, G-RI-P-1480 Hang Drywall Ceilings 2d 18-Sep-24 19-Sep-24 -13d, G-RI-P-1270 Tape & Finish Drywall Walls 15d 12-Sep-24 02-Oct-24 -29d, G-RI-P-1490 Tape & Finish Drywall Ceilings 3d 03-Oct-24 07-Oct-24 -22d, G-RI-P-1220 Prime & 1st Coat Paint - Walls & Ceilings 11d 03-Oct-24 17-Oct-24 -25d, G-RI-P-1370 Electrical Branch / Surface Mount 10d 18-Oct-24 31-Oct-24 -19d |
| Rough-in - Zone 3 Grid 7-1 | Rough-in - Zone 3 Grid 7-1 | 106d | 12-Jul-24 | 11-Dec-24 | 13d |  |
| Rough-in - Zone 3 Grid 7-1 | Rough-in - Zone 3 Grid 7-1 | 83d | 12-Jul-24 | 06-Nov-24 | -31d | G-RI-A-1010 Fire Sprinkler Overhead Rough-in - Mains / Homeruns 10d 12-Jul-24 25-Jul-24 -29d, G-RI-A-1060 Frame Priority Rooms ER, MDF, IDF (1011, 1013, 1223 ) 5d 26-Jul-24 01-Aug-24 -14d, G-RI-A-1080 Fire Sprinkler Overhead Rough-in - Branches 8d 30-Jul-24 08-Aug-24 0d, G-RI-A-1090 Hang Drywall Priority Rooms ER, MDF, IDF (1011, 101 3, 1223) 4d 07-Aug-24 12-Aug-24 -15d, G-RI-A-1000 Electrical Overhead Rough-in - Mains / Homeruns 12d 30-Jul-24 14-Aug-24 -28d, G-RI-A-1020 HVAC Equipment & Duct Overhead Rough-in 15d 30-Jul-24 19-Aug-24 -31d, G-RI-A-1030 HVAC Pipe Overhead Rough-in - Mains 10d 06-Aug-24 19-Aug-24 -31d, G-RI-A-1130 Tape & Finish Priority Rooms ER, MDF , IDF (1011, 10 13, 1223) 8d 13-Aug-24 22-Aug-24 -15d, G-RI-P-1450 HVAC Duct & PipeTesting 5d 20-Aug-24 26-Aug-24 -12d, G-RI-A-1310 Frame Priority Rooms Fire Pump, Mech (1017, 1014) 5d 20-Aug-24 26-Aug-24 -31d, G-RI-A-1160 Prime & First Coat Paint Priority Rooms ER, MDF, ID F (1011, 1013, 1223) 4d 23-Aug-24 28-Aug-24 -15d, G-RI-A-1040 Plumbing Overhead Rough-in - Drains / Vents / Water 12d 15-Aug-24 30-Aug-24 -29d, G-RI-A-1320 Hang Drywall Priority Rooms Fire Pump, Mech (1017, 1014) 4d 27-Aug-24 30-Aug-24 2d, G-RI-A-1100 Plumbing Overhead Rough-in - Gas 10d 20-Aug-24 03-Sep-24 -17d, G-RI-A-1200 HVAC Pipe Overhead Rough-in - Branches 10d 20-Aug-24 03-Sep-24 -20d, G-RI-A-1110 Prime & 1st Coat Paint - Structural, MEP 2d 04-Sep-24 05-Sep-24 -17d, G-RI-A-1120 Frame Walls (Including Door Frames) 10d 27-Aug-24 10-Sep-24 -31d, G-RI-A-1330 Tape & Finish Priority Rooms Fire Pump, Mech (1017 , 1014) 8d 03-Sep-24 12-Sep-24 2d, G-RI-A-1150 I/W Electrical Rough-in 10d 04-Sep-24 17-Sep-24 -25d, G-RI-A-1140 I/W Plumbing Rough-in 10d 05-Sep-24 18-Sep-24 -31d, G-RI-A-1340 Prime & First Coat Paint Priority Rooms Fire Pump, Mech (1017, 1014) 4d 13-Sep-24 18-Sep-24 2d, G-RI-A-1350 Frame Ceilings 6d 11-Sep-24 18-Sep-24 -13d, G-RI-A-1050 HVAC - Equipment (Hose Kits, IR Heaters, Unit Heate rs, Etc) 8d 13-Sep-24 24-Sep-24 -3d, G-RI-P-1460 Plumbing Pipe Testing 5d 19-Sep-24 25-Sep-24 -31d, G-RI-A-1170 Hang Drywall Walls 12d 26-Sep-24 11-Oct-24 -31d, G-RI-A-1360 Hang Drywall Ceilings 6d 14-Oct-24 21-Oct-24 -30d, G-RI-A-1180 Tape & Finish Drywall Walls 12d 07-Oct-24 22-Oct-24 -31d, G-RI-A-1370 Tape & Finish Drywall Ceilings 3d 23-Oct-24 25-Oct-24 -31d, G-RI-A-1190 Prime & 1st Coat Paint - Walls & Ceilings 8d 28-Oct-24 06-Nov-24 -31d |
| Admin ER - Main Electrical Room 2M - GUB-01-1011 | Admin ER - Main Electrical Room 2M - GUB-01-1011 | 60d | 29-Aug-24 | 21-Nov-24 | -15d | G-RI-ER1011-1010 Set Gear / Panels (SWB 3000A) - GUB-01-1011 5d 29-Aug-24 05-Sep-24 11d, G-RI-ER1011-1000 Set Equipment - GUB-01-1011 20d 29-Aug-24 26-Sep-24 -15d, G-RI-ER1011-1020 Rough-in Conduit - GUB-01-1011 15d 27-Sep-24 17-Oct-24 -14d, G-RI-ER1011-1030 Pull & T erm Wire - Elec t Room - GUB-01-1011 20d 18-Oct-24 14-Nov-24 -14d, G-RI-ER1011-1040 Testing & Energization - GUB-01-1011 1d 21-Nov-24 21-Nov-24 -15d |
| Mechanical Room GUB-01-1014 | Mechanical Room GUB-01-1014 | 48d | 19-Sep-24 | 25-Nov-24 | 6d | G-RI-A-1210 Layout & Install Hangers & Supports 3d 19-Sep-24 23-Sep-24 2d, G-RI-A-1220 Mechanical Piping 7d 24-Sep-24 02-Oct-24 2d, G-RI-A-1230 Set HVAC Equipment - UH-118, ACU-108, ACU-109 4d 03-Oct-24 08-Oct-24 2d, G-RI-A-1300 Electrical Rough-in - Conduit / Wire / Disconnects 7d 03-Oct-24 11-Oct-24 3d, G-RI-A-1240 Plumbing Rough-in - Water / Gas 4d 09-Oct-24 14-Oct-24 2d, G-RI-A-1250 Pour Housekeeping Pads 2d 15-Oct-24 16-Oct-24 2d, G-RI-A-1260 Cure Housekeeping Pads 3d 17-Oct-24 21-Oct-24 2d, G-RI-A-1270 Set Pumps - HHWB-101&102, HHWP-101&102, ET-101 5d 22-Oct-24 28-Oct-24 2d, G-RI-A-1280 Mech - Final Equipment Connections 5d 29-Oct-24 04-Nov-24 2d, G-RI-A-1290 Electrical - Final Equipment Connections 5d 29-Oct-24 04-Nov-24 2d, G-CON-8570 Startup Splits - GUB-01-1014 3d 21-Nov-24 25-Nov-24 6d |
| Admin - MDF Room GUB-01-1013 | Admin - MDF Room GUB-01-1013 | 50d | 27-Sep-24 | 09-Dec-24 | 15d | G-RI-MDF1013-1000 Set Equipment - GUB-01-1013 4d 27-Sep-24 02-Oct-24 -15d, G-RI-MDF1013-1010 Rough-in Conduit - GUB-01-1013 10d 03-Oct-24 16-Oct-24 -3d, G-RI-MDF1013-1020 Pull & T erm Wire - GUB-01-1013 10d 17-Oct-24 30-Oct-24 -3d, G-RI-MDF1013-1030 Testing & Energization - GUB-01-1013 1d 27-Nov-24 27-Nov-24 -15d, G-CON-1820 Startup CRACs 3d 02-Dec-24 04-Dec-24 1d, G-RI-MDF1013-1040 Owner IT Equip - GUB-01-1013 3d 05-Dec-24 09-Dec-24 15d |
| Admin - Fire Pump Room GUB-01-1017 | Admin - Fire Pump Room GUB-01-1017 | 73d | 15-Aug-24 | 26-Nov-24 | -15d | G-RI-FP1017-1000 Install Fire Pump 4d 15-Aug-24 20-Aug-24 27d, G-RI-FP1017-1010 Set Equipment - GUB-01-1017 4d 03-Oct-24 08-Oct-24 -15d, G-RI-FP1017-1020 Rough-in Conduit - GUB-01-1017 10d 09-Oct-24 22-Oct-24 -7d, G-RI-FP1017-1030 Pull & T erm Wire - GUB-01-1017 10d 23-Oct-24 05-Nov-24 -7d, G-RI-FP1017-1040 Testing & Energization - GUB-01-1017 1d 26-Nov-24 26-Nov-24 -15d |
| GSE - IDF Room GUB-01-1223 | GSE - IDF Room GUB-01-1223 | 44d | 09-Oct-24 | 11-Dec-24 | 13d | G-RI-ER1223-1000 Set Equipment - GUB-01-1223 4d 09-Oct-24 14-Oct-24 -15d, G-RI-ER1223-1010 Rough-in Conduit - GUB-01-1223 10d 15-Oct-24 28-Oct-24 -11d, G-RI-ER1223-1020 Pull & T erm Wire - GUB-01-1223 10d 29-Oct-24 11-Nov-24 -11d, G-RI-ER1223-1030 Testing & Energization - GUB-01-1223 1d 03-Dec-24 03-Dec-24 -15d, G-CON-1830 Startup Splits - GUB-01-1223 3d 04-Dec-24 06-Dec-24 -1d, G-RI-ER1223-1040 Owner IT Equp - GUB-01-1223 3d 09-Dec-24 11-Dec-24 13d |
| Rough-in - Zone 4 Grid J-A | Rough-in - Zone 4 Grid J-A | 86d | 26-Jul-24 | 25-Nov-24 | -15d |  |
| Rough-in - Zone 4 Grid J-A | Rough-in - Zone 4 Grid J-A | 83d | 26-Jul-24 | 20-Nov-24 | -12d | G-RI-G-1010 Fire Sprinkler Overhead Rough-in - Mains / Homeruns 12d 26-Jul-24 12-Aug-24 -15d, G-RI-G-1000 Electrical Overhead Rough-in - Mains / Homeruns 15d 08-Aug-24 28-Aug-24 -2d, G-RI-G-1120 Fire Sprinkler Overhead Rough-in - Branches 12d 13-Aug-24 28-Aug-24 3d, G-RI-G-1020 HVAC Duct Overhead Rough-in (Including Paint Booth Duct) 15d 20-Aug-24 10-Sep-24 -20d, G-RI-G-1030 HVAC Pipe Overhead Rough-in 5d 04-Sep-24 10-Sep-24 -20d, G-RI-G-1040 Plumbing Overhead Rough-in - Drains / Vents / Water 10d 11-Sep-24 24-Sep-24 -20d, G-RI-G-1140 Plumbing Overhead Rough-in - Gas 10d 11-Sep-24 24-Sep-24 -15d, G-RI-G-1050 Frame Priority Rooms ER & IDF (1216) 2d 25-Sep-24 26-Sep-24 -20d, G-RI-G-1060 Hang Drywall Priority Rooms ER & IDF (1216, 1223) 2d 27-Sep-24 30-Sep-24 -11d, G-RI-G-1090 Frame Walls (Including Door Frames) 3d 27-Sep-24 01-Oct-24 -20d, G-RI-G-1210 Plumbing Overhead Rough-in - Compressed Air 15d 11-Sep-24 01-Oct-24 -20d, G-RI-G-1220 Frame Ceilings 2d 02-Oct-24 03-Oct-24 -11d, G-RI-G-1070 Tape & Finish Priority Rooms ER & IDF (1216, 1223) 4d 01-Oct-24 04-Oct-24 -11d, G-RI-G-1160 Prime & 1st Coat Paint - Structural, MEP 5d 02-Oct-24 08-Oct-24 -20d, G-RI-G-1080 Prime & First Coat Paint Priority Rooms ER & IDF (1 216, 1223) 2d 07-Oct-24 08-Oct-24 -11d, G-RI-G-1150 I/W Plumbing Rough-in 5d 02-Oct-24 08-Oct-24 -20d, G-RI-G-1170 Hang Drywall Walls 4d 14-Oct-24 17-Oct-24 -23d, G-RI-G-1230 Hang Drywall Ceilings 2d 18-Oct-24 21-Oct-24 -21d, G-RI-G-1100 HVAC - Equipment (Hose Kits, IR Heaters, Unit Heate rs, Etc) 12d 09-Oct-24 24-Oct-24 -13d, G-RI-G-1180 Tape & Finish Drywall Walls 6d 23-Oct-24 30-Oct-24 -25d, G-RI-G-1240 Tape & Finish Drywall Ceilings 3d 31-Oct-24 04-Nov-24 -25d, G-RI-G-1190 Prime & 1st Coat Paint - Walls & Finis hes 5d 07-Nov-24 13-Nov-24 -27d, G-RI-G-1200 Electrical Branch / Surface Mount 5d 14-Nov-24 20-Nov-24 -12d |
| GSE ER - North Electrical Room 2D - GUB-01-1216 | GSE ER - North Electrical Room 2D - GUB-01-1216 | 30d | 15-Oct-24 | 25-Nov-24 | -15d | G-RI-ER1216-1000 Set Equipment - GUB-01-1216 4d 15-Oct-24 18-Oct-24 -15d, G-RI-ER1216-1010 Rough-in Conduit - GUB-01-1216 10d 21-Oct-24 01-Nov-24 -15d, G-RI-ER1216-1020 Pull & T erm Wire - GUB-01-1216 10d 04-Nov-24 15-Nov-24 -15d, G-RI-ER1216-1030 Testing & Energization - GUB-01-1216 1d 25-Nov-24 25-Nov-24 -15d |
| Finishes - Zone 1 Grid 16-12 | Finishes - Zone 1 Grid 16-12 | 58d | 03-Sep-24 | 21-Nov-24 | 34d | G-FN-P-1000 Doors - Exterior (with Card Readers) 3d 13-Sep-24 17-Sep-24 12d, G-FN-P-1010 Chain Link 5d 13-Sep-24 19-Sep-24 79d, G-FN-P-1040 Tile 15d 03-Sep-24 23-Sep-24 1d, G-FN-P-1020 Ceiling Grid 7d 13-Sep-24 23-Sep-24 -19d, G-FN-P-1130 HVAC Trim / Ceiling Devices - GRDs 2d 24-Sep-24 25-Sep-24 -1d, G-FN-P-1030 Freezer 10d 13-Sep-24 26-Sep-24 -19d, G-FN-P-1050 Casework 10d 13-Sep-24 26-Sep-24 -2d, G-FN-P-1060 Doors - Interior (No Card Readers) 3d 24-Sep-24 26-Sep-24 30d, G-FN-P-1070 Install Baler & Misc Equipment 10d 13-Sep-24 26-Sep-24 -9d, G-FN-P-1090 Warehous e Racking 15d 13-Sep-24 03-Oct-24 49d, G-FN-P-1100 Electrical Warehouse Lighting 15d 13-Sep-24 03-Oct-24 -14d, G-FN-P-1110 Ice Machines 10d 27-Sep-24 10-Oct-24 -19d, G-FN-P-1120 Door Hardware 10d 27-Sep-24 10-Oct-24 30d, G-FN-P-1150 Fire Sprinkler Ceiling Devices 15d 24-Sep-24 14-Oct-24 -19d, G-FN-P-1080 Coiling Doors 30d 04-Sep-24 15-Oct-24 -6d, G-FN-P-1160 Overhead MEP Inspection (Final Prior to White Out) 2d 15-Oct-24 16-Oct-24 -14d, G-FN-P-1170 Lockers (200) 25d 13-Sep-24 17-Oct-24 29d, G-FN-P-1180 Specialties 15d 27-Sep-24 17-Oct-24 -2d, G-FN-P-1190 Drop Ceiling Tiles 5d 17-Oct-24 23-Oct-24 -14d, G-FN-P-1210 Carpet / LVT 5d 24-Oct-24 30-Oct-24 1d, G-FN-P-1260 Plumbing Trim 5d 24-Oct-24 30-Oct-24 1d, G-FN-P-1580 Fire Alarm Trim 5d 24-Oct-24 30-Oct-24 1d, G-FN-P-1200 Electrical Wire & Term Equipment 15d 11-Oct-24 31-Oct-24 -19d, G-FN-P-1240 Clean / Polish Concrete 10d 24-Oct-24 06-Nov-24 40d, G-FN-P-1250 Security Trim / Card Readers 10d 24-Oct-24 06-Nov-24 -14d, G-FN-P-1230 Electrical Trim 5d 01-Nov-24 07-Nov-24 -9d, G-FN-P-1220 Dock Bumpers / Levelers 20d 16-Oct-24 12-Nov-24 16d, G-FN-P-1270 Final Paint 5d 08-Nov-24 14-Nov-24 -5d, G-FN-P-1280 Signage 5d 15-Nov-24 21-Nov-24 24d |
| Finishes - Zone 2 Grid 12-7 | Finishes - Zone 2 Grid 12-7 | 80d | 18-Sep-24 | 13-Jan-25 | 6d | G-FN-P-1520 Doors - Exterior (with Card Readers) 3d 18-Sep-24 20-Sep-24 44d, G-FN-P-1410 Ceiling Grid 7d 24-Sep-24 02-Oct-24 -11d, G-FN-P-1390 Doors - Interior (No Card Readers) 3d 03-Oct-24 07-Oct-24 33d, G-FN-P-1430 HVAC Trim / Ceiling Devices - GRDs 4d 03-Oct-24 08-Oct-24 0d, G-FN-P-1560 Electrical Ceiling Devices - Lighting 4d 03-Oct-24 08-Oct-24 0d, G-FN-P-1360 Casework 10d 27-Sep-24 10-Oct-24 3d, G-FN-P-1470 Install Baler & Misc Equipment 10d 27-Sep-24 10-Oct-24 -4d, G-FN-P-1340 Tile 15d 24-Sep-24 14-Oct-24 1d, G-FN-P-1540 Electrical Warehouse Lighting 8d 04-Oct-24 15-Oct-24 -7d, G-FN-P-1310 Warehous e Racking 15d 04-Oct-24 24-Oct-24 49d, G-FN-P-1400 Door Hardware 10d 11-Oct-24 24-Oct-24 30d, G-FN-P-1570 Fire Sprinkler Ceiling Devices 15d 15-Oct-24 04-Nov-24 -19d, G-FN-P-1510 Overhead MEP Inspection (Final Prior to White Out) 2d 05-Nov-24 06-Nov-24 -19d, G-FN-P-1480 Specialties 15d 18-Oct-24 07-Nov-24 -2d, G-FN-P-1420 Drop Ceiling Tiles 5d 07-Nov-24 13-Nov-24 -19d, G-FN-P-1590 Fire Alarm Trim 4d 14-Nov-24 19-Nov-24 -8d, G-FN-P-1350 Carpet / LVT 5d 14-Nov-24 20-Nov-24 -9d, G-FN-P-1500 Plumbing Trim 5d 14-Nov-24 20-Nov-24 -9d, G-FN-P-1330 Lockers (200) 25d 18-Oct-24 21-Nov-24 29d, G-FN-P-1530 Electrical Wire & Term Equipment 15d 01-Nov-24 21-Nov-24 -19d, G-FN-P-1290 Coiling Doors 30d 16-Oct-24 26-Nov-24 6d, G-FN-P-1490 Security Trim / Card Readers 10d 14-Nov-24 27-Nov-24 -19d, G-FN-P-1550 Electrical Trim 4d 22-Nov-24 27-Nov-24 -19d, G-FN-P-1460 Final Paint 5d 02-Dec-24 06-Dec-24 -14d, G-FN-P-1380 Signage 5d 09-Dec-24 13-Dec-24 15d, G-FN-P-1440 Chain Link 5d 09-Dec-24 13-Dec-24 25d, G-FN-P-1370 Dock Bumpers / Levelers 20d 27-Nov-24 27-Dec-24 6d, G-FN-P-1450 Clean / Polish Concrete 10d 30-Dec-24 13-Jan-25 6d |
| Finishes - Zone 3 Grid 7-1 | Finishes - Zone 3 Grid 7-1 | 69d | 11-Oct-24 | 21-Jan-25 | 0d | G-FN-P-1600 Electrical Warehouse Lighting 5d 16-Oct-24 22-Oct-24 11d, G-FN-A-1000 Casework 10d 11-Oct-24 24-Oct-24 8d, G-FN-A-1030 Doors - Interior (No Card Readers) 5d 25-Oct-24 31-Oct-24 25d, G-FN-A-1020 Tile 15d 15-Oct-24 04-Nov-24 1d, G-FN-A-1050 Door Hardware 10d 01-Nov-24 14-Nov-24 25d, G-FN-A-1010 Ceiling Grid 10d 07-Nov-24 20-Nov-24 -31d, G-FN-A-1190 Electrical Wire & Term Equipment 5d 15-Nov-24 21-Nov-24 -9d, G-FN-A-1060 HVAC Trim / Ceiling Devices - GRDs 5d 21-Nov-24 27-Nov-24 -26d, G-FN-A-1070 Electrical Ceiling Devices - Lighting 5d 21-Nov-24 27-Nov-24 -26d, G-FN-A-1090 Specialties 15d 08-Nov-24 02-Dec-24 -2d, G-FN-A-1080 Fire Sprinkler Ceiling Devices 10d 21-Nov-24 06-Dec-24 -31d, G-FN-A-1040 Lockers (50) 10d 22-Nov-24 09-Dec-24 29d, G-FN-A-1100 Overhead MEP Inspection 2d 09-Dec-24 10-Dec-24 -31d, G-FN-A-1110 Drop Ceiling Tiles 5d 11-Dec-24 17-Dec-24 -31d, G-FN-A-1120 Carpet / LVT 5d 18-Dec-24 24-Dec-24 -26d, G-FN-A-1130 Plumbing Trim 5d 18-Dec-24 24-Dec-24 -26d, G-FN-A-1140 Security Trim / Card Readers 10d 18-Dec-24 02-Jan-25 -31d, G-FN-A-1150 Electrical Trim 10d 18-Dec-24 02-Jan-25 -31d, G-FN-A-1180 Fire Alarm Trim 10d 18-Dec-24 02-Jan-25 -31d, G-FN-A-1160 Final Paint 8d 03-Jan-25 14-Jan-25 -31d, G-FN-A-1170 Signage 5d 15-Jan-25 21-Jan-25 -5d |
| Finishes - Zone 4 Grid J-A | Finishes - Zone 4 Grid J-A | 109d | 22-Aug-24 | 28-Jan-25 | -5d | G-FN-G-1130 Bridge Crane (x3) 25d 22-Aug-24 26-Sep-24 27d, G-FN-P-1610 Electrical Warehouse Lighting 10d 25-Oct-24 07-Nov-24 9d, G-FN-G-1070 Coiling Doors 20d 16-Oct-24 12-Nov-24 -6d, G-FN-G-1010 Tile 3d 14-Nov-24 18-Nov-24 2d, G-FN-G-1020 Doors - Exterior (with Card Readers) 3d 14-Nov-24 18-Nov-24 1d, G-FN-G-1040 Warehous e Racking 5d 14-Nov-24 20-Nov-24 40d, G-FN-G-1050 Chain Link 5d 14-Nov-24 20-Nov-24 40d, G-FN-G-1060 Casework 3d 19-Nov-24 21-Nov-24 2d, G-FN-G-1090 Specialties 1d 22-Nov-24 22-Nov-24 2d, G-FN-G-1030 Steel - Handrail 8d 14-Nov-24 25-Nov-24 21d, G-FN-G-1000 Doors - Interior (No Card Readers) 3d 21-Nov-24 25-Nov-24 18d, G-FN-G-1100 Door Hardware 5d 26-Nov-24 04-Dec-24 18d, G-FN-G-1140 HVAC Trim / Ceiling Devices - GRDs 3d 02-Dec-24 04-Dec-24 -7d, G-FN-G-1110 Auto Lifts 15d 14-Nov-24 06-Dec-24 -22d, G-FN-G-1120 BP Fuild Systems Install 20d 14-Nov-24 13-Dec-24 -27d, G-FN-G-1150 Electrical Ceiling Devices - Lighting 10d 02-Dec-24 13-Dec-24 -15d, G-FN-G-1080 Paint Booth 35d 30-Oct-24 19-Dec-24 11d, G-FN-G-1250 Electrical Wire & Term - Paint Booth Equipment 3d 20-Dec-24 24-Dec-24 11d, G-FN-G-1160 Fire Sprinkler Ceiling Devices 15d 09-Dec-24 30-Dec-24 -24d, G-FN-G-1220 Electrical Wire & Term Equipment 12d 16-Dec-24 02-Jan-25 -27d, G-FN-G-1170 Clean / Polish Concrete 10d 20-Dec-24 06-Jan-25 11d, G-FN-G-1180 Plumbing Trim 3d 03-Jan-25 07-Jan-25 -26d, G-FN-G-1200 Electrical Trim 4d 03-Jan-25 08-Jan-25 -27d, G-FN-G-1240 Fire Alarm Trim 4d 03-Jan-25 08-Jan-25 -27d, G-FN-G-1190 Security Trim / Card Readers 5d 03-Jan-25 09-Jan-25 -28d, G-FN-G-1210 Final Paint 5d 15-Jan-25 21-Jan-25 -31d, G-FN-G-1230 Signage 5d 22-Jan-25 28-Jan-25 -5d |
| Sitework | Sitework | 115d | 05-Jun-24 | 14-Nov-24 | 44d | G-CON-1430 Demo Waste Slabs 3d 05-Jun-24 07-Jun-24 33d, G-CON-1710 Drilled Piers at Utility Yard 4d 10-Jun-24 13-Jun-24 33d, G-CON-1270 Site Walls (~1800 LF) 20d 14-Jun-24 12-Jul-24 33d, G-CON-1300 Bollards / Light Poles Bases / Misc Site Items 20d 14-Jun-24 12-Jul-24 72d, G-CON-1130 Install New AOA Fence 5d 29-Jul-24 02-Aug-24 88d, G-CON-1120 Site Grading 10d 24-Jul-24 06-Aug-24 26d, G-CON-5030 Sleeves 5d 07-Aug-24 13-Aug-24 60d, G-CON-1960 Site Lighting 15d 07-Aug-24 27-Aug-24 40d, G-CON-1340 AOA Entries 15d 14-Aug-24 04-Sep-24 81d, G-CON-1140 Curbs & Gutters 15d 12-Sep-24 02-Oct-24 30d, G-CON-5050 Concrete Paving 20d 12-Sep-24 09-Oct-24 40d, G-CON-1380 Asphalt Paving 15d 03-Oct-24 23-Oct-24 30d, G-CON-1500 Set Generator 1d 24-Oct-24 24-Oct-24 30d, G-CON-5190 Generator - Pull / Term 10d 25-Oct-24 07-Nov-24 30d, G-CON-1150 Landscape 15d 24-Oct-24 13-Nov-24 45d, G-CON-5200 Generator - Test 5d 08-Nov-24 14-Nov-24 30d |
| Startup & Commissioning | Startup & Commissioning | 79d | 18-Nov-24 | 12-Mar-25 | 37d |  |
| Equip Startup | Equip Startup | 40d | 18-Nov-24 | 16-Jan-25 | 56d | G-CON-1950 Partial Final Electrical Inspection - ER / IDF / MD F 1d 18-Nov-24 18-Nov-24 -15d, G-CON-1490 *Milestone: Permanent Power Established from Xcel t o Site 0d 20-Nov-24 -10d, G-CON-1860 Startup Pumps 2d 22-Nov-24 25-Nov-24 -11d, G-CON-1920 Startup HVLV Big Fans 2d 25-Nov-24 26-Nov-24 89d, G-CON-1970 Startup Electrical - Generator / ATS / MTS 5d 22-Nov-24 02-Dec-24 25d, G-CON-1510 *Milestone: Ready for Permanent Power in Building 0d 03-Dec-24 19d, G-CON-1900 Startup Air Compressors (by Manufacturer) 2d 04-Dec-24 05-Dec-24 84d, G-CON-1850 Startup Exhaust Fans 3d 04-Dec-24 06-Dec-24 7d, G-CON-1870 Startup Boilers (by Manufacturer) 3d 04-Dec-24 06-Dec-24 -6d, G-CON-1810 Startup AHUs (by Manufacturer) 5d 04-Dec-24 10-Dec-24 -1d, G-CON-1840 Startup HVU / HRHVU & IR Heaters (by Manufacturer) 5d 04-Dec-24 10-Dec-24 -1d, G-CON-1910 Startup VAVs 10d 04-Dec-24 17-Dec-24 -15d, G-CON-8560 Startup Paint Booth (by Manufacturer) 2d 26-Dec-24 27-Dec-24 11d, G-CON-8080 Start-up Misc Equip (Paint Booth / Auto Lift / Etc) 15d 09-Dec-24 30-Dec-24 10d, G-CON-1880 Startup HWU Heaters 2d 03-Jan-25 06-Jan-25 -25d, G-CON-8060 Start-up Fire Sprinkler 5d 31-Dec-24 07-Jan-25 5d, G-CON-1890 Startup EU Heaters 2d 07-Jan-25 08-Jan-25 62d, G-CON-1160 Start-up Security 5d 10-Jan-25 16-Jan-25 -6d |
| Life Safety | Life Safety | 54d | 03-Dec-24 | 18-Feb-25 | -25d | G-CON-8620 Life Safety - Generator / ATS 1d 03-Dec-24 03-Dec-24 25d, G-CON-8610 Life Safety - Fire Sprinkler 1d 31-Dec-24 31-Dec-24 6d, G-CON-8070 Final Electrical Inspection - Entire Building 1d 09-Jan-25 09-Jan-25 3d, G-CON-8590 Life Safety - Doors / Egress Signage Testing & Insp ection 1d 17-Jan-25 17-Jan-25 -6d, G-CON-2000 Life Safety - Duct Detector DP T esting 2d 03-Feb-25 04-Feb-25 -25d, G-CON-8600 Life Safety - Mechanical Dampers / Unit Shunt Trip 1d 05-Feb-25 05-Feb-25 -19d, G-CON-8050 Life Safety - Final Fire Alarm Inspection 1d 13-Feb-25 13-Feb-25 -25d, G-CON-8040 Life Safety - Final Building 3d 14-Feb-25 18-Feb-25 -25d |
| Test & Balance | Test & Balance | 27d | 07-Jan-25 | 12-Feb-25 | -31d | G-CON-1760 Test & Balance - Wet (Entire Building) Pumps, Boile rs, HW U 5d 07-Jan-25 13-Jan-25 -25d, G-CON-1770 Test & Balance - Air - CRAC & Split Units 2d 22-Jan-25 23-Jan-25 -31d, G-CON-1780 Test & Balance - Air - AHU, HVU, HRHVU, VAVs 6d 24-Jan-25 31-Jan-25 -31d, G-CON-1790 Test & Balance - Air - Exhaust Fans 6d 03-Feb-25 10-Feb-25 -31d, G-CON-1800 Test & Balance - Final Building Balance 2d 11-Feb-25 12-Feb-25 -31d |
| Commissioning | Commissioning | 20d | 13-Feb-25 | 12-Mar-25 | 37d | G-CON-1990 HVAC Submit & Review Test & Balance Report 10d 13-Feb-25 26-Feb-25 -31d, G-CON-1940 Sequence of Operations / Final Commissioning 20d 13-Feb-25 12-Mar-25 37d |
| Substantial Completion | Substantial Completion | 47d | 27-Feb-25 | 02-May-25 | 0d | G-CON-1170 Final Inspections (TCO) 5d 27-Feb-25 05-Mar-25 -31d, G-CON-1180 Punchlist & Corrections 10d 06-Mar-25 19-Mar-25 -31d, G-CON-1190 Removal of Temp AOA 2d 20-Mar-25 21-Mar-25 -31d, G-CON-1420 Owner Supplied Furniture & Office Equipment - Insta ll 10d 20-Mar-25 02-Apr-25 22d, G-CON-1200 Weather 15d 24-Mar-25 11-Apr-25 -31d, G-CON-1210 *Milestone: Substantial Completion 0d 11-Apr-25 -31d, G-CON-1530 Owner Move-in, Finalize & Prep for Beneficial Occup ancy 15d 14-Apr-25 02-May-25 0d, G-CON-1540 *Milestone: Beneficial Occupancy 0d 02-May-25 0d |
| Close Out | Close Out | 30d | 05-May-25 | 16-Jun-25 | 0d |  |
| Final Closeout | Final Closeout | 30d | 05-May-25 | 16-Jun-25 | 0d | G-CON-1220 Closeout / Final Completion 30d 05-May-25 16-Jun-25 0d |
