| entry | activity_code | activity_id | activity_name | activity_status | finish | total_float | start |
| --- | --- | --- | --- | --- | --- | --- | --- |
| 1 | CHI05-PH2-FIT-BL-D5,2,2,1 | CHI05-05-FC-F | Site Secured Finish (August 04, 2025) | Not Started | 04-Aug-25 17:00:00 | 0 |  |
| 2 | CHI05-PH2-FIT-BL-D5,2,2,1 | CHI05-05-NTP-S | Notice To Proceed | Not Started |  | 0 | 02-Oct-24 08:00:00 |
| 3 | CHI05-PH2-FIT-BL-D5,2,2,2 | CHI05-03-L1CX-S | Start L1 CX (Red Tag) for Colo 3 | Not Started |  | 95 | 22-Jan-25 08:00:00 |
| 4 | CHI05-PH2-FIT-BL-D5,2,2,2 | CHI05-03-ROJ-F | Complete Last ROJ Arrival for Colo 3 | Not Started | 02-Jan-25 17:00:00 | 119 |  |
| 5 | CHI05-PH2-FIT-BL-D5,2,2,2 | CHI05-03-L2CX-S | Start L2 CX (Yellow Tag) for Colo 3 | Not Started |  | 77 | 18-Feb-25 08:00:00 |
| 6 | CHI05-PH2-FIT-BL-D5,2,2,2 | CHI05-03-L1CX-F | Complete L1 Cx (All Red Tags/ROJ) for Colo 3 | Not Started | 07-Mar-25 17:00:00 | 63 |  |
| 7 | CHI05-PH2-FIT-BL-D5,2,2,2 | CHI05-03-L2CX-F | Complete L2 CX (Yellow Tag) for Colo 3 | Not Started | 06-May-25 17:00:00 | 52 |  |
| 8 | CHI05-PH2-FIT-BL-D5,2,2,2 | CHI05-03-POW-F | Power-ON Utility for Colo 3 | Not Started | 28-Feb-25 17:00:00 | 51 |  |
| 9 | CHI05-PH2-FIT-BL-D5,2,2,2 | CHI05-03-L3CX-S | Start L3 Cx (Green tag) for Colo 3 | Not Started |  | 56 | 26-Mar-25 08:00:00 |
| 10 | CHI05-PH2-FIT-BL-D5,2,2,2 | CHI05-03-SSC-F | Complete Phase 3 Security System Test for Colo 3 | Not Started | 10-Jul-25 17:00:00 | 17 |  |
| 11 | CHI05-PH2-FIT-BL-D5,2,2,2 | CHI05-03-MEQ-S | Start-up Mechanical Equipment for Colo 3 | Not Started |  | 72 | 22-Jan-25 08:00:00 |
| 12 | CHI05-PH2-FIT-BL-D5,2,2,2 | CHI05-03-CSA-F | Interior Finishes/CSA Complete for Colo 3 | Not Started | 25-Mar-25 17:00:00 | 56 |  |
| 13 | CHI05-PH2-FIT-BL-D5,2,2,2 | CHI05-03-GEN-F | Generators Ready Fuel for Colo 3 | Not Started | 02-Oct-24 17:00:00 | 109 |  |
| 14 | CHI05-PH2-FIT-BL-D5,2,2,2 | CHI05-03-MEP-F | MEP Rough-in Complete for Colo 3 | Not Started | 11-Feb-25 17:00:00 | 76 |  |
| 15 | CHI05-PH2-FIT-BL-D5,2,2,2 | CHI05-03-L3CX-F | Complete L3 CX (Green Tag) for Colo 3 | Not Started | 27-May-25 17:00:00 | 38 |  |
| 16 | CHI05-PH2-FIT-BL-D5,2,2,2 | CHI05-03-BAS-F | Complete BAS SAT for Colo 3 | Not Started | 25-Mar-25 17:00:00 | 56 |  |
| 17 | CHI05-PH2-FIT-BL-D5,2,2,2 | CHI05-03-EPMS-F | Complete EPMS SAT for Colo 3 | Not Started | 25-Mar-25 17:00:00 | 56 |  |
| 18 | CHI05-PH2-FIT-BL-D5,2,2,2 | CHI05-03-FIRE-F | Complete Fire Alarm for Colo 3 | Not Started | 25-Mar-25 17:00:00 | 56 |  |
| 19 | CHI05-PH2-FIT-BL-D5,2,2,2 | CHI05-03-L4CX-F | Complete L4 Cx (Blue Tag) for Colo 3 | Not Started | 30-Jun-25 17:00:00 | 17 |  |
| 20 | CHI05-PH2-FIT-BL-D5,2,2,2 | CHI05-03-L5CX-F | Complete L5/IST (White Tag) for Colo 3 | Not Started | 02-Jul-25 17:00:00 | 17 |  |
| 21 | CHI05-PH2-FIT-BL-D5,2,2,2 | CHI05-03-RNI-F | Complete Ready for Network Install (RNI) For Colo 3 | Not Started | 03-Jun-25 17:00:00 | 38 |  |
| 22 | CHI05-PH2-FIT-BL-D5,2,2,2 | CHI05-03-CO-F | Complete CorpNet For Colo 3 | Not Started | 27-May-25 17:00:00 | 48 |  |
| 23 | CHI05-PH2-FIT-BL-D5,2,2,3 | CHI05-05-ROJ-F | Complete Last ROJ Arrival for Colo 5 | Not Started | 02-Jan-25 17:00:00 | 119 |  |
| 24 | CHI05-PH2-FIT-BL-D5,2,2,3 | CHI05-05-L2CX-S | Start L2 CX (Yellow Tag) for Colo 5 | Not Started |  | 77 | 18-Feb-25 08:00:00 |
| 25 | CHI05-PH2-FIT-BL-D5,2,2,3 | CHI05-05-L1CX-F | Complete L1 Cx (All Red Tags/ROJ) for Colo 5 | Not Started | 25-Feb-25 17:00:00 | 49 |  |
| 26 | CHI05-PH2-FIT-BL-D5,2,2,3 | CHI05-05-L2CX-F | Complete L2 CX (Yellow Tag) for Colo 5 | Not Started | 17-Apr-25 17:00:00 | 39 |  |
| 27 | CHI05-PH2-FIT-BL-D5,2,2,3 | CHI05-05-POW-F | Power-ON Utility for Colo 5 | Not Started | 28-Feb-25 17:00:00 | 73 |  |
| 28 | CHI05-PH2-FIT-BL-D5,2,2,3 | CHI05-05-L3CX-S | Start L3 Cx (Green tag) for Colo 5 | Not Started |  | 73 | 03-Mar-25 08:00:00 |
| 29 | CHI05-PH2-FIT-BL-D5,2,2,3 | CHI05-05-MEQ-S | Start-up Mechanical Equipment for Colo 5 | Not Started |  | 97 | 26-Dec-24 08:00:00 |
| 30 | CHI05-PH2-FIT-BL-D5,2,2,3 | CHI05-05-CSA-F | Interior Finishes/CSA Complete for Colo 5 | Not Started | 13-Mar-25 17:00:00 | 64 |  |
| 31 | CHI05-PH2-FIT-BL-D5,2,2,3 | CHI05-05-GEN-F | Generators Ready Fuel for Colo 5 | Not Started | 08-Oct-24 17:00:00 | 112 |  |
| 32 | CHI05-PH2-FIT-BL-D5,2,2,3 | CHI05-05-MEP-F | MEP Rough-in Complete for Colo 5 | Not Started | 08-Jan-25 17:00:00 | 100 |  |
| 33 | CHI05-PH2-FIT-BL-D5,2,2,3 | CHI05-05-L3CX-F | Complete L3 CX (Green Tag) for Colo 5 | Not Started | 30-Apr-25 17:00:00 | 35 |  |
| 34 | CHI05-PH2-FIT-BL-D5,2,2,3 | CHI05-05-BAS-F | Complete BAS SAT for Colo 5 | Not Started | 24-Mar-25 17:00:00 | 57 |  |
| 35 | CHI05-PH2-FIT-BL-D5,2,2,3 | CHI05-05-EPMS-F | Complete EPMS SAT for Colo 5 | Not Started | 24-Mar-25 17:00:00 | 57 |  |
| 36 | CHI05-PH2-FIT-BL-D5,2,2,3 | CHI05-05-FIR-F | Complete Fire Alarm for Colo 5 | Not Started | 24-Mar-25 17:00:00 | 57 |  |
| 37 | CHI05-PH2-FIT-BL-D5,2,2,3 | CHI05-05-SSC-F | Complete Phase 3 Security System Test for Colo 5 | Not Started | 13-Jun-25 17:00:00 | 35 |  |
| 38 | CHI05-PH2-FIT-BL-D5,2,2,3 | CHI05-05-L4CX-F | Complete L4 Cx (Blue Tag) for Colo 5 | Not Started | 04-Jun-25 17:00:00 | 35 |  |
| 39 | CHI05-PH2-FIT-BL-D5,2,2,3 | CHI05-05-L5CX-F | Complete L5/IST (White Tag) for Colo 5 | Not Started | 06-Jun-25 17:00:00 | 35 |  |
| 40 | CHI05-PH2-FIT-BL-D5,2,2,3 | CHI05-05-L1CX-S | Start L1 CX (Red Tag) for Colo 5 | Not Started |  | 74 | 21-Jan-25 08:00:00 |
| 41 | CHI05-PH2-FIT-BL-D5,2,2,3 | CHI05-05-RNI-F | Complete Ready for Network Install (RNI) For Colo 5 | Not Started | 07-May-25 17:00:00 | 56 |  |
| 42 | CHI05-PH2-FIT-BL-D5,2,2,3 | CHI05-05-CO-F | Complete CorpNet For Colo 5 | Not Started | 30-Apr-25 17:00:00 | 66 |  |
| 43 | CHI05-PH2-FIT-BL-D5,2,2,4 | CHI05-04-ROJ-F | Complete Last ROJ Arrival for Colo 4 | Not Started | 06-Jan-25 17:00:00 | 122 |  |
| 44 | CHI05-PH2-FIT-BL-D5,2,2,4 | CHI05-04-L2CX-S | Start L2 CX (Yellow Tag) for Colo 4 | Not Started |  | 82 | 18-Feb-25 08:00:00 |
| 45 | CHI05-PH2-FIT-BL-D5,2,2,4 | CHI05-04-L1CX-F | Complete L1 Cx (All Red Tags/ROJ) for Colo 4 | Not Started | 14-Apr-25 17:00:00 | 14 |  |
| 46 | CHI05-PH2-FIT-BL-D5,2,2,4 | CHI05-04-L2CX-F | Complete L2 CX (Yellow Tag) for Colo 4 | Not Started | 05-Jun-25 17:00:00 | 15 |  |
| 47 | CHI05-PH2-FIT-BL-D5,2,2,4 | CHI05-04-POW-F | Power-ON Utility for Colo 4 | Not Started | 28-Feb-25 17:00:00 | 58 |  |
| 48 | CHI05-PH2-FIT-BL-D5,2,2,4 | CHI05-04-L3CX-S | Start L3 Cx (Green tag) for Colo 4 | Not Started |  | 28 | 12-May-25 08:00:00 |
| 49 | CHI05-PH2-FIT-BL-D5,2,2,4 | CHI05-04-SSC-F | Complete Phase 3 Security System Test for Colo 4 | Not Started | 11-Aug-25 17:00:00 | 0 |  |
| 50 | CHI05-PH2-FIT-BL-D5,2,2,4 | CHI05-04-MEQ-S | Start-up Mechanical Equipment for Colo 4 | Not Started |  | 22 | 10-Apr-25 08:00:00 |
| 51 | CHI05-PH2-FIT-BL-D5,2,2,4 | CHI05-04-CSA-F | Interior Finishes/CSA Complete for Colo 4 | Not Started | 30-Apr-25 17:00:00 | 35 |  |
| 52 | CHI05-PH2-FIT-BL-D5,2,2,4 | CHI05-04-GEN-F | Generators Ready Fuel for Colo 4 | Not Started | 04-Oct-24 17:00:00 | 113 |  |
| 53 | CHI05-PH2-FIT-BL-D5,2,2,4 | CHI05-04-MEP-F | MEP Rough-in Complete for Colo 4 | Not Started | 04-Apr-25 17:00:00 | 43 |  |
| 54 | CHI05-PH2-FIT-BL-D5,2,2,4 | CHI05-04-L3CX-F | Complete L3 CX (Green Tag) for Colo 4 | Not Started | 26-Jun-25 17:00:00 | 0 |  |
| 55 | CHI05-PH2-FIT-BL-D5,2,2,4 | CHI05-04-BAS-F | Complete BAS SAT for Colo 4 | Not Started | 09-May-25 17:00:00 | 28 |  |
| 56 | CHI05-PH2-FIT-BL-D5,2,2,4 | CHI05-04-EPMS-F | Complete EPMS SAT for Colo 4 | Not Started | 09-May-25 17:00:00 | 28 |  |
| 57 | CHI05-PH2-FIT-BL-D5,2,2,4 | CHI05-04-FIRE-F | Complete Fire Alarm for Colo 4 | Not Started | 09-May-25 17:00:00 | 28 |  |
| 58 | CHI05-PH2-FIT-BL-D5,2,2,4 | CHI05-04-L4CX-F | Complete L4 Cx (Blue Tag) for Colo 4 | Not Started | 31-Jul-25 17:00:00 | 0 |  |
| 59 | CHI05-PH2-FIT-BL-D5,2,2,4 | CHI05-04-L5CX-F | Complete L5/IST (White Tag) for Colo 4 | Not Started | 04-Aug-25 17:00:00 | 0 |  |
| 60 | CHI05-PH2-FIT-BL-D5,2,2,4 | CHI05-04-L1CX-S | Start L1 CX (Red Tag) for Colo 4 | Not Started |  | 72 | 22-Jan-25 08:00:00 |
| 61 | CHI05-PH2-FIT-BL-D5,2,2,4 | CHI05-04-RNI-F | Complete Ready for Network Install (RNI) For Colo 4 | Not Started | 03-Jul-25 17:00:00 | 21 |  |
| 62 | CHI05-PH2-FIT-BL-D5,2,2,4 | CHI05-04-CO-F | Complete CorpNet For Colo 4 | Not Started | 26-Jun-25 17:00:00 | 26 |  |
| 63 | CHI05-PH2-FIT-BL-D5,2,2,5 | CHI05-02-L1CX-S | Start L1 CX (Red Tag) for Colo 2 | Not Started |  | 95 | 22-Jan-25 08:00:00 |
| 64 | CHI05-PH2-FIT-BL-D5,2,2,5 | CHI05-02-ROJ-F | Complete Last ROJ Arrival for Colo 2 | Not Started | 10-Feb-25 17:00:00 | 92 |  |
| 65 | CHI05-PH2-FIT-BL-D5,2,2,5 | CHI05-02-L2CX-S | Start L2 CX (Yellow Tag) for Colo 2 | Not Started |  | 77 | 18-Feb-25 08:00:00 |
| 66 | CHI05-PH2-FIT-BL-D5,2,2,5 | CHI05-02-L1CX-F | Complete L1 Cx (All Red Tags/ROJ) for Colo 2 | Not Started | 05-Feb-25 17:00:00 | 90 |  |
| 67 | CHI05-PH2-FIT-BL-D5,2,2,5 | CHI05-02-L2CX-F | Complete L2 CX (Yellow Tag) for Colo 2 | Not Started | 14-Apr-25 17:00:00 | 47 |  |
| 68 | CHI05-PH2-FIT-BL-D5,2,2,5 | CHI05-02-POW-F | Power-ON Utility for Colo 2 | Not Started | 28-Feb-25 17:00:00 | 29 |  |
| 69 | CHI05-PH2-FIT-BL-D5,2,2,5 | CHI05-02-L3CX-S | Start L3 Cx (Green tag) for Colo 2 | Not Started |  | 73 | 03-Mar-25 08:00:00 |
| 70 | CHI05-PH2-FIT-BL-D5,2,2,5 | CHI05-02-MEQ-S | Start-up Mechanical Equipment for Colo 2 | Not Started |  | 96 | 27-Dec-24 08:00:00 |

| entry | activity_code | activity_id | activity_name | activity_status | finish | total_float | start |
| --- | --- | --- | --- | --- | --- | --- | --- |
| 71 | CHI05-PH2-FIT-BL-D5,2,2,5 | CHI05-02-CSA-F | Interior Finishes/CSA Complete for Colo 2 | Not Started | 21-Feb-25 17:00:00 | 78 |  |
| 72 | CHI05-PH2-FIT-BL-D5,2,2,5 | CHI05-02-GEN-F | Generators Ready Fuel for Colo 2 | Not Started | 30-Sep-24 17:00:00 | 122 |  |
| 73 | CHI05-PH2-FIT-BL-D5,2,2,5 | CHI05-02-MEP-F | MEP Rough-in Complete for Colo 2 | Not Started | 16-Jan-25 17:00:00 | 94 |  |
| 74 | CHI05-PH2-FIT-BL-D5,2,2,5 | CHI05-02-L3CX-F | Complete L3 CX (Green Tag) for Colo 2 | Not Started | 30-Apr-25 17:00:00 | 35 |  |
| 75 | CHI05-PH2-FIT-BL-D5,2,2,5 | CHI05-02-BAS-F | Complete BAS SAT for Colo 2 | Not Started | 24-Mar-25 17:00:00 | 57 |  |
| 76 | CHI05-PH2-FIT-BL-D5,2,2,5 | CHI05-02-EPMS-F | Complete EPMS SAT for Colo 2 | Not Started | 24-Mar-25 17:00:00 | 57 |  |
| 77 | CHI05-PH2-FIT-BL-D5,2,2,5 | CHI05-02-FIRE-F | Complete Fire Alarm for Colo 2 | Not Started | 24-Mar-25 17:00:00 | 57 |  |
| 78 | CHI05-PH2-FIT-BL-D5,2,2,5 | CHI05-02-SSC-F | Complete Phase 3 Security System Test for Colo 2 | Not Started | 13-Jun-25 17:00:00 | 35 |  |
| 79 | CHI05-PH2-FIT-BL-D5,2,2,5 | CHI05-02-L4CX-F | Complete L4 Cx (Blue Tag) for Colo 2 | Not Started | 04-Jun-25 17:00:00 | 35 |  |
| 80 | CHI05-PH2-FIT-BL-D5,2,2,5 | CHI05-02-L5CX-F | Complete L5/IST (White Tag) for Colo 2 | Not Started | 06-Jun-25 17:00:00 | 35 |  |
| 81 | CHI05-PH2-FIT-BL-D5,2,2,5 | CHI05-02-RNI-F | Complete Ready for Network Install (RNI) For Colo 2 | Not Started | 07-May-25 17:00:00 | 56 |  |
| 82 | CHI05-PH2-FIT-BL-D5,2,2,5 | CHI05-02-CO-F | Complete CorpNet For Colo 2 | Not Started | 30-Apr-25 17:00:00 | 66 |  |
| 83 | CHI05-PH2-FIT-BL-D5,3,3,5,6,2 | CHI05-02-01-MG-1000 | Install Dampers and actuators at Louvers - Upper level (RED) - COLO2 Cell 1 - MG | Not Started | 11-Oct-24 17:00:00 | 0 | 07-Oct-24 08:00:00 |
| 84 | CHI05-PH2-FIT-BL-D5,3,3,5,6,2 | CHI05-02-01-MG-1010 | Install Dampers and actuators at Louvers - Lower level (OA) - COLO2 Cell 1 - MG | Not Started | 15-Oct-24 17:00:00 | 0 | 09-Oct-24 08:00:00 |
| 85 | CHI05-PH2-FIT-BL-D5,3,3,5,6,2 | CHI05-02-01-MG-1020 | Overhead MEP Installation - COLO2 Cell 1 - MG | Not Started | 29-Oct-24 17:00:00 | 48 | 16-Oct-24 08:00:00 |
| 86 | CHI05-PH2-FIT-BL-D5,3,3,5,6,2 | CHI05-02-01-MG-1030 | Deliver AHU into Mech. Gallery - COLO2 Cell 1 - MG | Not Started | 31-Oct-24 17:00:00 | 48 | 30-Oct-24 08:00:00 |
| 87 | CHI05-PH2-FIT-BL-D5,3,3,5,6,2 | CHI05-02-01-MG-1040 | Install Walls and Primer Paint - COLO2 Cell 1 - MG | Not Started | 14-Nov-24 17:00:00 | 48 | 01-Nov-24 08:00:00 |
| 88 | CHI05-PH2-FIT-BL-D5,3,3,5,6,2 | CHI05-02-01-MG-1060 | Placing the AHU - COLO2 Cell 1 - MG | Not Started | 26-Nov-24 12:00:00 | 94 | 22-Nov-24 08:00:00 |
| 89 | CHI05-PH2-FIT-BL-D5,3,3,5,6,2 | CHI05-02-01-MG-1050 | Layout Ceiling and install Pencile Rod - COLO2 Cell 1 - MG | Not Started | 15-Nov-24 17:00:00 | 98 | 15-Nov-24 08:00:00 |
| 90 | CHI05-PH2-FIT-BL-D5,3,3,5,6,2 | CHI05-02-01-MG-1070 | Piping and Electrical Termination to AHUs - COLO2 Cell 1 - MG | Not Started | 11-Dec-24 12:00:00 | 94 | 26-Nov-24 13:00:00 |
| 91 | CHI05-PH2-FIT-BL-D5,3,3,5,6,2 | CHI05-02-01-MG-1080 | Pipe Testing - COLO2 Cell 1 - MG | Not Started | 13-Dec-24 12:00:00 | 100 | 11-Dec-24 13:00:00 |
| 92 | CHI05-PH2-FIT-BL-D5,3,3,5,6,2 | CHI05-02-01-MG-1090 | Install ceiling and Light Fittings - COLO2 Cell 1 - MG | Not Started | 26-Dec-24 12:00:00 | 100 | 13-Dec-24 13:00:00 |
| 93 | CHI05-PH2-FIT-BL-D5,3,3,5,6,2 | CHI05-02-01-MG-1100 | Trim out MEP - COLO2 Cell 1 - MG | Not Started | 26-Dec-24 12:00:00 | 109 | 18-Dec-24 13:00:00 |
| 94 | CHI05-PH2-FIT-BL-D5,3,3,5,6,2 | CHI05-02-01-MG-1045 | Post Wall Overhead MEP - COLO2 Cell 1 - MG | Not Started | 06-Dec-24 17:00:00 | 94 | 15-Nov-24 08:00:00 |
| 95 | CHI05-PH2-FIT-BL-D5,3,3,5,6,1 | CHI05-02-01-DH-1050 | Cable Pulling at PDU & Busway - COLO2 Cell 1 - DH | Not Started | 20-Jan-25 17:00:00 | 42 | 30-Dec-24 08:00:00 |
| 96 | CHI05-PH2-FIT-BL-D5,3,3,5,6,1 | CHI05-02-01-DH-1000 | Overhead MEP and Hangers (Above Ceiling) - COLO2 Cell 1 - DH | Not Started | 22-Oct-24 17:00:00 | 68 | 07-Oct-24 08:00:00 |
| 97 | CHI05-PH2-FIT-BL-D5,3,3,5,6,1 | CHI05-02-01-DH-1060 | HAC install and Rise - COLO2 Cell 1 - DH | Not Started | 26-Dec-24 17:00:00 | 78 | 19-Dec-24 08:00:00 |
| 98 | CHI05-PH2-FIT-BL-D5,3,3,5,6,1 | CHI05-02-01-DH-1070 | Termination at PDU & Busway- COLO2 Cell 1 - DH | Not Started | 03-Jan-25 17:00:00 | 53 | 19-Dec-24 08:00:00 |
| 99 | CHI05-PH2-FIT-BL-D5,3,3,5,6,1 | CHI05-02-01-DH-1010 | Security Screen Installation - COLO2 Cell 1 - DH | Not Started | 19-Nov-24 17:00:00 | 48 | 15-Nov-24 08:00:00 |
| 100 | CHI05-PH2-FIT-BL-D5,3,3,5,6,1 | CHI05-02-01-DH-1020 | Ceiling Grid and Tile - COLO2 Cell 1 - DH | Not Started | 26-Nov-24 17:00:00 | 48 | 20-Nov-24 08:00:00 |
| 101 | CHI05-PH2-FIT-BL-D5,3,3,5,6,1 | CHI05-02-01-DH-1040 | Install PDU's - COLO2 Cell 1 - DH | Not Started | 18-Dec-24 17:00:00 | 48 | 12-Dec-24 08:00:00 |
| 102 | CHI05-PH2-FIT-BL-D5,3,3,5,6,1 | CHI05-02-01-DH-1030 | Overhead MEP Installation (Below Ceiling) - COLO2 Cell 1 - DH | Not Started | 11-Dec-24 17:00:00 | 48 | 27-Nov-24 08:00:00 |
| 103 | CHI05-PH2-FIT-BL-D5,3,3,5,6,1 | CHI05-02-01-DH-1080 | Install Low Voltage Wiring and Fiber Optic - COLO2 Cell 1 - DH | Not Started | 10-Jan-25 17:00:00 | 78 | 27-Dec-24 08:00:00 |
| 104 | CHI05-PH2-FIT-BL-D5,3,3,5,6,1 | CHI05-02-01-DH-1035 | HAC Placing - COLO2 Cell 1 - DH | Not Started | 18-Dec-24 17:00:00 | 78 | 12-Dec-24 08:00:00 |
| 105 | CHI05-PH2-FIT-BL-D5,3,3,5,6,1 | CHI05-02-01-DH-1090 | Finishes and Signage - COLO2 Cell 1 - DH | Not Started | 20-Jan-25 17:00:00 | 123 | 14-Jan-25 08:00:00 |
| 106 | CHI05-PH2-FIT-BL-D5,3,3,5,6,4,1 | CHI05-02-01-L1-1140 | Interior - L1 UPS - COLO2 Cell 1 | Not Started | 02-Jan-25 17:00:00 | 87 | 02-Jan-25 08:00:00 |
| 107 | CHI05-PH2-FIT-BL-D5,3,3,5,6,4,1 | CHI05-02-01-L1-1150 | Interior - L1 MSB - COLO2 Cell 1 | Not Started | 03-Jan-25 17:00:00 | 93 | 03-Jan-25 08:00:00 |
| 108 | CHI05-PH2-FIT-BL-D5,3,3,5,6,4,1 | CHI05-02-01-L1-1160 | Interior - L1 PDUs - COLO2 Cell 1 | Not Started | 06-Jan-25 17:00:00 | 97 | 06-Jan-25 08:00:00 |
| 109 | CHI05-PH2-FIT-BL-D5,3,3,5,6,4,1 | CHI05-02-01-L1-1170 | Interior - L1 AHUs - COLO2 Cell 1 | Not Started | 08-Jan-25 17:00:00 | 105 | 08-Jan-25 08:00:00 |
| 110 | CHI05-PH2-FIT-BL-D5,3,3,5,6,4,1 | CHI05-02-01-L1-1180 | Interior - L1 ATSs - COLO2 Cell 1 | Not Started | 07-Jan-25 17:00:00 | 101 | 07-Jan-25 08:00:00 |
| 111 | CHI05-PH2-FIT-BL-D5,3,3,5,6,4,1 | CHI05-02-01-L1-1190 | Interior - L1 Busway - COLO2 Cell 1 | Not Started | 07-Jan-25 17:00:00 | 101 | 07-Jan-25 08:00:00 |
| 112 | CHI05-PH2-FIT-BL-D5,3,3,5,6,4,1 | CHI05-02-01-L1-1250 | Interior - L1 ADP - COLO2 Cell 1 | Not Started | 06-Jan-25 17:00:00 | 97 | 06-Jan-25 08:00:00 |
| 113 | CHI05-PH2-FIT-BL-D5,3,3,5,6,4,2 | CHI05-02-01-L2-1260 | Interior - L2 UPS - COLO2 Cell 1 | Not Started | 03-Mar-25 17:00:00 | 52 | 25-Feb-25 08:00:00 |
| 114 | CHI05-PH2-FIT-BL-D5,3,3,5,6,4,2 | CHI05-02-01-L2-1270 | Interior - L2 MSB - COLO2 Cell 1 | Not Started | 10-Mar-25 17:00:00 | 52 | 04-Mar-25 08:00:00 |
| 115 | CHI05-PH2-FIT-BL-D5,3,3,5,6,4,2 | CHI05-02-01-L2-1280 | Interior - L2 PDUs - COLO2 Cell 1 | Not Started | 17-Mar-25 17:00:00 | 52 | 11-Mar-25 08:00:00 |
| 116 | CHI05-PH2-FIT-BL-D5,3,3,5,6,4,2 | CHI05-02-01-L2-1290 | Interior - L2 AHUs - COLO2 Cell 1 | Not Started | 31-Mar-25 17:00:00 | 52 | 25-Mar-25 08:00:00 |
| 117 | CHI05-PH2-FIT-BL-D5,3,3,5,6,4,2 | CHI05-02-01-L2-1300 | Interior - L2 ATSs - COLO2 Cell 1 | Not Started | 24-Mar-25 17:00:00 | 52 | 18-Mar-25 08:00:00 |
| 118 | CHI05-PH2-FIT-BL-D5,3,3,5,6,4,2 | CHI05-02-01-L2-1310 | Interior - L2 Busway - COLO2 Cell 1 | Not Started | 24-Mar-25 17:00:00 | 52 | 18-Mar-25 08:00:00 |
| 119 | CHI05-PH2-FIT-BL-D5,3,3,5,6,4,2 | CHI05-02-01-L2-1370 | Interior - L2 ADP - COLO2 Cell 1 | Not Started | 17-Mar-25 17:00:00 | 52 | 11-Mar-25 08:00:00 |
| 120 | CHI05-PH2-FIT-BL-D5,3,3,5,6,4,3 | CHI05-02-01-L3-1380 | Interior - L3 UPS - COLO2 Cell 1 | Not Started | 31-Mar-25 17:00:00 | 37 | 25-Mar-25 08:00:00 |
| 121 | CHI05-PH2-FIT-BL-D5,3,3,5,6,4,3 | CHI05-02-01-L3-1390 | Interior - L3 MSB - COLO2 Cell 1 | Not Started | 07-Apr-25 17:00:00 | 37 | 01-Apr-25 08:00:00 |
| 122 | CHI05-PH2-FIT-BL-D5,3,3,5,6,4,3 | CHI05-02-01-L3-1400 | Interior - L3 PDUs - COLO2 Cell 1 | Not Started | 14-Apr-25 17:00:00 | 42 | 08-Apr-25 08:00:00 |
| 123 | CHI05-PH2-FIT-BL-D5,3,3,5,6,4,3 | CHI05-02-01-L3-1410 | Interior - L3 AHUs - COLO2 Cell 1 | Not Started | 28-Apr-25 17:00:00 | 37 | 22-Apr-25 08:00:00 |
| 124 | CHI05-PH2-FIT-BL-D5,3,3,5,6,4,3 | CHI05-02-01-L3-1420 | Interior - L3 ATSs - COLO2 Cell 1 | Not Started | 21-Apr-25 17:00:00 | 37 | 15-Apr-25 08:00:00 |
| 125 | CHI05-PH2-FIT-BL-D5,3,3,5,6,4,3 | CHI05-02-01-L3-1430 | Interior - L3 Busway - COLO2 Cell 1 | Not Started | 21-Apr-25 17:00:00 | 42 | 15-Apr-25 08:00:00 |
| 126 | CHI05-PH2-FIT-BL-D5,3,3,5,6,4,3 | CHI05-02-01-L3-1490 | Interior - L3 ADP - COLO2 Cell 1 | Not Started | 14-Apr-25 17:00:00 | 37 | 08-Apr-25 08:00:00 |
| 127 | CHI05-PH2-FIT-BL-D5,3,3,5,6,5 | CHI05-02-01-ER-1000 | Install Walls and Primer Paint - COLO2 Cell 1 - ER | Not Started | 18-Oct-24 17:00:00 | 46 | 07-Oct-24 08:00:00 |
| 128 | CHI05-PH2-FIT-BL-D5,3,3,5,6,5 | CHI05-02-01-ER-1020 | Sprinklers and Overhead MEP (Above Ceiling) - COLO2 Cell 1 - ER | Not Started | 05-Nov-24 17:00:00 | 46 | 23-Oct-24 08:00:00 |
| 129 | CHI05-PH2-FIT-BL-D5,3,3,5,6,5 | CHI05-02-01-ER-1010 | Install Upper Screens - COLO2 Cell 1 - ER | Not Started | 22-Oct-24 17:00:00 | 46 | 16-Oct-24 08:00:00 |
| 130 | CHI05-PH2-FIT-BL-D5,3,3,5,6,5 | CHI05-02-01-ER-1030 | Install Ceiling - COLO2 Cell 1 - ER | Not Started | 08-Nov-24 17:00:00 | 46 | 06-Nov-24 08:00:00 |
| 131 | CHI05-PH2-FIT-BL-D5,3,3,5,6,5 | CHI05-02-01-ER-1040 | Below Ceiling MEP Rough In - COLO2 Cell 1 - ER | Not Started | 03-Dec-24 17:00:00 | 40 | 19-Nov-24 08:00:00 |
| 132 | CHI05-PH2-FIT-BL-D5,3,3,5,6,5 | CHI05-02-01-ER-1050 | Installation of ADP & ATS - COLO2 Cell 1 - ER | Not Started | 05-Dec-24 17:00:00 | 94 | 29-Nov-24 08:00:00 |
| 133 | CHI05-PH2-FIT-BL-D5,3,3,5,6,5 | CHI05-02-01-ER-1070 | Installation of UPS Equipment - COLO2 Cell 1 - ER | Not Started | 10-Dec-24 17:00:00 | 55 | 04-Dec-24 08:00:00 |
| 134 | CHI05-PH2-FIT-BL-D5,3,3,5,6,5 | CHI05-02-01-ER-1060 | Connet to Cable tray and conduit equipment - COLO2 Cell 1 - ER | Not Started | 09-Dec-24 17:00:00 | 104 | 03-Dec-24 08:00:00 |
| 135 | CHI05-PH2-FIT-BL-D5,3,3,5,6,5 | CHI05-02-01-ER-1080 | Cable Pulling at Elec. Equipment - COLO2 Cell 1 - ER | Not Started | 09-Jan-25 17:00:00 | 98 | 18-Dec-24 08:00:00 |
| 136 | CHI05-PH2-FIT-BL-D5,3,3,5,6,5 | CHI05-02-01-ER-1090 | Door Frame Installation - COLO2 Cell 1 - ER | Not Started | 09-Jan-25 17:00:00 | 67 | 03-Jan-25 08:00:00 |
| 137 | CHI05-PH2-FIT-BL-D5,3,3,5,6,5 | CHI05-02-01-ER-1100 | Finishes and Signage - COLO2 Cell 1 - ER | Not Started | 16-Jan-25 17:00:00 | 125 | 10-Jan-25 08:00:00 |
| 138 | CHI05-PH2-FIT-BL-D5,3,3,5,6,5 | CHI05-02-01-ER-1055 | Installation of MSB - COLO2 Cell 1 - ER | Not Started | 05-Dec-24 17:00:00 | 94 | 29-Nov-24 08:00:00 |
| 139 | CHI05-PH2-FIT-BL-D5,3,3,5,5,1 | CHI05-02-04-L4-1000 | COLO2 Cx LEV4 - COLO2 | Not Started | 04-Jun-25 17:00:00 | 35 | 01-May-25 08:00:00 |
| 140 | CHI05-PH2-FIT-BL-D5,3,3,5,5,2 | CHI05-02-04-L5-1000 | COLO2 Cx LEV5 / IST - COLO2 | Not Started | 06-Jun-25 17:00:00 | 35 | 05-Jun-25 08:00:00 |

| entry | activity_code | activity_id | activity_name | activity_status | finish | total_float | start |
| --- | --- | --- | --- | --- | --- | --- | --- |
| 141 | CHI05-PH2-FIT-BL-D5,3,3,5,1,2 | CHI05-02-02-MG-1110 | Install Dampers and actuators at Louvers - Upper level (RED) - COLO2 Cell 2 - MG | Not Started | 18-Oct-24 17:00:00 | 0 | 14-Oct-24 08:00:00 |
| 142 | CHI05-PH2-FIT-BL-D5,3,3,5,1,2 | CHI05-02-02-MG-1120 | Install Dampers and actuators at Louvers - Lower level (OA) - COLO2 Cell 2 - MG | Not Started | 22-Oct-24 17:00:00 | 0 | 16-Oct-24 08:00:00 |
| 143 | CHI05-PH2-FIT-BL-D5,3,3,5,1,2 | CHI05-02-02-MG-1130 | Overhead MEP Installation - COLO2 Cell 2 - MG | Not Started | 12-Nov-24 17:00:00 | 53 | 30-Oct-24 08:00:00 |
| 144 | CHI05-PH2-FIT-BL-D5,3,3,5,1,2 | CHI05-02-02-MG-1140 | Deliver AHU into Mech. Gallery - COLO2 Cell 2 - MG | Not Started | 14-Nov-24 17:00:00 | 53 | 13-Nov-24 08:00:00 |
| 145 | CHI05-PH2-FIT-BL-D5,3,3,5,1,2 | CHI05-02-02-MG-1150 | Install Walls and Primer Paint - COLO2 Cell 2 - MG | Not Started | 29-Nov-24 17:00:00 | 53 | 15-Nov-24 08:00:00 |
| 146 | CHI05-PH2-FIT-BL-D5,3,3,5,1,2 | CHI05-02-02-MG-1160 | Placing the AHU - COLO2 Cell 2 - MG | Not Started | 11-Dec-24 12:00:00 | 94 | 09-Dec-24 08:00:00 |
| 147 | CHI05-PH2-FIT-BL-D5,3,3,5,1,2 | CHI05-02-02-MG-1170 | Layout Ceiling and install Pencile Rod - COLO2 Cell 2 - MG | Not Started | 02-Dec-24 17:00:00 | 98 | 02-Dec-24 08:00:00 |
| 148 | CHI05-PH2-FIT-BL-D5,3,3,5,1,2 | CHI05-02-02-MG-1180 | Piping and Electrical Termination to AHUs - COLO2 Cell 2 - MG | Not Started | 26-Dec-24 12:00:00 | 94 | 11-Dec-24 13:00:00 |
| 149 | CHI05-PH2-FIT-BL-D5,3,3,5,1,2 | CHI05-02-02-MG-1190 | Pipe Testing - COLO2 Cell 2 - MG | Not Started | 30-Dec-24 12:00:00 | 98 | 26-Dec-24 13:00:00 |
| 150 | CHI05-PH2-FIT-BL-D5,3,3,5,1,2 | CHI05-02-02-MG-1200 | Install ceiling and Light Fittings - COLO2 Cell 2 - MG | Not Started | 10-Jan-25 12:00:00 | 98 | 30-Dec-24 13:00:00 |
| 151 | CHI05-PH2-FIT-BL-D5,3,3,5,1,2 | CHI05-02-02-MG-1210 | Trim out MEP - COLO2 Cell 2 - MG | Not Started | 10-Jan-25 12:00:00 | 104 | 03-Jan-25 13:00:00 |
| 152 | CHI05-PH2-FIT-BL-D5,3,3,5,1,2 | CHI05-02-02-MG-1155 | Post Wall Overhead MEP - COLO2 Cell 2 - MG | Not Started | 20-Dec-24 17:00:00 | 94 | 02-Dec-24 08:00:00 |
| 153 | CHI05-PH2-FIT-BL-D5,3,3,5,1,5 | CHI05-02-02-ER-1110 | Install Walls and Primer Paint - COLO2 Cell 2 - ER | Not Started | 01-Nov-24 17:00:00 | 46 | 21-Oct-24 08:00:00 |
| 154 | CHI05-PH2-FIT-BL-D5,3,3,5,1,5 | CHI05-02-02-ER-1120 | Sprinklers and Overhead MEP (Above Ceiling) - COLO2 Cell 2 - ER | Not Started | 19-Nov-24 17:00:00 | 46 | 06-Nov-24 08:00:00 |
| 155 | CHI05-PH2-FIT-BL-D5,3,3,5,1,5 | CHI05-02-02-ER-1130 | Install Upper Screens - COLO2 Cell 2 - ER | Not Started | 05-Nov-24 17:00:00 | 46 | 30-Oct-24 08:00:00 |
| 156 | CHI05-PH2-FIT-BL-D5,3,3,5,1,5 | CHI05-02-02-ER-1140 | Install Ceiling - COLO2 Cell 2 - ER | Not Started | 22-Nov-24 17:00:00 | 46 | 20-Nov-24 08:00:00 |
| 157 | CHI05-PH2-FIT-BL-D5,3,3,5,1,5 | CHI05-02-02-ER-1150 | Below Ceiling MEP Rough In - COLO2 Cell 2 - ER | Not Started | 17-Dec-24 17:00:00 | 40 | 04-Dec-24 08:00:00 |
| 158 | CHI05-PH2-FIT-BL-D5,3,3,5,1,5 | CHI05-02-02-ER-1160 | Installation of ADP & ATS - COLO2 Cell 2 - ER | Not Started | 12-Dec-24 17:00:00 | 99 | 06-Dec-24 08:00:00 |
| 159 | CHI05-PH2-FIT-BL-D5,3,3,5,1,5 | CHI05-02-02-ER-1170 | Installation of UPS Equipment - COLO2 Cell 2 - ER | Not Started | 17-Dec-24 17:00:00 | 55 | 11-Dec-24 08:00:00 |
| 160 | CHI05-PH2-FIT-BL-D5,3,3,5,1,5 | CHI05-02-02-ER-1180 | Connet to Cable tray and conduit equipment - COLO2 Cell 2 - ER | Not Started | 16-Dec-24 17:00:00 | 114 | 10-Dec-24 08:00:00 |
| 161 | CHI05-PH2-FIT-BL-D5,3,3,5,1,5 | CHI05-02-02-ER-1190 | Cable Pulling at Elec. Equipment - COLO2 Cell 2 - ER | Not Started | 30-Jan-25 17:00:00 | 98 | 10-Jan-25 08:00:00 |
| 162 | CHI05-PH2-FIT-BL-D5,3,3,5,1,5 | CHI05-02-02-ER-1200 | Door Frame Installation - COLO2 Cell 2 - ER | Not Started | 09-Jan-25 17:00:00 | 67 | 03-Jan-25 08:00:00 |
| 163 | CHI05-PH2-FIT-BL-D5,3,3,5,1,5 | CHI05-02-02-ER-1210 | Finishes and Signage - COLO2 Cell 2 - ER | Not Started | 03-Feb-25 17:00:00 | 118 | 28-Jan-25 08:00:00 |
| 164 | CHI05-PH2-FIT-BL-D5,3,3,5,1,5 | CHI05-02-02-ER-1165 | Installation of MSB - COLO2 Cell 2 - ER | Not Started | 12-Dec-24 17:00:00 | 94 | 06-Dec-24 08:00:00 |
| 165 | CHI05-PH2-FIT-BL-D5,3,3,5,1,1 | CHI05-02-02-DH-1100 | Termination at PDU & Busway - COLO2 Cell 2 - DH | Not Started | 10-Feb-25 17:00:00 | 42 | 21-Jan-25 08:00:00 |
| 166 | CHI05-PH2-FIT-BL-D5,3,3,5,1,1 | CHI05-02-02-DH-1110 | Overhead MEP and Hangers (Above Ceiling) - COLO2 Cell 2 - DH | Not Started | 07-Nov-24 17:00:00 | 71 | 23-Oct-24 08:00:00 |
| 167 | CHI05-PH2-FIT-BL-D5,3,3,5,1,1 | CHI05-02-02-DH-1120 | HAC install and Rise - COLO2 Cell 2 - DH | Not Started | 10-Jan-25 17:00:00 | 78 | 06-Jan-25 08:00:00 |
| 168 | CHI05-PH2-FIT-BL-D5,3,3,5,1,1 | CHI05-02-02-DH-1130 | Cable Pulling at PDU & Busway- COLO2 Cell 2 - DH | Not Started | 17-Jan-25 17:00:00 | 58 | 06-Jan-25 08:00:00 |
| 169 | CHI05-PH2-FIT-BL-D5,3,3,5,1,1 | CHI05-02-02-DH-1140 | Security Screen Installation - COLO2 Cell 2 - DH | Not Started | 04-Dec-24 17:00:00 | 53 | 02-Dec-24 08:00:00 |
| 170 | CHI05-PH2-FIT-BL-D5,3,3,5,1,1 | CHI05-02-02-DH-1150 | Ceiling Grid and Tile - COLO2 Cell 2 - DH | Not Started | 11-Dec-24 17:00:00 | 53 | 05-Dec-24 08:00:00 |
| 171 | CHI05-PH2-FIT-BL-D5,3,3,5,1,1 | CHI05-02-02-DH-1160 | Install PDU's - COLO2 Cell 2 - DH | Not Started | 03-Jan-25 17:00:00 | 53 | 27-Dec-24 08:00:00 |
| 172 | CHI05-PH2-FIT-BL-D5,3,3,5,1,1 | CHI05-02-02-DH-1170 | Overhead MEP Installation (Below Ceiling) - COLO2 Cell 2 - DH | Not Started | 26-Dec-24 17:00:00 | 53 | 12-Dec-24 08:00:00 |
| 173 | CHI05-PH2-FIT-BL-D5,3,3,5,1,1 | CHI05-02-02-DH-1180 | Install Low Voltage Wiring and Fiber Optic - COLO2 Cell 2 - DH | Not Started | 24-Jan-25 17:00:00 | 78 | 13-Jan-25 08:00:00 |
| 174 | CHI05-PH2-FIT-BL-D5,3,3,5,1,1 | CHI05-02-02-DH-1190 | HAC Placing - COLO2 Cell 2 - DH | Not Started | 03-Jan-25 17:00:00 | 78 | 27-Dec-24 08:00:00 |
| 175 | CHI05-PH2-FIT-BL-D5,3,3,5,1,1 | CHI05-02-02-DH-1200 | Finishes and Signage - COLO2 Cell 2 - DH | Not Started | 10-Feb-25 17:00:00 | 113 | 04-Feb-25 08:00:00 |
| 176 | CHI05-PH2-FIT-BL-D5,3,3,5,1,4,1 | CHI05-02-02-L1-1260 | Interior - L1 UPS - COLO2 Cell 2 | Not Started | 02-Jan-25 17:00:00 | 87 | 02-Jan-25 08:00:00 |
| 177 | CHI05-PH2-FIT-BL-D5,3,3,5,1,4,1 | CHI05-02-02-L1-1270 | Interior - L1 MSB - COLO2 Cell 2 | Not Started | 03-Jan-25 17:00:00 | 93 | 03-Jan-25 08:00:00 |
| 178 | CHI05-PH2-FIT-BL-D5,3,3,5,1,4,1 | CHI05-02-02-L1-1280 | Interior - L1 PDUs - COLO2 Cell 2 | Not Started | 06-Jan-25 17:00:00 | 97 | 06-Jan-25 08:00:00 |
| 179 | CHI05-PH2-FIT-BL-D5,3,3,5,1,4,1 | CHI05-02-02-L1-1290 | Interior - L1 AHUs - COLO2 Cell 2 | Not Started | 08-Jan-25 17:00:00 | 105 | 08-Jan-25 08:00:00 |
| 180 | CHI05-PH2-FIT-BL-D5,3,3,5,1,4,1 | CHI05-02-02-L1-1300 | Interior - L1 ATSs - COLO2 Cell 2 | Not Started | 07-Jan-25 17:00:00 | 101 | 07-Jan-25 08:00:00 |
| 181 | CHI05-PH2-FIT-BL-D5,3,3,5,1,4,1 | CHI05-02-02-L1-1310 | Interior - L1 Busway - COLO2 Cell 2 | Not Started | 07-Jan-25 17:00:00 | 101 | 07-Jan-25 08:00:00 |
| 182 | CHI05-PH2-FIT-BL-D5,3,3,5,1,4,1 | CHI05-02-02-L1-1370 | Interior - L1 ADP - COLO2 Cell 2 | Not Started | 06-Jan-25 17:00:00 | 97 | 06-Jan-25 08:00:00 |
| 183 | CHI05-PH2-FIT-BL-D5,3,3,5,1,4,2 | CHI05-02-02-L2-1380 | Interior - L2 UPS - COLO2 Cell 2 | Not Started | 03-Mar-25 17:00:00 | 52 | 25-Feb-25 08:00:00 |
| 184 | CHI05-PH2-FIT-BL-D5,3,3,5,1,4,2 | CHI05-02-02-L2-1390 | Interior - L2 MSB - COLO2 Cell 2 | Not Started | 10-Mar-25 17:00:00 | 52 | 04-Mar-25 08:00:00 |
| 185 | CHI05-PH2-FIT-BL-D5,3,3,5,1,4,2 | CHI05-02-02-L2-1400 | Interior - L2 PDUs - COLO2 Cell 2 | Not Started | 17-Mar-25 17:00:00 | 52 | 11-Mar-25 08:00:00 |
| 186 | CHI05-PH2-FIT-BL-D5,3,3,5,1,4,2 | CHI05-02-02-L2-1410 | Interior - L2 AHUs - COLO2 Cell 2 | Not Started | 31-Mar-25 17:00:00 | 52 | 25-Mar-25 08:00:00 |
| 187 | CHI05-PH2-FIT-BL-D5,3,3,5,1,4,2 | CHI05-02-02-L2-1420 | Interior - L2 ATSs - COLO2 Cell 2 | Not Started | 24-Mar-25 17:00:00 | 52 | 18-Mar-25 08:00:00 |
| 188 | CHI05-PH2-FIT-BL-D5,3,3,5,1,4,2 | CHI05-02-02-L2-1430 | Interior - L2 Busway - COLO2 Cell 2 | Not Started | 24-Mar-25 17:00:00 | 52 | 18-Mar-25 08:00:00 |
| 189 | CHI05-PH2-FIT-BL-D5,3,3,5,1,4,2 | CHI05-02-02-L2-1490 | Interior - L2 ADP - COLO2 Cell 2 | Not Started | 17-Mar-25 17:00:00 | 52 | 11-Mar-25 08:00:00 |
| 190 | CHI05-PH2-FIT-BL-D5,3,3,5,1,4,3 | CHI05-02-02-L3-1500 | Interior - L3 UPS - COLO2 Cell 2 | Not Started | 31-Mar-25 17:00:00 | 37 | 25-Mar-25 08:00:00 |
| 191 | CHI05-PH2-FIT-BL-D5,3,3,5,1,4,3 | CHI05-02-02-L3-1510 | Interior - L3 MSB - COLO2 Cell 2 | Not Started | 07-Apr-25 17:00:00 | 37 | 01-Apr-25 08:00:00 |
| 192 | CHI05-PH2-FIT-BL-D5,3,3,5,1,4,3 | CHI05-02-02-L3-1520 | Interior - L3 PDUs - COLO2 Cell 2 | Not Started | 14-Apr-25 17:00:00 | 37 | 08-Apr-25 08:00:00 |
| 193 | CHI05-PH2-FIT-BL-D5,3,3,5,1,4,3 | CHI05-02-02-L3-1530 | Interior - L3 AHUs - COLO2 Cell 2 | Not Started | 28-Apr-25 17:00:00 | 37 | 22-Apr-25 08:00:00 |
| 194 | CHI05-PH2-FIT-BL-D5,3,3,5,1,4,3 | CHI05-02-02-L3-1540 | Interior - L3 ATSs - COLO2 Cell 2 | Not Started | 21-Apr-25 17:00:00 | 42 | 15-Apr-25 08:00:00 |
| 195 | CHI05-PH2-FIT-BL-D5,3,3,5,1,4,3 | CHI05-02-02-L3-1550 | Interior - L3 Busway - COLO2 Cell 2 | Not Started | 21-Apr-25 17:00:00 | 37 | 15-Apr-25 08:00:00 |
| 196 | CHI05-PH2-FIT-BL-D5,3,3,5,1,4,3 | CHI05-02-02-L3-1610 | Interior - L3 ADP - COLO2 Cell 2 | Not Started | 14-Apr-25 17:00:00 | 42 | 08-Apr-25 08:00:00 |
| 197 | CHI05-PH2-FIT-BL-D5,3,3,5,3,2 | CHI05-02-03-MG-1220 | Install Dampers and actuators at Louvers - Upper level (RED) - COLO2 Cell 3 - MG | Not Started | 25-Oct-24 17:00:00 | 0 | 21-Oct-24 08:00:00 |
| 198 | CHI05-PH2-FIT-BL-D5,3,3,5,3,2 | CHI05-02-03-MG-1230 | Install Dampers and actuators at Louvers - Lower level (OA) - COLO2 Cell 3 - MG | Not Started | 29-Oct-24 17:00:00 | 0 | 23-Oct-24 08:00:00 |
| 199 | CHI05-PH2-FIT-BL-D5,3,3,5,3,2 | CHI05-02-03-MG-1240 | Overhead MEP Installation - COLO2 Cell 3 - MG | Not Started | 26-Nov-24 17:00:00 | 58 | 13-Nov-24 08:00:00 |
| 200 | CHI05-PH2-FIT-BL-D5,3,3,5,3,2 | CHI05-02-03-MG-1250 | Deliver AHU into Mech. Gallery - COLO2 Cell 3 - MG | Not Started | 29-Nov-24 17:00:00 | 58 | 27-Nov-24 08:00:00 |
| 201 | CHI05-PH2-FIT-BL-D5,3,3,5,3,2 | CHI05-02-03-MG-1260 | Install Walls and Primer Paint - COLO2 Cell 3 - MG | Not Started | 13-Dec-24 17:00:00 | 58 | 02-Dec-24 08:00:00 |
| 202 | CHI05-PH2-FIT-BL-D5,3,3,5,3,2 | CHI05-02-03-MG-1270 | Placing the AHU - COLO2 Cell 3 - MG | Not Started | 26-Dec-24 12:00:00 | 94 | 23-Dec-24 08:00:00 |
| 203 | CHI05-PH2-FIT-BL-D5,3,3,5,3,2 | CHI05-02-03-MG-1280 | Layout Ceiling and install Pencile Rod - COLO2 Cell 3 - MG | Not Started | 16-Dec-24 17:00:00 | 98 | 16-Dec-24 08:00:00 |
| 204 | CHI05-PH2-FIT-BL-D5,3,3,5,3,2 | CHI05-02-03-MG-1290 | Piping and Electrical Termination to AHUs - COLO2 Cell 3 - MG | Not Started | 10-Jan-25 12:00:00 | 94 | 26-Dec-24 13:00:00 |
| 205 | CHI05-PH2-FIT-BL-D5,3,3,5,3,2 | CHI05-02-03-MG-1300 | Pipe Testing - COLO2 Cell 3 - MG | Not Started | 14-Jan-25 12:00:00 | 96 | 10-Jan-25 13:00:00 |
| 206 | CHI05-PH2-FIT-BL-D5,3,3,5,3,2 | CHI05-02-03-MG-1310 | Install ceiling and Light Fittings - COLO2 Cell 3 - MG | Not Started | 24-Jan-25 12:00:00 | 96 | 14-Jan-25 13:00:00 |
| 207 | CHI05-PH2-FIT-BL-D5,3,3,5,3,2 | CHI05-02-03-MG-1320 | Trim out MEP - COLO2 Cell 3 - MG | Not Started | 24-Jan-25 12:00:00 | 99 | 17-Jan-25 13:00:00 |
| 208 | CHI05-PH2-FIT-BL-D5,3,3,5,3,2 | CHI05-02-03-MG-1265 | Post Wall Overhead MEP - COLO2 Cell 3 - MG | Not Started | 07-Jan-25 17:00:00 | 94 | 16-Dec-24 08:00:00 |
| 209 | CHI05-PH2-FIT-BL-D5,3,3,5,3,5 | CHI05-02-03-ER-1220 | Install Walls and Primer Paint - COLO2 Cell 3 - ER | Not Started | 15-Nov-24 17:00:00 | 46 | 04-Nov-24 08:00:00 |
| 210 | CHI05-PH2-FIT-BL-D5,3,3,5,3,5 | CHI05-02-03-ER-1230 | Sprinklers and Overhead MEP (Above Ceiling) - COLO2 Cell 3 - ER | Not Started | 04-Dec-24 17:00:00 | 46 | 20-Nov-24 08:00:00 |

| entry | activity_code | activity_id | activity_name | activity_status | finish | total_float | start |
| --- | --- | --- | --- | --- | --- | --- | --- |
| 211 | CHI05-PH2-FIT-BL-D5,3,3,5,3,5 | CHI05-02-03-ER-1240 | Install Upper Screens - COLO2 Cell 3 - ER | Not Started | 19-Nov-24 17:00:00 | 46 | 13-Nov-24 08:00:00 |
| 212 | CHI05-PH2-FIT-BL-D5,3,3,5,3,5 | CHI05-02-03-ER-1250 | Install Ceiling - COLO2 Cell 3 - ER | Not Started | 09-Dec-24 17:00:00 | 46 | 05-Dec-24 08:00:00 |
| 213 | CHI05-PH2-FIT-BL-D5,3,3,5,3,5 | CHI05-02-03-ER-1260 | Below Ceiling MEP Rough In - COLO2 Cell 3 - ER | Not Started | 02-Jan-25 17:00:00 | 40 | 18-Dec-24 08:00:00 |
| 214 | CHI05-PH2-FIT-BL-D5,3,3,5,3,5 | CHI05-02-03-ER-1270 | Installation of ADP & ATS - COLO2 Cell 3 - ER | Not Started | 27-Dec-24 17:00:00 | 94 | 20-Dec-24 08:00:00 |
| 215 | CHI05-PH2-FIT-BL-D5,3,3,5,3,5 | CHI05-02-03-ER-1280 | Installation of UPS Equipment - COLO2 Cell 3 - ER | Not Started | 09-Jan-25 17:00:00 | 45 | 03-Jan-25 08:00:00 |
| 216 | CHI05-PH2-FIT-BL-D5,3,3,5,3,5 | CHI05-02-03-ER-1290 | Connet to Cable tray and conduit equipment - COLO2 Cell 3 - ER | Not Started | 31-Dec-24 17:00:00 | 119 | 24-Dec-24 08:00:00 |
| 217 | CHI05-PH2-FIT-BL-D5,3,3,5,3,5 | CHI05-02-03-ER-1300 | Cable Pulling at Elec. Equipment - COLO2 Cell 3 - ER | Not Started | 20-Feb-25 17:00:00 | 98 | 31-Jan-25 08:00:00 |
| 218 | CHI05-PH2-FIT-BL-D5,3,3,5,3,5 | CHI05-02-03-ER-1310 | Door Frame Installation - COLO2 Cell 3 - ER | Not Started | 16-Jan-25 17:00:00 | 62 | 10-Jan-25 08:00:00 |
| 219 | CHI05-PH2-FIT-BL-D5,3,3,5,3,5 | CHI05-02-03-ER-1320 | Finishes and Signage - COLO2 Cell 3 - ER | Not Started | 24-Feb-25 17:00:00 | 108 | 18-Feb-25 08:00:00 |
| 220 | CHI05-PH2-FIT-BL-D5,3,3,5,3,5 | CHI05-02-03-ER-1275 | Installation of MSB - COLO2 Cell 3 - ER | Not Started | 27-Dec-24 17:00:00 | 89 | 20-Dec-24 08:00:00 |
| 221 | CHI05-PH2-FIT-BL-D5,3,3,5,3,1 | CHI05-02-03-DH-1210 | Termination at PDU & Busway - COLO2 Cell 3 - DH | Not Started | 03-Mar-25 17:00:00 | 42 | 11-Feb-25 08:00:00 |
| 222 | CHI05-PH2-FIT-BL-D5,3,3,5,3,1 | CHI05-02-03-DH-1220 | Overhead MEP and Hangers (Above Ceiling) - COLO2 Cell 3 - DH | Not Started | 25-Nov-24 17:00:00 | 74 | 08-Nov-24 08:00:00 |
| 223 | CHI05-PH2-FIT-BL-D5,3,3,5,3,1 | CHI05-02-03-DH-1230 | HAC install and Rise - COLO2 Cell 3 - DH | Not Started | 24-Jan-25 17:00:00 | 78 | 20-Jan-25 08:00:00 |
| 224 | CHI05-PH2-FIT-BL-D5,3,3,5,3,1 | CHI05-02-03-DH-1240 | Cable Pulling at PDU & Busway- COLO2 Cell 3 - DH | Not Started | 31-Jan-25 17:00:00 | 63 | 20-Jan-25 08:00:00 |
| 225 | CHI05-PH2-FIT-BL-D5,3,3,5,3,1 | CHI05-02-03-DH-1250 | Security Screen Installation - COLO2 Cell 3 - DH | Not Started | 18-Dec-24 17:00:00 | 58 | 16-Dec-24 08:00:00 |
| 226 | CHI05-PH2-FIT-BL-D5,3,3,5,3,1 | CHI05-02-03-DH-1260 | Ceiling Grid and Tile - COLO2 Cell 3 - DH | Not Started | 26-Dec-24 17:00:00 | 58 | 19-Dec-24 08:00:00 |
| 227 | CHI05-PH2-FIT-BL-D5,3,3,5,3,1 | CHI05-02-03-DH-1270 | Install PDU's - COLO2 Cell 3 - DH | Not Started | 17-Jan-25 17:00:00 | 58 | 13-Jan-25 08:00:00 |
| 228 | CHI05-PH2-FIT-BL-D5,3,3,5,3,1 | CHI05-02-03-DH-1280 | Overhead MEP Installation (Below Ceiling) - COLO2 Cell 3 - DH | Not Started | 10-Jan-25 17:00:00 | 58 | 27-Dec-24 08:00:00 |
| 229 | CHI05-PH2-FIT-BL-D5,3,3,5,3,1 | CHI05-02-03-DH-1290 | Install Low Voltage Wiring and Fiber Optic - COLO2 Cell 3 - DH | Not Started | 07-Feb-25 17:00:00 | 78 | 27-Jan-25 08:00:00 |
| 230 | CHI05-PH2-FIT-BL-D5,3,3,5,3,1 | CHI05-02-03-DH-1300 | HAC Placing - COLO2 Cell 3 - DH | Not Started | 17-Jan-25 17:00:00 | 78 | 13-Jan-25 08:00:00 |
| 231 | CHI05-PH2-FIT-BL-D5,3,3,5,3,1 | CHI05-02-03-DH-1310 | Finishes and Signage - COLO2 Cell 3 - DH | Not Started | 03-Mar-25 17:00:00 | 103 | 25-Feb-25 08:00:00 |
| 232 | CHI05-PH2-FIT-BL-D5,3,3,5,3,4,1 | CHI05-02-03-L1-1380 | Interior - L1 UPS - COLO2 Cell 3 | Not Started | 02-Jan-25 17:00:00 | 87 | 02-Jan-25 08:00:00 |
| 233 | CHI05-PH2-FIT-BL-D5,3,3,5,3,4,1 | CHI05-02-03-L1-1390 | Interior - L1 MSB - COLO2 Cell 3 | Not Started | 03-Jan-25 17:00:00 | 93 | 03-Jan-25 08:00:00 |
| 234 | CHI05-PH2-FIT-BL-D5,3,3,5,3,4,1 | CHI05-02-03-L1-1400 | Interior - L1 PDUs - COLO2 Cell 3 | Not Started | 20-Jan-25 17:00:00 | 87 | 20-Jan-25 08:00:00 |
| 235 | CHI05-PH2-FIT-BL-D5,3,3,5,3,4,1 | CHI05-02-03-L1-1410 | Interior - L1 AHUs - COLO2 Cell 3 | Not Started | 22-Jan-25 17:00:00 | 95 | 22-Jan-25 08:00:00 |
| 236 | CHI05-PH2-FIT-BL-D5,3,3,5,3,4,1 | CHI05-02-03-L1-1420 | Interior - L1 ATSs - COLO2 Cell 3 | Not Started | 07-Jan-25 17:00:00 | 101 | 07-Jan-25 08:00:00 |
| 237 | CHI05-PH2-FIT-BL-D5,3,3,5,3,4,1 | CHI05-02-03-L1-1430 | Interior - L1 Busway - COLO2 Cell 3 | Not Started | 21-Jan-25 17:00:00 | 91 | 21-Jan-25 08:00:00 |
| 238 | CHI05-PH2-FIT-BL-D5,3,3,5,3,4,1 | CHI05-02-03-L1-1490 | Interior - L1 ADP - COLO2 Cell 3 | Not Started | 06-Jan-25 17:00:00 | 97 | 06-Jan-25 08:00:00 |
| 239 | CHI05-PH2-FIT-BL-D5,3,3,5,3,4,2 | CHI05-02-03-L2-1500 | Interior - L2 UPS - COLO2 Cell 3 | Not Started | 03-Mar-25 17:00:00 | 52 | 25-Feb-25 08:00:00 |
| 240 | CHI05-PH2-FIT-BL-D5,3,3,5,3,4,2 | CHI05-02-03-L2-1510 | Interior - L2 MSB - COLO2 Cell 3 | Not Started | 10-Mar-25 17:00:00 | 52 | 04-Mar-25 08:00:00 |
| 241 | CHI05-PH2-FIT-BL-D5,3,3,5,3,4,2 | CHI05-02-03-L2-1520 | Interior - L2 PDUs - COLO2 Cell 3 | Not Started | 17-Mar-25 17:00:00 | 52 | 11-Mar-25 08:00:00 |
| 242 | CHI05-PH2-FIT-BL-D5,3,3,5,3,4,2 | CHI05-02-03-L2-1530 | Interior - L2 AHUs - COLO2 Cell 3 | Not Started | 31-Mar-25 17:00:00 | 52 | 25-Mar-25 08:00:00 |
| 243 | CHI05-PH2-FIT-BL-D5,3,3,5,3,4,2 | CHI05-02-03-L2-1540 | Interior - L2 ATSs - COLO2 Cell 3 | Not Started | 24-Mar-25 17:00:00 | 52 | 18-Mar-25 08:00:00 |
| 244 | CHI05-PH2-FIT-BL-D5,3,3,5,3,4,2 | CHI05-02-03-L2-1550 | Interior - L2 Busway - COLO2 Cell 3 | Not Started | 24-Mar-25 17:00:00 | 52 | 18-Mar-25 08:00:00 |
| 245 | CHI05-PH2-FIT-BL-D5,3,3,5,3,4,2 | CHI05-02-03-L2-1610 | Interior - L2 ADP - COLO2 Cell 3 | Not Started | 17-Mar-25 17:00:00 | 52 | 11-Mar-25 08:00:00 |
| 246 | CHI05-PH2-FIT-BL-D5,3,3,5,3,4,3 | CHI05-02-03-L3-1620 | Interior - L3 UPS - COLO2 Cell 3 | Not Started | 31-Mar-25 17:00:00 | 37 | 25-Mar-25 08:00:00 |
| 247 | CHI05-PH2-FIT-BL-D5,3,3,5,3,4,3 | CHI05-02-03-L3-1630 | Interior - L3 MSB - COLO2 Cell 3 | Not Started | 07-Apr-25 17:00:00 | 37 | 01-Apr-25 08:00:00 |
| 248 | CHI05-PH2-FIT-BL-D5,3,3,5,3,4,3 | CHI05-02-03-L3-1640 | Interior - L3 PDUs - COLO2 Cell 3 | Not Started | 14-Apr-25 17:00:00 | 37 | 08-Apr-25 08:00:00 |
| 249 | CHI05-PH2-FIT-BL-D5,3,3,5,3,4,3 | CHI05-02-03-L3-1650 | Interior - L3 AHUs - COLO2 Cell 3 | Not Started | 28-Apr-25 17:00:00 | 37 | 22-Apr-25 08:00:00 |
| 250 | CHI05-PH2-FIT-BL-D5,3,3,5,3,4,3 | CHI05-02-03-L3-1660 | Interior - L3 ATSs - COLO2 Cell 3 | Not Started | 21-Apr-25 17:00:00 | 37 | 15-Apr-25 08:00:00 |
| 251 | CHI05-PH2-FIT-BL-D5,3,3,5,3,4,3 | CHI05-02-03-L3-1670 | Interior - L3 Busway - COLO2 Cell 3 | Not Started | 21-Apr-25 17:00:00 | 37 | 15-Apr-25 08:00:00 |
| 252 | CHI05-PH2-FIT-BL-D5,3,3,5,3,4,3 | CHI05-02-03-L3-1730 | Interior - L3 ADP - COLO2 Cell 3 | Not Started | 14-Apr-25 17:00:00 | 37 | 08-Apr-25 08:00:00 |
| 253 | CHI05-PH2-FIT-BL-D5,3,3,5,2,2 | CHI05-02-04-MG-1330 | Install Dampers and actuators at Louvers - Upper level (RED) - COLO2 Cell 4 - MG | Not Started | 01-Nov-24 17:00:00 | 0 | 28-Oct-24 08:00:00 |
| 254 | CHI05-PH2-FIT-BL-D5,3,3,5,2,2 | CHI05-02-04-MG-1340 | Install Dampers and actuators at Louvers - Lower level (OA) - COLO2 Cell 4 - MG | Not Started | 05-Nov-24 17:00:00 | 0 | 30-Oct-24 08:00:00 |
| 255 | CHI05-PH2-FIT-BL-D5,3,3,5,2,2 | CHI05-02-04-MG-1350 | Overhead MEP Installation - COLO2 Cell 4 - MG | Not Started | 11-Dec-24 17:00:00 | 63 | 27-Nov-24 08:00:00 |
| 256 | CHI05-PH2-FIT-BL-D5,3,3,5,2,2 | CHI05-02-04-MG-1360 | Deliver AHU into Mech. Gallery - COLO2 Cell 4 - MG | Not Started | 13-Dec-24 17:00:00 | 63 | 12-Dec-24 08:00:00 |
| 257 | CHI05-PH2-FIT-BL-D5,3,3,5,2,2 | CHI05-02-04-MG-1370 | Install Walls and Primer Paint - COLO2 Cell 4 - MG | Not Started | 30-Dec-24 17:00:00 | 63 | 16-Dec-24 08:00:00 |
| 258 | CHI05-PH2-FIT-BL-D5,3,3,5,2,2 | CHI05-02-04-MG-1380 | Placing the AHU - COLO2 Cell 4 - MG | Not Started | 10-Jan-25 12:00:00 | 94 | 08-Jan-25 08:00:00 |
| 259 | CHI05-PH2-FIT-BL-D5,3,3,5,2,2 | CHI05-02-04-MG-1390 | Layout Ceiling and install Pencile Rod - COLO2 Cell 4 - MG | Not Started | 31-Dec-24 17:00:00 | 98 | 31-Dec-24 08:00:00 |
| 260 | CHI05-PH2-FIT-BL-D5,3,3,5,2,2 | CHI05-02-04-MG-1400 | Piping and Electrical Termination to AHUs - COLO2 Cell 4 - MG | Not Started | 24-Jan-25 12:00:00 | 94 | 10-Jan-25 13:00:00 |
| 261 | CHI05-PH2-FIT-BL-D5,3,3,5,2,2 | CHI05-02-04-MG-1410 | Pipe Testing - COLO2 Cell 4 - MG | Not Started | 28-Jan-25 12:00:00 | 94 | 24-Jan-25 13:00:00 |
| 262 | CHI05-PH2-FIT-BL-D5,3,3,5,2,2 | CHI05-02-04-MG-1420 | Install ceiling and Light Fittings - COLO2 Cell 4 - MG | Not Started | 07-Feb-25 12:00:00 | 94 | 28-Jan-25 13:00:00 |
| 263 | CHI05-PH2-FIT-BL-D5,3,3,5,2,2 | CHI05-02-04-MG-1430 | Trim out MEP - COLO2 Cell 4 - MG | Not Started | 07-Feb-25 12:00:00 | 94 | 31-Jan-25 13:00:00 |
| 264 | CHI05-PH2-FIT-BL-D5,3,3,5,2,2 | CHI05-02-04-MG-1375 | Post Wall Overhead MEP - COLO2 Cell 4 - MG | Not Started | 21-Jan-25 17:00:00 | 94 | 31-Dec-24 08:00:00 |
| 265 | CHI05-PH2-FIT-BL-D5,3,3,5,2,5 | CHI05-02-04-ER-1330 | Install Walls and Primer Paint - COLO2 Cell 4 - ER | Not Started | 02-Dec-24 17:00:00 | 46 | 18-Nov-24 08:00:00 |
| 266 | CHI05-PH2-FIT-BL-D5,3,3,5,2,5 | CHI05-02-04-ER-1340 | Sprinklers and Overhead MEP (Above Ceiling) - COLO2 Cell 4 - ER | Not Started | 18-Dec-24 17:00:00 | 46 | 05-Dec-24 08:00:00 |
| 267 | CHI05-PH2-FIT-BL-D5,3,3,5,2,5 | CHI05-02-04-ER-1350 | Install Upper Screens - COLO2 Cell 4 - ER | Not Started | 04-Dec-24 17:00:00 | 46 | 27-Nov-24 08:00:00 |
| 268 | CHI05-PH2-FIT-BL-D5,3,3,5,2,5 | CHI05-02-04-ER-1360 | Install Ceiling - COLO2 Cell 4 - ER | Not Started | 23-Dec-24 17:00:00 | 46 | 19-Dec-24 08:00:00 |
| 269 | CHI05-PH2-FIT-BL-D5,3,3,5,2,5 | CHI05-02-04-ER-1370 | Below Ceiling MEP Rough In - COLO2 Cell 4 - ER | Not Started | 16-Jan-25 17:00:00 | 40 | 03-Jan-25 08:00:00 |
| 270 | CHI05-PH2-FIT-BL-D5,3,3,5,2,5 | CHI05-02-04-ER-1380 | Installation of ADP & ATS - COLO2 Cell 4 - ER | Not Started | 13-Jan-25 17:00:00 | 89 | 07-Jan-25 08:00:00 |
| 271 | CHI05-PH2-FIT-BL-D5,3,3,5,2,5 | CHI05-02-04-ER-1390 | Installation of UPS Equipment - COLO2 Cell 4 - ER | Not Started | 23-Jan-25 17:00:00 | 40 | 17-Jan-25 08:00:00 |
| 272 | CHI05-PH2-FIT-BL-D5,3,3,5,2,5 | CHI05-02-04-ER-1400 | Connet to Cable tray and conduit equipment - COLO2 Cell 4 - ER | Not Started | 15-Jan-25 17:00:00 | 124 | 09-Jan-25 08:00:00 |
| 273 | CHI05-PH2-FIT-BL-D5,3,3,5,2,5 | CHI05-02-04-ER-1410 | Cable Pulling at Elec. Equipment - COLO2 Cell 4 - ER | Not Started | 13-Mar-25 17:00:00 | 98 | 21-Feb-25 08:00:00 |
| 274 | CHI05-PH2-FIT-BL-D5,3,3,5,2,5 | CHI05-02-04-ER-1420 | Door Frame Installation - COLO2 Cell 4 - ER | Not Started | 30-Jan-25 17:00:00 | 52 | 24-Jan-25 08:00:00 |
| 275 | CHI05-PH2-FIT-BL-D5,3,3,5,2,5 | CHI05-02-04-ER-1430 | Finishes and Signage - COLO2 Cell 4 - ER | Not Started | 17-Mar-25 17:00:00 | 98 | 11-Mar-25 08:00:00 |
| 276 | CHI05-PH2-FIT-BL-D5,3,3,5,2,5 | CHI05-02-04-ER-1385 | Installation of MSB - COLO2 Cell 4 - ER | Not Started | 13-Jan-25 17:00:00 | 84 | 07-Jan-25 08:00:00 |
| 277 | CHI05-PH2-FIT-BL-D5,3,3,5,2,1 | CHI05-02-04-DH-1320 | Termination at PDU & Busway - COLO2 Cell 4 - DH | Not Started | 24-Mar-25 17:00:00 | 42 | 04-Mar-25 08:00:00 |
| 278 | CHI05-PH2-FIT-BL-D5,3,3,5,2,1 | CHI05-02-04-DH-1330 | Overhead MEP and Hangers (Above Ceiling) - COLO2 Cell 4 - DH | Not Started | 12-Dec-24 17:00:00 | 77 | 26-Nov-24 08:00:00 |
| 279 | CHI05-PH2-FIT-BL-D5,3,3,5,2,1 | CHI05-02-04-DH-1340 | HAC install and Rise - COLO2 Cell 4 - DH | Not Started | 07-Feb-25 17:00:00 | 78 | 03-Feb-25 08:00:00 |
| 280 | CHI05-PH2-FIT-BL-D5,3,3,5,2,1 | CHI05-02-04-DH-1350 | Cable Pulling at PDU & Busway- COLO2 Cell 4 - DH | Not Started | 14-Feb-25 17:00:00 | 68 | 03-Feb-25 08:00:00 |

| entry | activity_code | activity_id | activity_name | activity_status | finish | total_float | start |
| --- | --- | --- | --- | --- | --- | --- | --- |
| 281 | CHI05-PH2-FIT-BL-D5,3,3,5,2,1 | CHI05-02-04-DH-1360 | Security Screen Installation - COLO2 Cell 4 - DH | Not Started | 03-Jan-25 17:00:00 | 63 | 31-Dec-24 08:00:00 |
| 282 | CHI05-PH2-FIT-BL-D5,3,3,5,2,1 | CHI05-02-04-DH-1370 | Ceiling Grid and Tile - COLO2 Cell 4 - DH | Not Started | 10-Jan-25 17:00:00 | 63 | 06-Jan-25 08:00:00 |
| 283 | CHI05-PH2-FIT-BL-D5,3,3,5,2,1 | CHI05-02-04-DH-1380 | Install PDU's - COLO2 Cell 4 - DH | Not Started | 31-Jan-25 17:00:00 | 63 | 27-Jan-25 08:00:00 |
| 284 | CHI05-PH2-FIT-BL-D5,3,3,5,2,1 | CHI05-02-04-DH-1390 | Overhead MEP Installation (Below Ceiling) - COLO2 Cell 4 - DH | Not Started | 24-Jan-25 17:00:00 | 63 | 13-Jan-25 08:00:00 |
| 285 | CHI05-PH2-FIT-BL-D5,3,3,5,2,1 | CHI05-02-04-DH-1400 | Install Low Voltage Wiring and Fiber Optic - COLO2 Cell 4 - DH | Not Started | 21-Feb-25 17:00:00 | 78 | 10-Feb-25 08:00:00 |
| 286 | CHI05-PH2-FIT-BL-D5,3,3,5,2,1 | CHI05-02-04-DH-1410 | HAC Placing - COLO2 Cell 4 - DH | Not Started | 31-Jan-25 17:00:00 | 78 | 27-Jan-25 08:00:00 |
| 287 | CHI05-PH2-FIT-BL-D5,3,3,5,2,1 | CHI05-02-04-DH-1420 | Finishes and Signage - COLO2 Cell 4 - DH | Not Started | 31-Mar-25 17:00:00 | 88 | 25-Mar-25 08:00:00 |
| 288 | CHI05-PH2-FIT-BL-D5,3,3,5,2,4,1 | CHI05-02-04-L1-1500 | Interior - L1 UPS - COLO2 Cell 4 | Not Started | 24-Jan-25 17:00:00 | 71 | 24-Jan-25 08:00:00 |
| 289 | CHI05-PH2-FIT-BL-D5,3,3,5,2,4,1 | CHI05-02-04-L1-1510 | Interior - L1 MSB - COLO2 Cell 4 | Not Started | 27-Jan-25 17:00:00 | 75 | 27-Jan-25 08:00:00 |
| 290 | CHI05-PH2-FIT-BL-D5,3,3,5,2,4,1 | CHI05-02-04-L1-1520 | Interior - L1 PDUs - COLO2 Cell 4 | Not Started | 03-Feb-25 17:00:00 | 77 | 03-Feb-25 08:00:00 |
| 291 | CHI05-PH2-FIT-BL-D5,3,3,5,2,4,1 | CHI05-02-04-L1-1530 | Interior - L1 AHUs - COLO2 Cell 4 | Not Started | 05-Feb-25 17:00:00 | 85 | 05-Feb-25 08:00:00 |
| 292 | CHI05-PH2-FIT-BL-D5,3,3,5,2,4,1 | CHI05-02-04-L1-1540 | Interior - L1 ATSs - COLO2 Cell 4 | Not Started | 29-Jan-25 17:00:00 | 83 | 29-Jan-25 08:00:00 |
| 293 | CHI05-PH2-FIT-BL-D5,3,3,5,2,4,1 | CHI05-02-04-L1-1550 | Interior - L1 Busway - COLO2 Cell 4 | Not Started | 04-Feb-25 17:00:00 | 81 | 04-Feb-25 08:00:00 |
| 294 | CHI05-PH2-FIT-BL-D5,3,3,5,2,4,1 | CHI05-02-04-L1-1610 | Interior - L1 ADP - COLO2 Cell 4 | Not Started | 28-Jan-25 17:00:00 | 79 | 28-Jan-25 08:00:00 |
| 295 | CHI05-PH2-FIT-BL-D5,3,3,5,2,4,2 | CHI05-02-04-L2-1620 | Interior - L2 UPS - COLO2 Cell 4 | Not Started | 03-Mar-25 17:00:00 | 50 | 25-Feb-25 08:00:00 |
| 296 | CHI05-PH2-FIT-BL-D5,3,3,5,2,4,2 | CHI05-02-04-L2-1630 | Interior - L2 MSB - COLO2 Cell 4 | Not Started | 10-Mar-25 17:00:00 | 50 | 04-Mar-25 08:00:00 |
| 297 | CHI05-PH2-FIT-BL-D5,3,3,5,2,4,2 | CHI05-02-04-L2-1640 | Interior - L2 PDUs - COLO2 Cell 4 | Not Started | 31-Mar-25 17:00:00 | 42 | 25-Mar-25 08:00:00 |
| 298 | CHI05-PH2-FIT-BL-D5,3,3,5,2,4,2 | CHI05-02-04-L2-1650 | Interior - L2 AHUs - COLO2 Cell 4 | Not Started | 14-Apr-25 17:00:00 | 42 | 08-Apr-25 08:00:00 |
| 299 | CHI05-PH2-FIT-BL-D5,3,3,5,2,4,2 | CHI05-02-04-L2-1660 | Interior - L2 ATSs - COLO2 Cell 4 | Not Started | 24-Mar-25 17:00:00 | 50 | 18-Mar-25 08:00:00 |
| 300 | CHI05-PH2-FIT-BL-D5,3,3,5,2,4,2 | CHI05-02-04-L2-1670 | Interior - L2 Busway - COLO2 Cell 4 | Not Started | 07-Apr-25 17:00:00 | 42 | 01-Apr-25 08:00:00 |
| 301 | CHI05-PH2-FIT-BL-D5,3,3,5,2,4,2 | CHI05-02-04-L2-1730 | Interior - L2 ADP - COLO2 Cell 4 | Not Started | 17-Mar-25 17:00:00 | 50 | 11-Mar-25 08:00:00 |
| 302 | CHI05-PH2-FIT-BL-D5,3,3,5,2,4,3 | CHI05-02-04-L3-1740 | Interior - L3 UPS - COLO2 Cell 4 | Not Started | 31-Mar-25 17:00:00 | 35 | 25-Mar-25 08:00:00 |
| 303 | CHI05-PH2-FIT-BL-D5,3,3,5,2,4,3 | CHI05-02-04-L3-1750 | Interior - L3 MSB - COLO2 Cell 4 | Not Started | 07-Apr-25 17:00:00 | 35 | 01-Apr-25 08:00:00 |
| 304 | CHI05-PH2-FIT-BL-D5,3,3,5,2,4,3 | CHI05-02-04-L3-1760 | Interior - L3 PDUs - COLO2 Cell 4 | Not Started | 14-Apr-25 17:00:00 | 40 | 08-Apr-25 08:00:00 |
| 305 | CHI05-PH2-FIT-BL-D5,3,3,5,2,4,3 | CHI05-02-04-L3-1770 | Interior - L3 AHUs - COLO2 Cell 4 | Not Started | 30-Apr-25 17:00:00 | 35 | 24-Apr-25 08:00:00 |
| 306 | CHI05-PH2-FIT-BL-D5,3,3,5,2,4,3 | CHI05-02-04-L3-1780 | Interior - L3 ATSs - COLO2 Cell 4 | Not Started | 21-Apr-25 17:00:00 | 35 | 15-Apr-25 08:00:00 |
| 307 | CHI05-PH2-FIT-BL-D5,3,3,5,2,4,3 | CHI05-02-04-L3-1790 | Interior - L3 Busway - COLO2 Cell 4 | Not Started | 28-Apr-25 17:00:00 | 35 | 22-Apr-25 08:00:00 |
| 308 | CHI05-PH2-FIT-BL-D5,3,3,5,2,4,3 | CHI05-02-04-L3-1850 | Interior - L3 ADP - COLO2 Cell 4 | Not Started | 14-Apr-25 17:00:00 | 35 | 08-Apr-25 08:00:00 |
| 309 | CHI05-PH2-FIT-BL-D5,3,3,4,1 | CHI05-YARD-2000 | Set the Generator - Colo 2 - North | Not Started | 28-Oct-24 17:00:00 | 65 | 22-Oct-24 08:00:00 |
| 310 | CHI05-PH2-FIT-BL-D5,3,3,4,1 | CHI05-YARD-2040 | Install MEP raceway conduit and piping - Colo 2 - North | Not Started | 30-Oct-24 17:00:00 | 116 | 10-Oct-24 08:00:00 |
| 311 | CHI05-PH2-FIT-BL-D5,3,3,4,1 | CHI05-YARD-2140 | Wire pulling and termination for MSB - Colo 2 - North | Not Started | 17-Dec-24 17:00:00 | 98 | 26-Nov-24 08:00:00 |
| 312 | CHI05-PH2-FIT-BL-D5,3,3,4,1 | CHI05-YARD-2360 | Install screen wall - Colo 2 - North | Not Started | 16-Jan-25 17:00:00 | 140 | 18-Dec-24 08:00:00 |
| 313 | CHI05-PH2-FIT-BL-D5,3,3,4,1 | CHI05-YARD-2030 | Install Generator - Colo 2 - North | Not Started | 25-Nov-24 17:00:00 | 82 | 19-Nov-24 08:00:00 |
| 314 | CHI05-PH2-FIT-BL-D5,3,3,4,1 | CHI05-YARD-2210 | Installation of Mech. Piping and testing - Colo 2 - North | Not Started | 17-Dec-24 17:00:00 | 140 | 26-Nov-24 08:00:00 |
| 315 | CHI05-PH2-FIT-BL-D5,3,3,4,1 | CHI05-YARD-2560 | Set the MV Gear - Colo 2 - North | Not Started | 30-Oct-24 17:00:00 | 63 | 24-Oct-24 08:00:00 |
| 316 | CHI05-PH2-FIT-BL-D5,3,3,4,1 | CHI05-YARD-2570 | Install MV Gear - Colo 2 - North | Not Started | 06-Nov-24 17:00:00 | 90 | 31-Oct-24 08:00:00 |
| 317 | CHI05-PH2-FIT-BL-D5,3,3,4,2 | CHI05-YARD-2120 | Set the Generator - Colo 2 - South | Not Started | 07-Oct-24 17:00:00 | 65 | 01-Oct-24 08:00:00 |
| 318 | CHI05-PH2-FIT-BL-D5,3,3,4,2 | CHI05-YARD-2300 | Install MEP raceway conduit and piping - Colo 2 - South | Not Started | 09-Oct-24 17:00:00 | 131 | 19-Sep-24 08:00:00 |
| 319 | CHI05-PH2-FIT-BL-D5,3,3,4,2 | CHI05-YARD-2350 | Wire pulling and termination for MSB - Colo 2 - South | Not Started | 17-Dec-24 17:00:00 | 98 | 26-Nov-24 08:00:00 |
| 320 | CHI05-PH2-FIT-BL-D5,3,3,4,2 | CHI05-YARD-2450 | Install screen wall - Colo 2 - South | Not Started | 06-Feb-25 17:00:00 | 125 | 10-Jan-25 08:00:00 |
| 321 | CHI05-PH2-FIT-BL-D5,3,3,4,2 | CHI05-YARD-2130 | Install Generator - Colo 2 - South | Not Started | 25-Nov-24 17:00:00 | 82 | 19-Nov-24 08:00:00 |
| 322 | CHI05-PH2-FIT-BL-D5,3,3,4,2 | CHI05-YARD-2390 | Installation of Mech. Piping and testing - Colo 2 - South | Not Started | 09-Jan-25 17:00:00 | 125 | 18-Dec-24 08:00:00 |
| 323 | CHI05-PH2-FIT-BL-D5,3,3,4,2 | CHI05-YARD-2500 | Set the MV Gear - Colo 2 - South | Not Started | 09-Oct-24 17:00:00 | 63 | 03-Oct-24 08:00:00 |
| 324 | CHI05-PH2-FIT-BL-D5,3,3,4,2 | CHI05-YARD-2510 | Install MV Gear - Colo 2 - South | Not Started | 16-Oct-24 17:00:00 | 105 | 10-Oct-24 08:00:00 |
| 325 | CHI05-PH2-FIT-BL-D5,3,3,4,4 | CHI05-YARD-2010 | Set the MV Gear - Colo 5 - West | Not Started | 20-Nov-24 17:00:00 | 63 | 14-Nov-24 08:00:00 |
| 326 | CHI05-PH2-FIT-BL-D5,3,3,4,4 | CHI05-YARD-2050 | Install MEP raceway conduit and piping - Colo 5 - West | Not Started | 20-Nov-24 17:00:00 | 68 | 31-Oct-24 08:00:00 |
| 327 | CHI05-PH2-FIT-BL-D5,3,3,4,4 | CHI05-YARD-2150 | Wire pulling and termination for MSB - Colo 5 - West | Not Started | 08-Jan-25 17:00:00 | 51 | 17-Dec-24 08:00:00 |
| 328 | CHI05-PH2-FIT-BL-D5,3,3,4,4 | CHI05-YARD-2250 | Install screen wall - Colo 5 - West | Not Started | 05-Feb-25 17:00:00 | 126 | 09-Jan-25 08:00:00 |
| 329 | CHI05-PH2-FIT-BL-D5,3,3,4,4 | CHI05-YARD-2020 | Install MV Gear - Colo 5 - West | Not Started | 27-Nov-24 17:00:00 | 63 | 21-Nov-24 08:00:00 |
| 330 | CHI05-PH2-FIT-BL-D5,3,3,4,4 | CHI05-YARD-2200 | Installation of Mech. Piping and testing - Colo 5 - West | Not Started | 08-Jan-25 17:00:00 | 126 | 17-Dec-24 08:00:00 |
| 331 | CHI05-PH2-FIT-BL-D5,3,3,4,4 | CHI05-YARD-2620 | Set the Generator - Colo 5 - West | Not Started | 18-Nov-24 17:00:00 | 65 | 12-Nov-24 08:00:00 |
| 332 | CHI05-PH2-FIT-BL-D5,3,3,4,4 | CHI05-YARD-2630 | Install Generator - Colo 5 - West | Not Started | 16-Dec-24 17:00:00 | 51 | 10-Dec-24 08:00:00 |
| 333 | CHI05-PH2-FIT-BL-D5,3,3,4,5 | CHI05-YARD-2060 | Set the Generator - Colo 3 - North | Not Started | 04-Nov-24 17:00:00 | 65 | 29-Oct-24 08:00:00 |
| 334 | CHI05-PH2-FIT-BL-D5,3,3,4,5 | CHI05-YARD-2160 | Install MEP raceway conduit and piping - Colo 3 - North | Not Started | 06-Nov-24 17:00:00 | 111 | 17-Oct-24 08:00:00 |
| 335 | CHI05-PH2-FIT-BL-D5,3,3,4,5 | CHI05-YARD-2260 | Wire pulling and termination for MSB - Colo 3 - North | Not Started | 23-Dec-24 17:00:00 | 94 | 03-Dec-24 08:00:00 |
| 336 | CHI05-PH2-FIT-BL-D5,3,3,4,5 | CHI05-YARD-2400 | Install screen wall - Colo 3 - North | Not Started | 22-Jan-25 17:00:00 | 136 | 24-Dec-24 08:00:00 |
| 337 | CHI05-PH2-FIT-BL-D5,3,3,4,5 | CHI05-YARD-2090 | Install Generator - Colo 3 - North | Not Started | 02-Dec-24 17:00:00 | 71 | 25-Nov-24 08:00:00 |
| 338 | CHI05-PH2-FIT-BL-D5,3,3,4,5 | CHI05-YARD-2290 | Installation of Mech. Piping and testing - Colo 3 - North | Not Started | 23-Dec-24 17:00:00 | 136 | 03-Dec-24 08:00:00 |
| 339 | CHI05-PH2-FIT-BL-D5,3,3,4,5 | CHI05-YARD-2580 | Set the MV Gear - Colo 3 - North | Not Started | 06-Nov-24 17:00:00 | 63 | 31-Oct-24 08:00:00 |
| 340 | CHI05-PH2-FIT-BL-D5,3,3,4,5 | CHI05-YARD-2590 | Install MV Gear - Colo 3 - North | Not Started | 13-Nov-24 17:00:00 | 78 | 07-Nov-24 08:00:00 |
| 341 | CHI05-PH2-FIT-BL-D5,3,3,4,6 | CHI05-YARD-2100 | Set the MV Gear - Colo 4 - North | Not Started | 13-Nov-24 17:00:00 | 63 | 07-Nov-24 08:00:00 |
| 342 | CHI05-PH2-FIT-BL-D5,3,3,4,6 | CHI05-YARD-2240 | Install MEP raceway conduit and piping - Colo 4 - North | Not Started | 13-Nov-24 17:00:00 | 69 | 24-Oct-24 08:00:00 |
| 343 | CHI05-PH2-FIT-BL-D5,3,3,4,6 | CHI05-YARD-2310 | Wire pulling and termination for MSB - Colo 4 - North | Not Started | 08-Jan-25 17:00:00 | 47 | 17-Dec-24 08:00:00 |
| 344 | CHI05-PH2-FIT-BL-D5,3,3,4,6 | CHI05-YARD-2430 | Install screen wall - Colo 4 - North | Not Started | 05-Feb-25 17:00:00 | 126 | 09-Jan-25 08:00:00 |
| 345 | CHI05-PH2-FIT-BL-D5,3,3,4,6 | CHI05-YARD-2110 | Install MV Gear - Colo 4 - North | Not Started | 20-Nov-24 17:00:00 | 64 | 14-Nov-24 08:00:00 |
| 346 | CHI05-PH2-FIT-BL-D5,3,3,4,6 | CHI05-YARD-2330 | Installation of Mech. Piping and testing - Colo 4 - North | Not Started | 08-Jan-25 17:00:00 | 126 | 17-Dec-24 08:00:00 |
| 347 | CHI05-PH2-FIT-BL-D5,3,3,4,6 | CHI05-YARD-2600 | Set the Generator - Colo 4 - North | Not Started | 11-Nov-24 17:00:00 | 65 | 05-Nov-24 08:00:00 |
| 348 | CHI05-PH2-FIT-BL-D5,3,3,4,6 | CHI05-YARD-2610 | Install Generator - Colo 4 - North | Not Started | 16-Dec-24 17:00:00 | 47 | 10-Dec-24 08:00:00 |
| 349 | CHI05-PH2-FIT-BL-D5,3,3,4,7 | CHI05-YARD-2170 | Set the MV Gear - Colo 3 - South | Not Started | 16-Oct-24 17:00:00 | 63 | 10-Oct-24 08:00:00 |
| 350 | CHI05-PH2-FIT-BL-D5,3,3,4,7 | CHI05-YARD-2340 | Install MEP raceway conduit and piping - Colo 3 - South | Not Started | 16-Oct-24 17:00:00 | 126 | 26-Sep-24 08:00:00 |

| entry | activity_code | activity_id | activity_name | activity_status | finish | total_float | start |
| --- | --- | --- | --- | --- | --- | --- | --- |
| 351 | CHI05-PH2-FIT-BL-D5,3,3,4,7 | CHI05-YARD-2380 | Wire pulling and termination for MSB - Colo 3 - South | Not Started | 23-Dec-24 17:00:00 | 94 | 03-Dec-24 08:00:00 |
| 352 | CHI05-PH2-FIT-BL-D5,3,3,4,7 | CHI05-YARD-2460 | Install screen wall - Colo 3 - South | Not Started | 22-Jan-25 17:00:00 | 136 | 24-Dec-24 08:00:00 |
| 353 | CHI05-PH2-FIT-BL-D5,3,3,4,7 | CHI05-YARD-2190 | Install MV Gear - Colo 3 - South | Not Started | 23-Oct-24 17:00:00 | 93 | 17-Oct-24 08:00:00 |
| 354 | CHI05-PH2-FIT-BL-D5,3,3,4,7 | CHI05-YARD-2410 | Installation of Mech. Piping and testing - Colo 3 - South | Not Started | 23-Dec-24 17:00:00 | 136 | 03-Dec-24 08:00:00 |
| 355 | CHI05-PH2-FIT-BL-D5,3,3,4,7 | CHI05-YARD-2520 | Set the Generator - Colo 3 - South | Not Started | 14-Oct-24 17:00:00 | 65 | 08-Oct-24 08:00:00 |
| 356 | CHI05-PH2-FIT-BL-D5,3,3,4,7 | CHI05-YARD-2530 | Install Generator - Colo 3 - South | Not Started | 02-Dec-24 17:00:00 | 71 | 25-Nov-24 08:00:00 |
| 357 | CHI05-PH2-FIT-BL-D5,3,3,4,8 | CHI05-YARD-2220 | Set the MV Gear - Colo 4 - South | Not Started | 23-Oct-24 17:00:00 | 63 | 17-Oct-24 08:00:00 |
| 358 | CHI05-PH2-FIT-BL-D5,3,3,4,8 | CHI05-YARD-2370 | Install MEP raceway conduit and piping - Colo 4 - South | Not Started | 23-Oct-24 17:00:00 | 84 | 03-Oct-24 08:00:00 |
| 359 | CHI05-PH2-FIT-BL-D5,3,3,4,8 | CHI05-YARD-2420 | Wire pulling and termination for MSB - Colo 4 - South | Not Started | 08-Jan-25 17:00:00 | 47 | 17-Dec-24 08:00:00 |
| 360 | CHI05-PH2-FIT-BL-D5,3,3,4,8 | CHI05-YARD-2470 | Install screen wall - Colo 4 - South | Not Started | 05-Feb-25 17:00:00 | 126 | 09-Jan-25 08:00:00 |
| 361 | CHI05-PH2-FIT-BL-D5,3,3,4,8 | CHI05-YARD-2230 | Install MV Gear - Colo 4 - South | Not Started | 30-Oct-24 17:00:00 | 79 | 24-Oct-24 08:00:00 |
| 362 | CHI05-PH2-FIT-BL-D5,3,3,4,8 | CHI05-YARD-2440 | Installation of Mech. Piping and testing - Colo 4 - South | Not Started | 08-Jan-25 17:00:00 | 126 | 17-Dec-24 08:00:00 |
| 363 | CHI05-PH2-FIT-BL-D5,3,3,4,8 | CHI05-YARD-2540 | Set the Generator - Colo 4 - South | Not Started | 21-Oct-24 17:00:00 | 65 | 15-Oct-24 08:00:00 |
| 364 | CHI05-PH2-FIT-BL-D5,3,3,4,8 | CHI05-YARD-2550 | Install Generator - Colo 4 - South | Not Started | 16-Dec-24 17:00:00 | 47 | 10-Dec-24 08:00:00 |
| 365 | CHI05-PH2-FIT-BL-D5,3,3,4,9 | CHI05-YARD-2070 | Set the MV Gear - Colo 5 - East | Not Started | 30-Sep-24 17:00:00 | 65 | 24-Sep-24 08:00:00 |
| 366 | CHI05-PH2-FIT-BL-D5,3,3,4,9 | CHI05-YARD-2180 | Install MEP raceway conduit and piping - Colo 5 - East | Not Started | 30-Sep-24 17:00:00 | 105 | 10-Sep-24 08:00:00 |
| 367 | CHI05-PH2-FIT-BL-D5,3,3,4,9 | CHI05-YARD-2270 | Wire pulling and termination for MSB - Colo 5 - East | Not Started | 08-Jan-25 17:00:00 | 51 | 17-Dec-24 08:00:00 |
| 368 | CHI05-PH2-FIT-BL-D5,3,3,4,9 | CHI05-YARD-2320 | Install screen wall - Colo 5 - East | Not Started | 05-Feb-25 17:00:00 | 126 | 09-Jan-25 08:00:00 |
| 369 | CHI05-PH2-FIT-BL-D5,3,3,4,9 | CHI05-YARD-2080 | Install MV Gear - Colo 5 - East | Not Started | 15-Oct-24 17:00:00 | 94 | 09-Oct-24 08:00:00 |
| 370 | CHI05-PH2-FIT-BL-D5,3,3,4,9 | CHI05-YARD-2280 | Installation of Mech. Piping and testing - Colo 5 - Eest | Not Started | 08-Jan-25 17:00:00 | 126 | 17-Dec-24 08:00:00 |
| 371 | CHI05-PH2-FIT-BL-D5,3,3,4,9 | CHI05-YARD-2480 | Set the Generator - Colo 5 - East | Not Started | 26-Sep-24 17:00:00 | 67 | 20-Sep-24 08:00:00 |
| 372 | CHI05-PH2-FIT-BL-D5,3,3,4,9 | CHI05-YARD-2490 | Install Generator - Colo 5 - East | Not Started | 16-Dec-24 17:00:00 | 51 | 10-Dec-24 08:00:00 |
| 373 | CHI05-PH2-FIT-BL-D5,3,3,1,6,2 | CHI05-03-01-MG-1110 | Install Dampers and actuators at Louvers - Upper level (RED) - COLO3 Cell 1 - MG | Not Started | 12-Nov-24 17:00:00 | 0 | 06-Nov-24 08:00:00 |
| 374 | CHI05-PH2-FIT-BL-D5,3,3,1,6,2 | CHI05-03-01-MG-1120 | Install Dampers and actuators at Louvers - Lower level (OA) - COLO3 Cell 1 - MG | Not Started | 14-Nov-24 17:00:00 | 17 | 08-Nov-24 08:00:00 |
| 375 | CHI05-PH2-FIT-BL-D5,3,3,1,6,2 | CHI05-03-01-MG-1130 | Overhead MEP Installation - COLO3 Cell 1 - MG | Not Started | 29-Nov-24 17:00:00 | 17 | 15-Nov-24 08:00:00 |
| 376 | CHI05-PH2-FIT-BL-D5,3,3,1,6,2 | CHI05-03-01-MG-1140 | Deliver AHU into Mech. Gallery - COLO3 Cell 1 - MG | Not Started | 03-Dec-24 17:00:00 | 17 | 02-Dec-24 08:00:00 |
| 377 | CHI05-PH2-FIT-BL-D5,3,3,1,6,2 | CHI05-03-01-MG-1150 | Install Walls and Primer Paint - COLO3 Cell 1 - MG | Not Started | 17-Dec-24 17:00:00 | 17 | 04-Dec-24 08:00:00 |
| 378 | CHI05-PH2-FIT-BL-D5,3,3,1,6,2 | CHI05-03-01-MG-1160 | Placing the AHU - COLO3 Cell 1 - MG | Not Started | 30-Dec-24 12:00:00 | 72 | 26-Dec-24 08:00:00 |
| 379 | CHI05-PH2-FIT-BL-D5,3,3,1,6,2 | CHI05-03-01-MG-1170 | Layout Ceiling and install Pencile Rod - COLO3 Cell 1 - MG | Not Started | 18-Dec-24 17:00:00 | 76 | 18-Dec-24 08:00:00 |
| 380 | CHI05-PH2-FIT-BL-D5,3,3,1,6,2 | CHI05-03-01-MG-1180 | Piping and Electrical Termination to AHUs - COLO3 Cell 1 - MG | Not Started | 14-Jan-25 12:00:00 | 72 | 30-Dec-24 13:00:00 |
| 381 | CHI05-PH2-FIT-BL-D5,3,3,1,6,2 | CHI05-03-01-MG-1190 | Pipe Testing - COLO3 Cell 1 - MG | Not Started | 16-Jan-25 12:00:00 | 78 | 14-Jan-25 13:00:00 |
| 382 | CHI05-PH2-FIT-BL-D5,3,3,1,6,2 | CHI05-03-01-MG-1200 | Install ceiling and Light Fittings - COLO3 Cell 1 - MG | Not Started | 28-Jan-25 12:00:00 | 78 | 16-Jan-25 13:00:00 |
| 383 | CHI05-PH2-FIT-BL-D5,3,3,1,6,2 | CHI05-03-01-MG-1210 | Trim out MEP - COLO3 Cell 1 - MG | Not Started | 28-Jan-25 12:00:00 | 87 | 21-Jan-25 13:00:00 |
| 384 | CHI05-PH2-FIT-BL-D5,3,3,1,6,2 | CHI05-03-01-MG-1155 | Post Wall Overhead MEP - COLO3 Cell 1 - MG | Not Started | 09-Jan-25 17:00:00 | 72 | 18-Dec-24 08:00:00 |
| 385 | CHI05-PH2-FIT-BL-D5,3,3,1,6,5 | CHI05-03-01-ER-1110 | Install Walls and Primer Paint - COLO3 Cell 1 - ER | Not Started | 19-Nov-24 17:00:00 | 0 | 06-Nov-24 08:00:00 |
| 386 | CHI05-PH2-FIT-BL-D5,3,3,1,6,5 | CHI05-03-01-ER-1120 | Sprinklers and Overhead MEP (Above Ceiling) - COLO3 Cell 1 - ER | Not Started | 06-Dec-24 17:00:00 | 29 | 22-Nov-24 08:00:00 |
| 387 | CHI05-PH2-FIT-BL-D5,3,3,1,6,5 | CHI05-03-01-ER-1130 | Install Upper Screens - COLO3 Cell 1 - ER | Not Started | 21-Nov-24 17:00:00 | 29 | 15-Nov-24 08:00:00 |
| 388 | CHI05-PH2-FIT-BL-D5,3,3,1,6,5 | CHI05-03-01-ER-1140 | Install Ceiling - COLO3 Cell 1 - ER | Not Started | 11-Dec-24 17:00:00 | 29 | 09-Dec-24 08:00:00 |
| 389 | CHI05-PH2-FIT-BL-D5,3,3,1,6,5 | CHI05-03-01-ER-1150 | Below Ceiling MEP Rough In - COLO3 Cell 1 - ER | Not Started | 30-Dec-24 17:00:00 | 27 | 16-Dec-24 08:00:00 |
| 390 | CHI05-PH2-FIT-BL-D5,3,3,1,6,5 | CHI05-03-01-ER-1160 | Installation of ADP & ATS - COLO3 Cell 1 - ER | Not Started | 08-Jan-25 17:00:00 | 78 | 02-Jan-25 08:00:00 |
| 391 | CHI05-PH2-FIT-BL-D5,3,3,1,6,5 | CHI05-03-01-ER-1170 | Installation of UPS Equipment - COLO3 Cell 1 - ER | Not Started | 30-Jan-25 17:00:00 | 40 | 24-Jan-25 08:00:00 |
| 392 | CHI05-PH2-FIT-BL-D5,3,3,1,6,5 | CHI05-03-01-ER-1180 | Connet to Cable tray and conduit equipment - COLO3 Cell 1 - ER | Not Started | 10-Jan-25 17:00:00 | 82 | 06-Jan-25 08:00:00 |
| 393 | CHI05-PH2-FIT-BL-D5,3,3,1,6,5 | CHI05-03-01-ER-1190 | Cable Pulling at Elec. Equipment - COLO3 Cell 1 - ER | Not Started | 31-Jan-25 17:00:00 | 82 | 13-Jan-25 08:00:00 |
| 394 | CHI05-PH2-FIT-BL-D5,3,3,1,6,5 | CHI05-03-01-ER-1200 | Door Frame Installation - COLO3 Cell 1 - ER | Not Started | 06-Feb-25 17:00:00 | 40 | 31-Jan-25 08:00:00 |
| 395 | CHI05-PH2-FIT-BL-D5,3,3,1,6,5 | CHI05-03-01-ER-1210 | Finishes and Signage - COLO3 Cell 1 - ER | Not Started | 13-Feb-25 17:00:00 | 105 | 07-Feb-25 08:00:00 |
| 396 | CHI05-PH2-FIT-BL-D5,3,3,1,6,5 | CHI05-03-01-ER-1155 | Installation of MSB - COLO3 Cell 1 - ER | Not Started | 24-Dec-24 17:00:00 | 77 | 18-Dec-24 08:00:00 |
| 397 | CHI05-PH2-FIT-BL-D5,3,3,1,6,1 | CHI05-03-01-DH-1100 | Cable Pulling at PDU & Busway - COLO3 Cell 1 - DH | Not Started | 11-Feb-25 17:00:00 | 17 | 22-Jan-25 08:00:00 |
| 398 | CHI05-PH2-FIT-BL-D5,3,3,1,6,1 | CHI05-03-01-DH-1110 | Overhead MEP and Hangers (Above Ceiling) - COLO3 Cell 1 - DH | Not Started | 21-Nov-24 17:00:00 | 37 | 06-Nov-24 08:00:00 |
| 399 | CHI05-PH2-FIT-BL-D5,3,3,1,6,1 | CHI05-03-01-DH-1120 | HAC install and Rise - COLO3 Cell 1 - DH | Not Started | 28-Jan-25 17:00:00 | 56 | 22-Jan-25 08:00:00 |
| 400 | CHI05-PH2-FIT-BL-D5,3,3,1,6,1 | CHI05-03-01-DH-1130 | Termination at PDU & Busway- COLO3 Cell 1 - DH | Not Started | 04-Feb-25 17:00:00 | 22 | 22-Jan-25 08:00:00 |
| 401 | CHI05-PH2-FIT-BL-D5,3,3,1,6,1 | CHI05-03-01-DH-1140 | Security Screen Installation - COLO3 Cell 1 - DH | Not Started | 20-Dec-24 17:00:00 | 17 | 18-Dec-24 08:00:00 |
| 402 | CHI05-PH2-FIT-BL-D5,3,3,1,6,1 | CHI05-03-01-DH-1150 | Ceiling Grid and Tile - COLO3 Cell 1 - DH | Not Started | 30-Dec-24 17:00:00 | 17 | 23-Dec-24 08:00:00 |
| 403 | CHI05-PH2-FIT-BL-D5,3,3,1,6,1 | CHI05-03-01-DH-1160 | Install PDU's - COLO3 Cell 1 - DH | Not Started | 21-Jan-25 17:00:00 | 17 | 15-Jan-25 08:00:00 |
| 404 | CHI05-PH2-FIT-BL-D5,3,3,1,6,1 | CHI05-03-01-DH-1170 | Overhead MEP Installation (Below Ceiling) - COLO3 Cell 1 - DH | Not Started | 14-Jan-25 17:00:00 | 17 | 31-Dec-24 08:00:00 |
| 405 | CHI05-PH2-FIT-BL-D5,3,3,1,6,1 | CHI05-03-01-DH-1180 | Install Low Voltage Wiring and Fiber Optic - COLO3 Cell 1 - DH | Not Started | 11-Feb-25 17:00:00 | 56 | 29-Jan-25 08:00:00 |
| 406 | CHI05-PH2-FIT-BL-D5,3,3,1,6,1 | CHI05-03-01-DH-1190 | HAC Placing - COLO3 Cell 1 - DH | Not Started | 21-Jan-25 17:00:00 | 56 | 15-Jan-25 08:00:00 |
| 407 | CHI05-PH2-FIT-BL-D5,3,3,1,6,1 | CHI05-03-01-DH-1200 | Finishes and Signage - COLO3 Cell 1 - DH | Not Started | 18-Feb-25 17:00:00 | 102 | 12-Feb-25 08:00:00 |
| 408 | CHI05-PH2-FIT-BL-D5,3,3,1,6,4,1 | CHI05-03-01-L1-1260 | Interior - L1 UPS - COLO3 Cell 1 | Not Started | 31-Jan-25 17:00:00 | 58 | 31-Jan-25 08:00:00 |
| 409 | CHI05-PH2-FIT-BL-D5,3,3,1,6,4,1 | CHI05-03-01-L1-1270 | Interior - L1 MSB - COLO3 Cell 1 | Not Started | 03-Feb-25 17:00:00 | 70 | 03-Feb-25 08:00:00 |
| 410 | CHI05-PH2-FIT-BL-D5,3,3,1,6,4,1 | CHI05-03-01-L1-1280 | Interior - L1 PDUs - COLO3 Cell 1 | Not Started | 04-Feb-25 17:00:00 | 74 | 04-Feb-25 08:00:00 |
| 411 | CHI05-PH2-FIT-BL-D5,3,3,1,6,4,1 | CHI05-03-01-L1-1290 | Interior - L1 AHUs - COLO3 Cell 1 | Not Started | 06-Feb-25 17:00:00 | 87 | 06-Feb-25 08:00:00 |
| 412 | CHI05-PH2-FIT-BL-D5,3,3,1,6,4,1 | CHI05-03-01-L1-1300 | Interior - L1 ATSs - COLO3 Cell 1 | Not Started | 05-Feb-25 17:00:00 | 83 | 05-Feb-25 08:00:00 |
| 413 | CHI05-PH2-FIT-BL-D5,3,3,1,6,4,1 | CHI05-03-01-L1-1310 | Interior - L1 Busway - COLO3 Cell 1 | Not Started | 05-Feb-25 17:00:00 | 83 | 05-Feb-25 08:00:00 |
| 414 | CHI05-PH2-FIT-BL-D5,3,3,1,6,4,1 | CHI05-03-01-L1-1370 | Interior - L1 ADP - COLO3 Cell 1 | Not Started | 04-Feb-25 17:00:00 | 79 | 04-Feb-25 08:00:00 |
| 415 | CHI05-PH2-FIT-BL-D5,3,3,1,6,4,2 | CHI05-03-01-L2-1380 | Interior - L2 UPS - COLO3 Cell 1 | Not Started | 03-Mar-25 17:00:00 | 50 | 25-Feb-25 08:00:00 |
| 416 | CHI05-PH2-FIT-BL-D5,3,3,1,6,4,2 | CHI05-03-01-L2-1390 | Interior - L2 MSB - COLO3 Cell 1 | Not Started | 10-Mar-25 17:00:00 | 50 | 04-Mar-25 08:00:00 |
| 417 | CHI05-PH2-FIT-BL-D5,3,3,1,6,4,2 | CHI05-03-01-L2-1400 | Interior - L2 PDUs - COLO3 Cell 1 | Not Started | 17-Mar-25 17:00:00 | 50 | 11-Mar-25 08:00:00 |
| 418 | CHI05-PH2-FIT-BL-D5,3,3,1,6,4,2 | CHI05-03-01-L2-1410 | Interior - L2 AHUs - COLO3 Cell 1 | Not Started | 31-Mar-25 17:00:00 | 55 | 25-Mar-25 08:00:00 |
| 419 | CHI05-PH2-FIT-BL-D5,3,3,1,6,4,2 | CHI05-03-01-L2-1420 | Interior - L2 ATSs - COLO3 Cell 1 | Not Started | 24-Mar-25 17:00:00 | 55 | 18-Mar-25 08:00:00 |
| 420 | CHI05-PH2-FIT-BL-D5,3,3,1,6,4,2 | CHI05-03-01-L2-1430 | Interior - L2 Busway - COLO3 Cell 1 | Not Started | 24-Mar-25 17:00:00 | 55 | 18-Mar-25 08:00:00 |

| entry | activity_code | activity_id | activity_name | activity_status | finish | total_float | start |
| --- | --- | --- | --- | --- | --- | --- | --- |
| 421 | CHI05-PH2-FIT-BL-D5,3,3,1,6,4,2 | CHI05-03-01-L2-1490 | Interior - L2 ADP - COLO3 Cell 1 | Not Started | 17-Mar-25 17:00:00 | 55 | 11-Mar-25 08:00:00 |
| 422 | CHI05-PH2-FIT-BL-D5,3,3,1,6,4,3 | CHI05-03-01-L3-1500 | Interior - L3 UPS - COLO3 Cell 1 | Not Started | 01-Apr-25 17:00:00 | 34 | 26-Mar-25 08:00:00 |
| 423 | CHI05-PH2-FIT-BL-D5,3,3,1,6,4,3 | CHI05-03-01-L3-1510 | Interior - L3 MSB - COLO3 Cell 1 | Not Started | 08-Apr-25 17:00:00 | 34 | 02-Apr-25 08:00:00 |
| 424 | CHI05-PH2-FIT-BL-D5,3,3,1,6,4,3 | CHI05-03-01-L3-1520 | Interior - L3 PDUs - COLO3 Cell 1 | Not Started | 15-Apr-25 17:00:00 | 34 | 09-Apr-25 08:00:00 |
| 425 | CHI05-PH2-FIT-BL-D5,3,3,1,6,4,3 | CHI05-03-01-L3-1530 | Interior - L3 AHUs - COLO3 Cell 1 | Not Started | 06-May-25 17:00:00 | 34 | 30-Apr-25 08:00:00 |
| 426 | CHI05-PH2-FIT-BL-D5,3,3,1,6,4,3 | CHI05-03-01-L3-1540 | Interior - L3 ATSs - COLO3 Cell 1 | Not Started | 29-Apr-25 17:00:00 | 34 | 23-Apr-25 08:00:00 |
| 427 | CHI05-PH2-FIT-BL-D5,3,3,1,6,4,3 | CHI05-03-01-L3-1550 | Interior - L3 Busway - COLO3 Cell 1 | Not Started | 06-May-25 17:00:00 | 34 | 30-Apr-25 08:00:00 |
| 428 | CHI05-PH2-FIT-BL-D5,3,3,1,6,4,3 | CHI05-03-01-L3-1610 | Interior - L3 ADP - COLO3 Cell 1 | Not Started | 22-Apr-25 17:00:00 | 34 | 16-Apr-25 08:00:00 |
| 429 | CHI05-PH2-FIT-BL-D5,3,3,1,1,2 | CHI05-03-02-MG-1220 | Install Dampers and actuators at Louvers - Upper level (RED) - COLO3 Cell 2 - MG | Not Started | 19-Nov-24 17:00:00 | 4 | 13-Nov-24 08:00:00 |
| 430 | CHI05-PH2-FIT-BL-D5,3,3,1,1,2 | CHI05-03-02-MG-1230 | Install Dampers and actuators at Louvers - Lower level (OA) - COLO3 Cell 2 - MG | Not Started | 21-Nov-24 17:00:00 | 27 | 15-Nov-24 08:00:00 |
| 431 | CHI05-PH2-FIT-BL-D5,3,3,1,1,2 | CHI05-03-02-MG-1240 | Overhead MEP Installation - COLO3 Cell 2 - MG | Not Started | 13-Dec-24 17:00:00 | 22 | 02-Dec-24 08:00:00 |
| 432 | CHI05-PH2-FIT-BL-D5,3,3,1,1,2 | CHI05-03-02-MG-1250 | Deliver AHU into Mech. Gallery - COLO3 Cell 2 - MG | Not Started | 17-Dec-24 17:00:00 | 22 | 16-Dec-24 08:00:00 |
| 433 | CHI05-PH2-FIT-BL-D5,3,3,1,1,2 | CHI05-03-02-MG-1260 | Install Walls and Primer Paint - COLO3 Cell 2 - MG | Not Started | 02-Jan-25 17:00:00 | 22 | 18-Dec-24 08:00:00 |
| 434 | CHI05-PH2-FIT-BL-D5,3,3,1,1,2 | CHI05-03-02-MG-1270 | Placing the AHU - COLO3 Cell 2 - MG | Not Started | 14-Jan-25 12:00:00 | 72 | 10-Jan-25 08:00:00 |
| 435 | CHI05-PH2-FIT-BL-D5,3,3,1,1,2 | CHI05-03-02-MG-1280 | Layout Ceiling and install Pencile Rod - COLO3 Cell 2 - MG | Not Started | 03-Jan-25 17:00:00 | 76 | 03-Jan-25 08:00:00 |
| 436 | CHI05-PH2-FIT-BL-D5,3,3,1,1,2 | CHI05-03-02-MG-1290 | Piping and Electrical Termination to AHUs - COLO3 Cell 2 - MG | Not Started | 28-Jan-25 12:00:00 | 72 | 14-Jan-25 13:00:00 |
| 437 | CHI05-PH2-FIT-BL-D5,3,3,1,1,2 | CHI05-03-02-MG-1300 | Pipe Testing - COLO3 Cell 2 - MG | Not Started | 30-Jan-25 12:00:00 | 76 | 28-Jan-25 13:00:00 |
| 438 | CHI05-PH2-FIT-BL-D5,3,3,1,1,2 | CHI05-03-02-MG-1310 | Install ceiling and Light Fittings - COLO3 Cell 2 - MG | Not Started | 11-Feb-25 12:00:00 | 76 | 30-Jan-25 13:00:00 |
| 439 | CHI05-PH2-FIT-BL-D5,3,3,1,1,2 | CHI05-03-02-MG-1320 | Trim out MEP - COLO3 Cell 2 - MG | Not Started | 11-Feb-25 12:00:00 | 82 | 04-Feb-25 13:00:00 |
| 440 | CHI05-PH2-FIT-BL-D5,3,3,1,1,2 | CHI05-03-02-MG-1265 | Post Wall Overhead MEP - COLO3 Cell 2 - MG | Not Started | 23-Jan-25 17:00:00 | 72 | 03-Jan-25 08:00:00 |
| 441 | CHI05-PH2-FIT-BL-D5,3,3,1,1,5 | CHI05-03-02-ER-1220 | Install Walls and Primer Paint - COLO3 Cell 2 - ER | Not Started | 04-Dec-24 17:00:00 | 0 | 20-Nov-24 08:00:00 |
| 442 | CHI05-PH2-FIT-BL-D5,3,3,1,1,5 | CHI05-03-02-ER-1230 | Sprinklers and Overhead MEP (Above Ceiling) - COLO3 Cell 2 - ER | Not Started | 20-Dec-24 17:00:00 | 29 | 09-Dec-24 08:00:00 |
| 443 | CHI05-PH2-FIT-BL-D5,3,3,1,1,5 | CHI05-03-02-ER-1240 | Install Upper Screens - COLO3 Cell 2 - ER | Not Started | 06-Dec-24 17:00:00 | 29 | 02-Dec-24 08:00:00 |
| 444 | CHI05-PH2-FIT-BL-D5,3,3,1,1,5 | CHI05-03-02-ER-1250 | Install Ceiling - COLO3 Cell 2 - ER | Not Started | 26-Dec-24 17:00:00 | 29 | 23-Dec-24 08:00:00 |
| 445 | CHI05-PH2-FIT-BL-D5,3,3,1,1,5 | CHI05-03-02-ER-1260 | Below Ceiling MEP Rough In - COLO3 Cell 2 - ER | Not Started | 14-Jan-25 17:00:00 | 27 | 31-Dec-24 08:00:00 |
| 446 | CHI05-PH2-FIT-BL-D5,3,3,1,1,5 | CHI05-03-02-ER-1270 | Installation of ADP & ATS - COLO3 Cell 2 - ER | Not Started | 15-Jan-25 17:00:00 | 78 | 09-Jan-25 08:00:00 |
| 447 | CHI05-PH2-FIT-BL-D5,3,3,1,1,5 | CHI05-03-02-ER-1280 | Installation of UPS Equipment - COLO3 Cell 2 - ER | Not Started | 21-Jan-25 17:00:00 | 37 | 15-Jan-25 08:00:00 |
| 448 | CHI05-PH2-FIT-BL-D5,3,3,1,1,5 | CHI05-03-02-ER-1290 | Connet to Cable tray and conduit equipment - COLO3 Cell 2 - ER | Not Started | 17-Jan-25 17:00:00 | 92 | 13-Jan-25 08:00:00 |
| 449 | CHI05-PH2-FIT-BL-D5,3,3,1,1,5 | CHI05-03-02-ER-1300 | Cable Pulling at Elec. Equipment - COLO3 Cell 2 - ER | Not Started | 21-Feb-25 17:00:00 | 82 | 03-Feb-25 08:00:00 |
| 450 | CHI05-PH2-FIT-BL-D5,3,3,1,1,5 | CHI05-03-02-ER-1310 | Door Frame Installation - COLO3 Cell 2 - ER | Not Started | 28-Jan-25 17:00:00 | 47 | 22-Jan-25 08:00:00 |
| 451 | CHI05-PH2-FIT-BL-D5,3,3,1,1,5 | CHI05-03-02-ER-1320 | Finishes and Signage - COLO3 Cell 2 - ER | Not Started | 25-Feb-25 17:00:00 | 102 | 19-Feb-25 08:00:00 |
| 452 | CHI05-PH2-FIT-BL-D5,3,3,1,1,5 | CHI05-03-02-ER-1265 | Installation of MSB - COLO3 Cell 2 - ER | Not Started | 09-Jan-25 17:00:00 | 72 | 03-Jan-25 08:00:00 |
| 453 | CHI05-PH2-FIT-BL-D5,3,3,1,1,1 | CHI05-03-02-DH-1210 | Termination at PDU & Busway - COLO3 Cell 2 - DH | Not Started | 04-Mar-25 17:00:00 | 17 | 12-Feb-25 08:00:00 |
| 454 | CHI05-PH2-FIT-BL-D5,3,3,1,1,1 | CHI05-03-02-DH-1220 | Overhead MEP and Hangers (Above Ceiling) - COLO3 Cell 2 - DH | Not Started | 10-Dec-24 17:00:00 | 40 | 22-Nov-24 08:00:00 |
| 455 | CHI05-PH2-FIT-BL-D5,3,3,1,1,1 | CHI05-03-02-DH-1230 | HAC install and Rise - COLO3 Cell 2 - DH | Not Started | 11-Feb-25 17:00:00 | 56 | 05-Feb-25 08:00:00 |
| 456 | CHI05-PH2-FIT-BL-D5,3,3,1,1,1 | CHI05-03-02-DH-1240 | Cable Pulling at PDU & Busway- COLO3 Cell 2 - DH | Not Started | 18-Feb-25 17:00:00 | 27 | 05-Feb-25 08:00:00 |
| 457 | CHI05-PH2-FIT-BL-D5,3,3,1,1,1 | CHI05-03-02-DH-1250 | Security Screen Installation - COLO3 Cell 2 - DH | Not Started | 07-Jan-25 17:00:00 | 22 | 03-Jan-25 08:00:00 |
| 458 | CHI05-PH2-FIT-BL-D5,3,3,1,1,1 | CHI05-03-02-DH-1260 | Ceiling Grid and Tile - COLO3 Cell 2 - DH | Not Started | 14-Jan-25 17:00:00 | 22 | 08-Jan-25 08:00:00 |
| 459 | CHI05-PH2-FIT-BL-D5,3,3,1,1,1 | CHI05-03-02-DH-1270 | Install PDU's - COLO3 Cell 2 - DH | Not Started | 04-Feb-25 17:00:00 | 22 | 29-Jan-25 08:00:00 |
| 460 | CHI05-PH2-FIT-BL-D5,3,3,1,1,1 | CHI05-03-02-DH-1280 | Overhead MEP Installation (Below Ceiling) - COLO3 Cell 2 - DH | Not Started | 28-Jan-25 17:00:00 | 22 | 15-Jan-25 08:00:00 |
| 461 | CHI05-PH2-FIT-BL-D5,3,3,1,1,1 | CHI05-03-02-DH-1290 | Install Low Voltage Wiring and Fiber Optic - COLO3 Cell 2 - DH | Not Started | 25-Feb-25 17:00:00 | 56 | 12-Feb-25 08:00:00 |
| 462 | CHI05-PH2-FIT-BL-D5,3,3,1,1,1 | CHI05-03-02-DH-1300 | HAC Placing - COLO3 Cell 2 - DH | Not Started | 04-Feb-25 17:00:00 | 56 | 29-Jan-25 08:00:00 |
| 463 | CHI05-PH2-FIT-BL-D5,3,3,1,1,1 | CHI05-03-02-DH-1310 | Finishes and Signage - COLO3 Cell 2 - DH | Not Started | 04-Mar-25 17:00:00 | 97 | 26-Feb-25 08:00:00 |
| 464 | CHI05-PH2-FIT-BL-D5,3,3,1,1,4,1 | CHI05-03-02-L1-1380 | Interior - L1 UPS - COLO3 Cell 2 | Not Started | 03-Feb-25 17:00:00 | 58 | 03-Feb-25 08:00:00 |
| 465 | CHI05-PH2-FIT-BL-D5,3,3,1,1,4,1 | CHI05-03-02-L1-1390 | Interior - L1 MSB - COLO3 Cell 2 | Not Started | 04-Feb-25 17:00:00 | 69 | 04-Feb-25 08:00:00 |
| 466 | CHI05-PH2-FIT-BL-D5,3,3,1,1,4,1 | CHI05-03-02-L1-1400 | Interior - L1 PDUs - COLO3 Cell 2 | Not Started | 05-Feb-25 17:00:00 | 73 | 05-Feb-25 08:00:00 |
| 467 | CHI05-PH2-FIT-BL-D5,3,3,1,1,4,1 | CHI05-03-02-L1-1410 | Interior - L1 AHUs - COLO3 Cell 2 | Not Started | 07-Feb-25 17:00:00 | 86 | 07-Feb-25 08:00:00 |
| 468 | CHI05-PH2-FIT-BL-D5,3,3,1,1,4,1 | CHI05-03-02-L1-1420 | Interior - L1 ATSs - COLO3 Cell 2 | Not Started | 06-Feb-25 17:00:00 | 82 | 06-Feb-25 08:00:00 |
| 469 | CHI05-PH2-FIT-BL-D5,3,3,1,1,4,1 | CHI05-03-02-L1-1430 | Interior - L1 Busway - COLO3 Cell 2 | Not Started | 06-Feb-25 17:00:00 | 82 | 06-Feb-25 08:00:00 |
| 470 | CHI05-PH2-FIT-BL-D5,3,3,1,1,4,1 | CHI05-03-02-L1-1490 | Interior - L1 ADP - COLO3 Cell 2 | Not Started | 05-Feb-25 17:00:00 | 78 | 05-Feb-25 08:00:00 |
| 471 | CHI05-PH2-FIT-BL-D5,3,3,1,1,4,2 | CHI05-03-02-L2-1500 | Interior - L2 UPS - COLO3 Cell 2 | Not Started | 03-Mar-25 17:00:00 | 50 | 25-Feb-25 08:00:00 |
| 472 | CHI05-PH2-FIT-BL-D5,3,3,1,1,4,2 | CHI05-03-02-L2-1510 | Interior - L2 MSB - COLO3 Cell 2 | Not Started | 10-Mar-25 17:00:00 | 50 | 04-Mar-25 08:00:00 |
| 473 | CHI05-PH2-FIT-BL-D5,3,3,1,1,4,2 | CHI05-03-02-L2-1520 | Interior - L2 PDUs - COLO3 Cell 2 | Not Started | 17-Mar-25 17:00:00 | 50 | 11-Mar-25 08:00:00 |
| 474 | CHI05-PH2-FIT-BL-D5,3,3,1,1,4,2 | CHI05-03-02-L2-1530 | Interior - L2 AHUs - COLO3 Cell 2 | Not Started | 31-Mar-25 17:00:00 | 55 | 25-Mar-25 08:00:00 |
| 475 | CHI05-PH2-FIT-BL-D5,3,3,1,1,4,2 | CHI05-03-02-L2-1540 | Interior - L2 ATSs - COLO3 Cell 2 | Not Started | 24-Mar-25 17:00:00 | 55 | 18-Mar-25 08:00:00 |
| 476 | CHI05-PH2-FIT-BL-D5,3,3,1,1,4,2 | CHI05-03-02-L2-1550 | Interior - L2 Busway - COLO3 Cell 2 | Not Started | 24-Mar-25 17:00:00 | 55 | 18-Mar-25 08:00:00 |
| 477 | CHI05-PH2-FIT-BL-D5,3,3,1,1,4,2 | CHI05-03-02-L2-1610 | Interior - L2 ADP - COLO3 Cell 2 | Not Started | 17-Mar-25 17:00:00 | 55 | 11-Mar-25 08:00:00 |
| 478 | CHI05-PH2-FIT-BL-D5,3,3,1,1,4,3 | CHI05-03-02-L3-1620 | Interior - L3 UPS - COLO3 Cell 2 | Not Started | 01-Apr-25 17:00:00 | 34 | 26-Mar-25 08:00:00 |
| 479 | CHI05-PH2-FIT-BL-D5,3,3,1,1,4,3 | CHI05-03-02-L3-1630 | Interior - L3 MSB - COLO3 Cell 2 | Not Started | 08-Apr-25 17:00:00 | 34 | 02-Apr-25 08:00:00 |
| 480 | CHI05-PH2-FIT-BL-D5,3,3,1,1,4,3 | CHI05-03-02-L3-1640 | Interior - L3 PDUs - COLO3 Cell 2 | Not Started | 15-Apr-25 17:00:00 | 34 | 09-Apr-25 08:00:00 |
| 481 | CHI05-PH2-FIT-BL-D5,3,3,1,1,4,3 | CHI05-03-02-L3-1650 | Interior - L3 AHUs - COLO3 Cell 2 | Not Started | 06-May-25 17:00:00 | 34 | 30-Apr-25 08:00:00 |
| 482 | CHI05-PH2-FIT-BL-D5,3,3,1,1,4,3 | CHI05-03-02-L3-1660 | Interior - L3 ATSs - COLO3 Cell 2 | Not Started | 29-Apr-25 17:00:00 | 34 | 23-Apr-25 08:00:00 |
| 483 | CHI05-PH2-FIT-BL-D5,3,3,1,1,4,3 | CHI05-03-02-L3-1670 | Interior - L3 Busway - COLO3 Cell 2 | Not Started | 06-May-25 17:00:00 | 34 | 30-Apr-25 08:00:00 |
| 484 | CHI05-PH2-FIT-BL-D5,3,3,1,1,4,3 | CHI05-03-02-L3-1730 | Interior - L3 ADP - COLO3 Cell 2 | Not Started | 22-Apr-25 17:00:00 | 34 | 16-Apr-25 08:00:00 |
| 485 | CHI05-PH2-FIT-BL-D5,3,3,1,3,2 | CHI05-03-03-MG-1330 | Install Dampers and actuators at Louvers - Upper level (RED) - COLO3 Cell 3 - MG | Not Started | 26-Nov-24 17:00:00 | 4 | 20-Nov-24 08:00:00 |
| 486 | CHI05-PH2-FIT-BL-D5,3,3,1,3,2 | CHI05-03-03-MG-1340 | Install Dampers and actuators at Louvers - Lower level (OA) - COLO3 Cell 3 - MG | Not Started | 29-Nov-24 17:00:00 | 37 | 22-Nov-24 08:00:00 |
| 487 | CHI05-PH2-FIT-BL-D5,3,3,1,3,2 | CHI05-03-03-MG-1350 | Overhead MEP Installation - COLO3 Cell 3 - MG | Not Started | 30-Dec-24 17:00:00 | 27 | 16-Dec-24 08:00:00 |
| 488 | CHI05-PH2-FIT-BL-D5,3,3,1,3,2 | CHI05-03-03-MG-1360 | Deliver AHU into Mech. Gallery - COLO3 Cell 3 - MG | Not Started | 02-Jan-25 17:00:00 | 27 | 31-Dec-24 08:00:00 |
| 489 | CHI05-PH2-FIT-BL-D5,3,3,1,3,2 | CHI05-03-03-MG-1370 | Install Walls and Primer Paint - COLO3 Cell 3 - MG | Not Started | 16-Jan-25 17:00:00 | 27 | 03-Jan-25 08:00:00 |
| 490 | CHI05-PH2-FIT-BL-D5,3,3,1,3,2 | CHI05-03-03-MG-1380 | Placing the AHU - COLO3 Cell 3 - MG | Not Started | 28-Jan-25 12:00:00 | 72 | 24-Jan-25 08:00:00 |

| entry | activity_code | activity_id | activity_name | activity_status | finish | total_float | start |
| --- | --- | --- | --- | --- | --- | --- | --- |
| 491 | CHI05-PH2-FIT-BL-D5,3,3,1,3,2 | CHI05-03-03-MG-1390 | Layout Ceiling and install Pencile Rod - COLO3 Cell 3 - MG | Not Started | 17-Jan-25 17:00:00 | 76 | 17-Jan-25 08:00:00 |
| 492 | CHI05-PH2-FIT-BL-D5,3,3,1,3,2 | CHI05-03-03-MG-1400 | Piping and Electrical Termination to AHUs - COLO3 Cell 3 - MG | Not Started | 11-Feb-25 12:00:00 | 72 | 28-Jan-25 13:00:00 |
| 493 | CHI05-PH2-FIT-BL-D5,3,3,1,3,2 | CHI05-03-03-MG-1410 | Pipe Testing - COLO3 Cell 3 - MG | Not Started | 13-Feb-25 12:00:00 | 74 | 11-Feb-25 13:00:00 |
| 494 | CHI05-PH2-FIT-BL-D5,3,3,1,3,2 | CHI05-03-03-MG-1420 | Install ceiling and Light Fittings - COLO3 Cell 3 - MG | Not Started | 25-Feb-25 12:00:00 | 74 | 13-Feb-25 13:00:00 |
| 495 | CHI05-PH2-FIT-BL-D5,3,3,1,3,2 | CHI05-03-03-MG-1430 | Trim out MEP - COLO3 Cell 3 - MG | Not Started | 25-Feb-25 12:00:00 | 77 | 18-Feb-25 13:00:00 |
| 496 | CHI05-PH2-FIT-BL-D5,3,3,1,3,2 | CHI05-03-03-MG-1375 | Post Wall Overhead MEP - COLO3 Cell 3 - MG | Not Started | 06-Feb-25 17:00:00 | 72 | 17-Jan-25 08:00:00 |
| 497 | CHI05-PH2-FIT-BL-D5,3,3,1,3,5 | CHI05-03-03-ER-1330 | Install Walls and Primer Paint - COLO3 Cell 3 - ER | Not Started | 18-Dec-24 17:00:00 | 0 | 05-Dec-24 08:00:00 |
| 498 | CHI05-PH2-FIT-BL-D5,3,3,1,3,5 | CHI05-03-03-ER-1340 | Sprinklers and Overhead MEP (Above Ceiling) - COLO3 Cell 3 - ER | Not Started | 07-Jan-25 17:00:00 | 29 | 23-Dec-24 08:00:00 |
| 499 | CHI05-PH2-FIT-BL-D5,3,3,1,3,5 | CHI05-03-03-ER-1350 | Install Upper Screens - COLO3 Cell 3 - ER | Not Started | 20-Dec-24 17:00:00 | 29 | 16-Dec-24 08:00:00 |
| 500 | CHI05-PH2-FIT-BL-D5,3,3,1,3,5 | CHI05-03-03-ER-1360 | Install Ceiling - COLO3 Cell 3 - ER | Not Started | 10-Jan-25 17:00:00 | 29 | 08-Jan-25 08:00:00 |
| 501 | CHI05-PH2-FIT-BL-D5,3,3,1,3,5 | CHI05-03-03-ER-1370 | Below Ceiling MEP Rough In - COLO3 Cell 3 - ER | Not Started | 28-Jan-25 17:00:00 | 27 | 15-Jan-25 08:00:00 |
| 502 | CHI05-PH2-FIT-BL-D5,3,3,1,3,5 | CHI05-03-03-ER-1380 | Installation of ADP & ATS - COLO3 Cell 3 - ER | Not Started | 23-Jan-25 17:00:00 | 77 | 17-Jan-25 08:00:00 |
| 503 | CHI05-PH2-FIT-BL-D5,3,3,1,3,5 | CHI05-03-03-ER-1390 | Installation of UPS Equipment - COLO3 Cell 3 - ER | Not Started | 04-Feb-25 17:00:00 | 32 | 29-Jan-25 08:00:00 |
| 504 | CHI05-PH2-FIT-BL-D5,3,3,1,3,5 | CHI05-03-03-ER-1400 | Connet to Cable tray and conduit equipment - COLO3 Cell 3 - ER | Not Started | 27-Jan-25 17:00:00 | 101 | 21-Jan-25 08:00:00 |
| 505 | CHI05-PH2-FIT-BL-D5,3,3,1,3,5 | CHI05-03-03-ER-1410 | Cable Pulling at Elec. Equipment - COLO3 Cell 3 - ER | Not Started | 14-Mar-25 17:00:00 | 82 | 24-Feb-25 08:00:00 |
| 506 | CHI05-PH2-FIT-BL-D5,3,3,1,3,5 | CHI05-03-03-ER-1420 | Door Frame Installation - COLO3 Cell 3 - ER | Not Started | 11-Feb-25 17:00:00 | 37 | 05-Feb-25 08:00:00 |
| 507 | CHI05-PH2-FIT-BL-D5,3,3,1,3,5 | CHI05-03-03-ER-1430 | Finishes and Signage - COLO3 Cell 3 - ER | Not Started | 18-Mar-25 17:00:00 | 92 | 12-Mar-25 08:00:00 |
| 508 | CHI05-PH2-FIT-BL-D5,3,3,1,3,5 | CHI05-03-03-ER-1385 | Installation of MSB - COLO3 Cell 3 - ER | Not Started | 23-Jan-25 17:00:00 | 67 | 17-Jan-25 08:00:00 |
| 509 | CHI05-PH2-FIT-BL-D5,3,3,1,3,1 | CHI05-03-03-DH-1320 | Termination at PDU & Busway - COLO3 Cell 3 - DH | Not Started | 25-Mar-25 17:00:00 | 17 | 05-Mar-25 08:00:00 |
| 510 | CHI05-PH2-FIT-BL-D5,3,3,1,3,1 | CHI05-03-03-DH-1330 | Overhead MEP and Hangers (Above Ceiling) - COLO3 Cell 3 - DH | Not Started | 27-Dec-24 17:00:00 | 43 | 11-Dec-24 08:00:00 |
| 511 | CHI05-PH2-FIT-BL-D5,3,3,1,3,1 | CHI05-03-03-DH-1340 | HAC install and Rise - COLO3 Cell 3 - DH | Not Started | 25-Feb-25 17:00:00 | 56 | 19-Feb-25 08:00:00 |
| 512 | CHI05-PH2-FIT-BL-D5,3,3,1,3,1 | CHI05-03-03-DH-1350 | Cable Pulling at PDU & Busway- COLO3 Cell 3 - DH | Not Started | 04-Mar-25 17:00:00 | 32 | 19-Feb-25 08:00:00 |
| 513 | CHI05-PH2-FIT-BL-D5,3,3,1,3,1 | CHI05-03-03-DH-1360 | Security Screen Installation - COLO3 Cell 3 - DH | Not Started | 21-Jan-25 17:00:00 | 27 | 17-Jan-25 08:00:00 |
| 514 | CHI05-PH2-FIT-BL-D5,3,3,1,3,1 | CHI05-03-03-DH-1370 | Ceiling Grid and Tile - COLO3 Cell 3 - DH | Not Started | 28-Jan-25 17:00:00 | 27 | 22-Jan-25 08:00:00 |
| 515 | CHI05-PH2-FIT-BL-D5,3,3,1,3,1 | CHI05-03-03-DH-1380 | Install PDU's - COLO3 Cell 3 - DH | Not Started | 18-Feb-25 17:00:00 | 27 | 12-Feb-25 08:00:00 |
| 516 | CHI05-PH2-FIT-BL-D5,3,3,1,3,1 | CHI05-03-03-DH-1390 | Overhead MEP Installation (Below Ceiling) - COLO3 Cell 3 - DH | Not Started | 11-Feb-25 17:00:00 | 27 | 29-Jan-25 08:00:00 |
| 517 | CHI05-PH2-FIT-BL-D5,3,3,1,3,1 | CHI05-03-03-DH-1400 | Install Low Voltage Wiring and Fiber Optic - COLO3 Cell 3 - DH | Not Started | 11-Mar-25 17:00:00 | 56 | 26-Feb-25 08:00:00 |
| 518 | CHI05-PH2-FIT-BL-D5,3,3,1,3,1 | CHI05-03-03-DH-1410 | HAC Placing - COLO3 Cell 3 - DH | Not Started | 18-Feb-25 17:00:00 | 56 | 12-Feb-25 08:00:00 |
| 519 | CHI05-PH2-FIT-BL-D5,3,3,1,3,1 | CHI05-03-03-DH-1420 | Finishes and Signage - COLO3 Cell 3 - DH | Not Started | 25-Mar-25 17:00:00 | 87 | 19-Mar-25 08:00:00 |
| 520 | CHI05-PH2-FIT-BL-D5,3,3,1,3,4,1 | CHI05-03-03-L1-1500 | Interior - L1 UPS - COLO3 Cell 3 | Not Started | 04-Feb-25 17:00:00 | 58 | 04-Feb-25 08:00:00 |
| 521 | CHI05-PH2-FIT-BL-D5,3,3,1,3,4,1 | CHI05-03-03-L1-1510 | Interior - L1 MSB - COLO3 Cell 3 | Not Started | 05-Feb-25 17:00:00 | 87 | 05-Feb-25 08:00:00 |
| 522 | CHI05-PH2-FIT-BL-D5,3,3,1,3,4,1 | CHI05-03-03-L1-1520 | Interior - L1 PDUs - COLO3 Cell 3 | Not Started | 19-Feb-25 17:00:00 | 78 | 19-Feb-25 08:00:00 |
| 523 | CHI05-PH2-FIT-BL-D5,3,3,1,3,4,1 | CHI05-03-03-L1-1530 | Interior - L1 AHUs - COLO3 Cell 3 | Not Started | 21-Feb-25 17:00:00 | 78 | 21-Feb-25 08:00:00 |
| 524 | CHI05-PH2-FIT-BL-D5,3,3,1,3,4,1 | CHI05-03-03-L1-1540 | Interior - L1 ATSs - COLO3 Cell 3 | Not Started | 07-Feb-25 17:00:00 | 87 | 07-Feb-25 08:00:00 |
| 525 | CHI05-PH2-FIT-BL-D5,3,3,1,3,4,1 | CHI05-03-03-L1-1550 | Interior - L1 Busway - COLO3 Cell 3 | Not Started | 20-Feb-25 17:00:00 | 78 | 20-Feb-25 08:00:00 |
| 526 | CHI05-PH2-FIT-BL-D5,3,3,1,3,4,1 | CHI05-03-03-L1-1610 | Interior - L1 ADP - COLO3 Cell 3 | Not Started | 06-Feb-25 17:00:00 | 87 | 06-Feb-25 08:00:00 |
| 527 | CHI05-PH2-FIT-BL-D5,3,3,1,3,4,2 | CHI05-03-03-L2-1620 | Interior - L2 UPS - COLO3 Cell 3 | Not Started | 03-Mar-25 17:00:00 | 52 | 25-Feb-25 08:00:00 |
| 528 | CHI05-PH2-FIT-BL-D5,3,3,1,3,4,2 | CHI05-03-03-L2-1630 | Interior - L2 MSB - COLO3 Cell 3 | Not Started | 10-Mar-25 17:00:00 | 52 | 04-Mar-25 08:00:00 |
| 529 | CHI05-PH2-FIT-BL-D5,3,3,1,3,4,2 | CHI05-03-03-L2-1640 | Interior - L2 PDUs - COLO3 Cell 3 | Not Started | 01-Apr-25 17:00:00 | 41 | 26-Mar-25 08:00:00 |
| 530 | CHI05-PH2-FIT-BL-D5,3,3,1,3,4,2 | CHI05-03-03-L2-1650 | Interior - L2 AHUs - COLO3 Cell 3 | Not Started | 15-Apr-25 17:00:00 | 41 | 09-Apr-25 08:00:00 |
| 531 | CHI05-PH2-FIT-BL-D5,3,3,1,3,4,2 | CHI05-03-03-L2-1660 | Interior - L2 ATSs - COLO3 Cell 3 | Not Started | 24-Mar-25 17:00:00 | 52 | 18-Mar-25 08:00:00 |
| 532 | CHI05-PH2-FIT-BL-D5,3,3,1,3,4,2 | CHI05-03-03-L2-1670 | Interior - L2 Busway - COLO3 Cell 3 | Not Started | 08-Apr-25 17:00:00 | 41 | 02-Apr-25 08:00:00 |
| 533 | CHI05-PH2-FIT-BL-D5,3,3,1,3,4,2 | CHI05-03-03-L2-1730 | Interior - L2 ADP - COLO3 Cell 3 | Not Started | 17-Mar-25 17:00:00 | 52 | 11-Mar-25 08:00:00 |
| 534 | CHI05-PH2-FIT-BL-D5,3,3,1,3,4,3 | CHI05-03-03-L3-1740 | Interior - L3 UPS - COLO3 Cell 3 | Not Started | 01-Apr-25 17:00:00 | 36 | 26-Mar-25 08:00:00 |
| 535 | CHI05-PH2-FIT-BL-D5,3,3,1,3,4,3 | CHI05-03-03-L3-1750 | Interior - L3 MSB - COLO3 Cell 3 | Not Started | 08-Apr-25 17:00:00 | 36 | 02-Apr-25 08:00:00 |
| 536 | CHI05-PH2-FIT-BL-D5,3,3,1,3,4,3 | CHI05-03-03-L3-1760 | Interior - L3 PDUs - COLO3 Cell 3 | Not Started | 15-Apr-25 17:00:00 | 36 | 09-Apr-25 08:00:00 |
| 537 | CHI05-PH2-FIT-BL-D5,3,3,1,3,4,3 | CHI05-03-03-L3-1770 | Interior - L3 AHUs - COLO3 Cell 3 | Not Started | 29-Apr-25 17:00:00 | 36 | 23-Apr-25 08:00:00 |
| 538 | CHI05-PH2-FIT-BL-D5,3,3,1,3,4,3 | CHI05-03-03-L3-1780 | Interior - L3 ATSs - COLO3 Cell 3 | Not Started | 29-Apr-25 17:00:00 | 36 | 23-Apr-25 08:00:00 |
| 539 | CHI05-PH2-FIT-BL-D5,3,3,1,3,4,3 | CHI05-03-03-L3-1790 | Interior - L3 Busway - COLO3 Cell 3 | Not Started | 29-Apr-25 17:00:00 | 36 | 23-Apr-25 08:00:00 |
| 540 | CHI05-PH2-FIT-BL-D5,3,3,1,3,4,3 | CHI05-03-03-L3-1850 | Interior - L3 ADP - COLO3 Cell 3 | Not Started | 22-Apr-25 17:00:00 | 36 | 16-Apr-25 08:00:00 |
| 541 | CHI05-PH2-FIT-BL-D5,3,3,1,2,2 | CHI05-03-04-MG-1440 | Install Dampers and actuators at Louvers - Upper level (RED) - COLO3 Cell 4 - MG | Not Started | 04-Dec-24 17:00:00 | 4 | 27-Nov-24 08:00:00 |
| 542 | CHI05-PH2-FIT-BL-D5,3,3,1,2,2 | CHI05-03-04-MG-1450 | Install Dampers and actuators at Louvers - Lower level (OA) - COLO3 Cell 4 - MG | Not Started | 06-Dec-24 17:00:00 | 47 | 02-Dec-24 08:00:00 |
| 543 | CHI05-PH2-FIT-BL-D5,3,3,1,2,2 | CHI05-03-04-MG-1460 | Overhead MEP Installation - COLO3 Cell 4 - MG | Not Started | 14-Jan-25 17:00:00 | 32 | 31-Dec-24 08:00:00 |
| 544 | CHI05-PH2-FIT-BL-D5,3,3,1,2,2 | CHI05-03-04-MG-1470 | Deliver AHU into Mech. Gallery - COLO3 Cell 4 - MG | Not Started | 16-Jan-25 17:00:00 | 32 | 15-Jan-25 08:00:00 |
| 545 | CHI05-PH2-FIT-BL-D5,3,3,1,2,2 | CHI05-03-04-MG-1480 | Install Walls and Primer Paint - COLO3 Cell 4 - MG | Not Started | 30-Jan-25 17:00:00 | 32 | 17-Jan-25 08:00:00 |
| 546 | CHI05-PH2-FIT-BL-D5,3,3,1,2,2 | CHI05-03-04-MG-1490 | Placing the AHU - COLO3 Cell 4 - MG | Not Started | 11-Feb-25 12:00:00 | 72 | 07-Feb-25 08:00:00 |
| 547 | CHI05-PH2-FIT-BL-D5,3,3,1,2,2 | CHI05-03-04-MG-1500 | Layout Ceiling and install Pencile Rod - COLO3 Cell 4 - MG | Not Started | 31-Jan-25 17:00:00 | 76 | 31-Jan-25 08:00:00 |
| 548 | CHI05-PH2-FIT-BL-D5,3,3,1,2,2 | CHI05-03-04-MG-1510 | Piping and Electrical Termination to AHUs - COLO3 Cell 4 - MG | Not Started | 25-Feb-25 12:00:00 | 72 | 11-Feb-25 13:00:00 |
| 549 | CHI05-PH2-FIT-BL-D5,3,3,1,2,2 | CHI05-03-04-MG-1520 | Pipe Testing - COLO3 Cell 4 - MG | Not Started | 27-Feb-25 12:00:00 | 72 | 25-Feb-25 13:00:00 |
| 550 | CHI05-PH2-FIT-BL-D5,3,3,1,2,2 | CHI05-03-04-MG-1530 | Install ceiling and Light Fittings - COLO3 Cell 4 - MG | Not Started | 11-Mar-25 12:00:00 | 72 | 27-Feb-25 13:00:00 |
| 551 | CHI05-PH2-FIT-BL-D5,3,3,1,2,2 | CHI05-03-04-MG-1540 | Trim out MEP - COLO3 Cell 4 - MG | Not Started | 11-Mar-25 12:00:00 | 72 | 04-Mar-25 13:00:00 |
| 552 | CHI05-PH2-FIT-BL-D5,3,3,1,2,2 | CHI05-03-04-MG-1485 | Post Wall Overhead MEP - COLO3 Cell 4 - MG | Not Started | 20-Feb-25 17:00:00 | 72 | 31-Jan-25 08:00:00 |
| 553 | CHI05-PH2-FIT-BL-D5,3,3,1,2,5 | CHI05-03-04-ER-1440 | Install Walls and Primer Paint - COLO3 Cell 4 - ER | Not Started | 03-Jan-25 17:00:00 | 0 | 19-Dec-24 08:00:00 |
| 554 | CHI05-PH2-FIT-BL-D5,3,3,1,2,5 | CHI05-03-04-ER-1450 | Sprinklers and Overhead MEP (Above Ceiling) - COLO3 Cell 4 - ER | Not Started | 21-Jan-25 17:00:00 | 29 | 08-Jan-25 08:00:00 |
| 555 | CHI05-PH2-FIT-BL-D5,3,3,1,2,5 | CHI05-03-04-ER-1460 | Install Upper Screens - COLO3 Cell 4 - ER | Not Started | 07-Jan-25 17:00:00 | 29 | 31-Dec-24 08:00:00 |
| 556 | CHI05-PH2-FIT-BL-D5,3,3,1,2,5 | CHI05-03-04-ER-1470 | Install Ceiling - COLO3 Cell 4 - ER | Not Started | 24-Jan-25 17:00:00 | 29 | 22-Jan-25 08:00:00 |
| 557 | CHI05-PH2-FIT-BL-D5,3,3,1,2,5 | CHI05-03-04-ER-1480 | Below Ceiling MEP Rough In - COLO3 Cell 4 - ER | Not Started | 11-Feb-25 17:00:00 | 27 | 29-Jan-25 08:00:00 |
| 558 | CHI05-PH2-FIT-BL-D5,3,3,1,2,5 | CHI05-03-04-ER-1490 | Installation of ADP & ATS - COLO3 Cell 4 - ER | Not Started | 06-Feb-25 17:00:00 | 69 | 31-Jan-25 08:00:00 |
| 559 | CHI05-PH2-FIT-BL-D5,3,3,1,2,5 | CHI05-03-04-ER-1500 | Installation of UPS Equipment - COLO3 Cell 4 - ER | Not Started | 18-Feb-25 17:00:00 | 27 | 12-Feb-25 08:00:00 |
| 560 | CHI05-PH2-FIT-BL-D5,3,3,1,2,5 | CHI05-03-04-ER-1510 | Connet to Cable tray and conduit equipment - COLO3 Cell 4 - ER | Not Started | 10-Feb-25 17:00:00 | 106 | 04-Feb-25 08:00:00 |

| entry | activity_code | activity_id | activity_name | activity_status | finish | total_float | start |
| --- | --- | --- | --- | --- | --- | --- | --- |
| 561 | CHI05-PH2-FIT-BL-D5,3,3,1,2,5 | CHI05-03-04-ER-1520 | Cable Pulling at Elec. Equipment - COLO3 Cell 4 - ER | Not Started | 04-Apr-25 17:00:00 | 82 | 17-Mar-25 08:00:00 |
| 562 | CHI05-PH2-FIT-BL-D5,3,3,1,2,5 | CHI05-03-04-ER-1530 | Door Frame Installation - COLO3 Cell 4 - ER | Not Started | 25-Feb-25 17:00:00 | 27 | 19-Feb-25 08:00:00 |
| 563 | CHI05-PH2-FIT-BL-D5,3,3,1,2,5 | CHI05-03-04-ER-1540 | Finishes and Signage - COLO3 Cell 4 - ER | Not Started | 08-Apr-25 17:00:00 | 82 | 02-Apr-25 08:00:00 |
| 564 | CHI05-PH2-FIT-BL-D5,3,3,1,2,5 | CHI05-03-04-ER-1495 | Installation of MSB - COLO3 Cell 4 - ER | Not Started | 06-Feb-25 17:00:00 | 59 | 31-Jan-25 08:00:00 |
| 565 | CHI05-PH2-FIT-BL-D5,3,3,1,2,1 | CHI05-03-04-DH-1430 | Termination at PDU & Busway - COLO3 Cell 4 - DH | Not Started | 15-Apr-25 17:00:00 | 17 | 26-Mar-25 08:00:00 |
| 566 | CHI05-PH2-FIT-BL-D5,3,3,1,2,1 | CHI05-03-04-DH-1440 | Overhead MEP and Hangers (Above Ceiling) - COLO3 Cell 4 - DH | Not Started | 15-Jan-25 17:00:00 | 46 | 30-Dec-24 08:00:00 |
| 567 | CHI05-PH2-FIT-BL-D5,3,3,1,2,1 | CHI05-03-04-DH-1450 | HAC install and Rise - COLO3 Cell 4 - DH | Not Started | 11-Mar-25 17:00:00 | 56 | 05-Mar-25 08:00:00 |
| 568 | CHI05-PH2-FIT-BL-D5,3,3,1,2,1 | CHI05-03-04-DH-1460 | Cable Pulling at PDU & Busway- COLO3 Cell 4 - DH | Not Started | 18-Mar-25 17:00:00 | 37 | 05-Mar-25 08:00:00 |
| 569 | CHI05-PH2-FIT-BL-D5,3,3,1,2,1 | CHI05-03-04-DH-1470 | Security Screen Installation - COLO3 Cell 4 - DH | Not Started | 04-Feb-25 17:00:00 | 32 | 31-Jan-25 08:00:00 |
| 570 | CHI05-PH2-FIT-BL-D5,3,3,1,2,1 | CHI05-03-04-DH-1480 | Ceiling Grid and Tile - COLO3 Cell 4 - DH | Not Started | 11-Feb-25 17:00:00 | 32 | 05-Feb-25 08:00:00 |
| 571 | CHI05-PH2-FIT-BL-D5,3,3,1,2,1 | CHI05-03-04-DH-1490 | Install PDU's - COLO3 Cell 4 - DH | Not Started | 04-Mar-25 17:00:00 | 32 | 26-Feb-25 08:00:00 |
| 572 | CHI05-PH2-FIT-BL-D5,3,3,1,2,1 | CHI05-03-04-DH-1500 | Overhead MEP Installation (Below Ceiling) - COLO3 Cell 4 - DH | Not Started | 25-Feb-25 17:00:00 | 32 | 12-Feb-25 08:00:00 |
| 573 | CHI05-PH2-FIT-BL-D5,3,3,1,2,1 | CHI05-03-04-DH-1510 | Install Low Voltage Wiring and Fiber Optic - COLO3 Cell 4 - DH | Not Started | 25-Mar-25 17:00:00 | 56 | 12-Mar-25 08:00:00 |
| 574 | CHI05-PH2-FIT-BL-D5,3,3,1,2,1 | CHI05-03-04-DH-1520 | HAC Placing - COLO3 Cell 4 - DH | Not Started | 04-Mar-25 17:00:00 | 56 | 26-Feb-25 08:00:00 |
| 575 | CHI05-PH2-FIT-BL-D5,3,3,1,2,1 | CHI05-03-04-DH-1530 | Finishes and Signage - COLO3 Cell 4 - DH | Not Started | 15-Apr-25 17:00:00 | 77 | 09-Apr-25 08:00:00 |
| 576 | CHI05-PH2-FIT-BL-D5,3,3,1,2,4,1 | CHI05-03-04-L1-1620 | Interior - L1 UPS - COLO3 Cell 4 | Not Started | 12-Feb-25 17:00:00 | 52 | 12-Feb-25 08:00:00 |
| 577 | CHI05-PH2-FIT-BL-D5,3,3,1,2,4,1 | CHI05-03-04-L1-1630 | Interior - L1 MSB - COLO3 Cell 4 | Not Started | 13-Feb-25 17:00:00 | 55 | 13-Feb-25 08:00:00 |
| 578 | CHI05-PH2-FIT-BL-D5,3,3,1,2,4,1 | CHI05-03-04-L1-1640 | Interior - L1 PDUs - COLO3 Cell 4 | Not Started | 05-Mar-25 17:00:00 | 46 | 05-Mar-25 08:00:00 |
| 579 | CHI05-PH2-FIT-BL-D5,3,3,1,2,4,1 | CHI05-03-04-L1-1650 | Interior - L1 AHUs - COLO3 Cell 4 | Not Started | 07-Mar-25 17:00:00 | 63 | 07-Mar-25 08:00:00 |
| 580 | CHI05-PH2-FIT-BL-D5,3,3,1,2,4,1 | CHI05-03-04-L1-1660 | Interior - L1 ATSs - COLO3 Cell 4 | Not Started | 17-Feb-25 17:00:00 | 68 | 17-Feb-25 08:00:00 |
| 581 | CHI05-PH2-FIT-BL-D5,3,3,1,2,4,1 | CHI05-03-04-L1-1670 | Interior - L1 Busway - COLO3 Cell 4 | Not Started | 06-Mar-25 17:00:00 | 59 | 06-Mar-25 08:00:00 |
| 582 | CHI05-PH2-FIT-BL-D5,3,3,1,2,4,1 | CHI05-03-04-L1-1730 | Interior - L1 ADP - COLO3 Cell 4 | Not Started | 14-Feb-25 17:00:00 | 64 | 14-Feb-25 08:00:00 |
| 583 | CHI05-PH2-FIT-BL-D5,3,3,1,2,4,2 | CHI05-03-04-L2-1740 | Interior - L2 UPS - COLO3 Cell 4 | Not Started | 03-Mar-25 17:00:00 | 43 | 25-Feb-25 08:00:00 |
| 584 | CHI05-PH2-FIT-BL-D5,3,3,1,2,4,2 | CHI05-03-04-L2-1750 | Interior - L2 MSB - COLO3 Cell 4 | Not Started | 10-Mar-25 17:00:00 | 43 | 04-Mar-25 08:00:00 |
| 585 | CHI05-PH2-FIT-BL-D5,3,3,1,2,4,2 | CHI05-03-04-L2-1760 | Interior - L2 PDUs - COLO3 Cell 4 | Not Started | 22-Apr-25 17:00:00 | 17 | 16-Apr-25 08:00:00 |
| 586 | CHI05-PH2-FIT-BL-D5,3,3,1,2,4,2 | CHI05-03-04-L2-1770 | Interior - L2 AHUs - COLO3 Cell 4 | Not Started | 06-May-25 17:00:00 | 26 | 30-Apr-25 08:00:00 |
| 587 | CHI05-PH2-FIT-BL-D5,3,3,1,2,4,2 | CHI05-03-04-L2-1780 | Interior - L2 ATSs - COLO3 Cell 4 | Not Started | 24-Mar-25 17:00:00 | 48 | 18-Mar-25 08:00:00 |
| 588 | CHI05-PH2-FIT-BL-D5,3,3,1,2,4,2 | CHI05-03-04-L2-1790 | Interior - L2 Busway - COLO3 Cell 4 | Not Started | 29-Apr-25 17:00:00 | 26 | 23-Apr-25 08:00:00 |
| 589 | CHI05-PH2-FIT-BL-D5,3,3,1,2,4,2 | CHI05-03-04-L2-1850 | Interior - L2 ADP - COLO3 Cell 4 | Not Started | 17-Mar-25 17:00:00 | 48 | 11-Mar-25 08:00:00 |
| 590 | CHI05-PH2-FIT-BL-D5,3,3,1,2,4,3 | CHI05-03-04-L3-1860 | Interior - L3 UPS - COLO3 Cell 4 | Not Started | 01-Apr-25 17:00:00 | 27 | 26-Mar-25 08:00:00 |
| 591 | CHI05-PH2-FIT-BL-D5,3,3,1,2,4,3 | CHI05-03-04-L3-1870 | Interior - L3 MSB - COLO3 Cell 4 | Not Started | 08-Apr-25 17:00:00 | 27 | 02-Apr-25 08:00:00 |
| 592 | CHI05-PH2-FIT-BL-D5,3,3,1,2,4,3 | CHI05-03-04-L3-1880 | Interior - L3 PDUs - COLO3 Cell 4 | Not Started | 29-Apr-25 17:00:00 | 17 | 23-Apr-25 08:00:00 |
| 593 | CHI05-PH2-FIT-BL-D5,3,3,1,2,4,3 | CHI05-03-04-L3-1890 | Interior - L3 AHUs - COLO3 Cell 4 | Not Started | 27-May-25 17:00:00 | 17 | 20-May-25 08:00:00 |
| 594 | CHI05-PH2-FIT-BL-D5,3,3,1,2,4,3 | CHI05-03-04-L3-1900 | Interior - L3 ATSs - COLO3 Cell 4 | Not Started | 13-May-25 17:00:00 | 17 | 07-May-25 08:00:00 |
| 595 | CHI05-PH2-FIT-BL-D5,3,3,1,2,4,3 | CHI05-03-04-L3-1910 | Interior - L3 Busway - COLO3 Cell 4 | Not Started | 20-May-25 17:00:00 | 17 | 14-May-25 08:00:00 |
| 596 | CHI05-PH2-FIT-BL-D5,3,3,1,2,4,3 | CHI05-03-04-L3-1970 | Interior - L3 ADP - COLO3 Cell 4 | Not Started | 06-May-25 17:00:00 | 17 | 30-Apr-25 08:00:00 |
| 597 | CHI05-PH2-FIT-BL-D5,3,3,1,5,1 | CHI05-03-04-L4-1000 | Cx LEV4 - COLO3 | Not Started | 30-Jun-25 17:00:00 | 17 | 28-May-25 08:00:00 |
| 598 | CHI05-PH2-FIT-BL-D5,3,3,1,5,2 | CHI05-03-04-L5-1000 | Cx LEV5 / IST - COLO3 | Not Started | 02-Jul-25 17:00:00 | 17 | 01-Jul-25 08:00:00 |
| 599 | CHI05-PH2-FIT-BL-D5,3,3,2,6,2 | CHI05-04-01-MG-1220 | Install Dampers and actuators at Louvers - Upper level (RED) - COLO4 Cell 1 - MG | Not Started | 11-Dec-24 17:00:00 | 4 | 05-Dec-24 08:00:00 |
| 600 | CHI05-PH2-FIT-BL-D5,3,3,2,6,2 | CHI05-04-01-MG-1230 | Install Dampers and actuators at Louvers - Lower level (OA) - COLO4 Cell 1 - MG | Not Started | 12-Dec-24 17:00:00 | 4 | 06-Dec-24 08:00:00 |
| 601 | CHI05-PH2-FIT-BL-D5,3,3,2,6,2 | CHI05-04-01-MG-1240 | Overhead MEP Installation - COLO4 Cell 1 - MG | Not Started | 27-Dec-24 17:00:00 | 4 | 13-Dec-24 08:00:00 |
| 602 | CHI05-PH2-FIT-BL-D5,3,3,2,6,2 | CHI05-04-01-MG-1250 | Deliver AHU into Mech. Gallery - COLO4 Cell 1 - MG | Not Started | 31-Dec-24 17:00:00 | 4 | 30-Dec-24 08:00:00 |
| 603 | CHI05-PH2-FIT-BL-D5,3,3,2,6,2 | CHI05-04-01-MG-1260 | Install Walls and Primer Paint - COLO4 Cell 1 - MG | Not Started | 15-Jan-25 17:00:00 | 4 | 02-Jan-25 08:00:00 |
| 604 | CHI05-PH2-FIT-BL-D5,3,3,2,6,2 | CHI05-04-01-MG-1270 | Placing the AHU - COLO4 Cell 1 - MG | Not Started | 27-Jan-25 12:00:00 | 58 | 23-Jan-25 08:00:00 |
| 605 | CHI05-PH2-FIT-BL-D5,3,3,2,6,2 | CHI05-04-01-MG-1280 | Layout Ceiling and install Pencile Rod - COLO4 Cell 1 - MG | Not Started | 16-Jan-25 17:00:00 | 62 | 16-Jan-25 08:00:00 |
| 606 | CHI05-PH2-FIT-BL-D5,3,3,2,6,2 | CHI05-04-01-MG-1290 | Piping and Electrical Termination to AHUs - COLO4 Cell 1 - MG | Not Started | 10-Feb-25 12:00:00 | 58 | 27-Jan-25 13:00:00 |
| 607 | CHI05-PH2-FIT-BL-D5,3,3,2,6,2 | CHI05-04-01-MG-1300 | Pipe Testing - COLO4 Cell 1 - MG | Not Started | 12-Feb-25 12:00:00 | 64 | 10-Feb-25 13:00:00 |
| 608 | CHI05-PH2-FIT-BL-D5,3,3,2,6,2 | CHI05-04-01-MG-1310 | Install ceiling and Light Fittings - COLO4 Cell 1 - MG | Not Started | 24-Feb-25 12:00:00 | 64 | 12-Feb-25 13:00:00 |
| 609 | CHI05-PH2-FIT-BL-D5,3,3,2,6,2 | CHI05-04-01-MG-1320 | Trim out MEP - COLO4 Cell 1 - MG | Not Started | 24-Feb-25 12:00:00 | 73 | 17-Feb-25 13:00:00 |
| 610 | CHI05-PH2-FIT-BL-D5,3,3,2,6,2 | CHI05-04-01-MG-1265 | Post Wall Overhead MEP - COLO4 Cell 1 - MG | Not Started | 05-Feb-25 17:00:00 | 58 | 16-Jan-25 08:00:00 |
| 611 | CHI05-PH2-FIT-BL-D5,3,3,2,6,5 | CHI05-04-01-ER-1220 | Install Walls and Primer Paint - COLO4 Cell 1 - ER | Not Started | 17-Jan-25 17:00:00 | 0 | 06-Jan-25 08:00:00 |
| 612 | CHI05-PH2-FIT-BL-D5,3,3,2,6,5 | CHI05-04-01-ER-1230 | Sprinklers and Overhead MEP (Above Ceiling) - COLO4 Cell 1 - ER | Not Started | 31-Jan-25 17:00:00 | 2 | 20-Jan-25 08:00:00 |
| 613 | CHI05-PH2-FIT-BL-D5,3,3,2,6,5 | CHI05-04-01-ER-1240 | Install Upper Screens - COLO4 Cell 1 - ER | Not Started | 17-Jan-25 17:00:00 | 2 | 13-Jan-25 08:00:00 |
| 614 | CHI05-PH2-FIT-BL-D5,3,3,2,6,5 | CHI05-04-01-ER-1250 | Install Ceiling - COLO4 Cell 1 - ER | Not Started | 05-Feb-25 17:00:00 | 2 | 03-Feb-25 08:00:00 |
| 615 | CHI05-PH2-FIT-BL-D5,3,3,2,6,5 | CHI05-04-01-ER-1260 | Below Ceiling MEP Rough In - COLO4 Cell 1 - ER | Not Started | 19-Feb-25 17:00:00 | 2 | 06-Feb-25 08:00:00 |
| 616 | CHI05-PH2-FIT-BL-D5,3,3,2,6,5 | CHI05-04-01-ER-1270 | Installation of ADP & ATS - COLO4 Cell 1 - ER | Not Started | 14-Feb-25 17:00:00 | 36 | 10-Feb-25 08:00:00 |
| 617 | CHI05-PH2-FIT-BL-D5,3,3,2,6,5 | CHI05-04-01-ER-1280 | Installation of UPS Equipment - COLO4 Cell 1 - ER | Not Started | 19-Feb-25 17:00:00 | 17 | 13-Feb-25 08:00:00 |
| 618 | CHI05-PH2-FIT-BL-D5,3,3,2,6,5 | CHI05-04-01-ER-1290 | Connet to Cable tray and conduit equipment - COLO4 Cell 1 - ER | Not Started | 18-Feb-25 17:00:00 | 57 | 12-Feb-25 08:00:00 |
| 619 | CHI05-PH2-FIT-BL-D5,3,3,2,6,5 | CHI05-04-01-ER-1300 | Cable Pulling at Elec. Equipment - COLO4 Cell 1 - ER | Not Started | 11-Mar-25 17:00:00 | 57 | 19-Feb-25 08:00:00 |
| 620 | CHI05-PH2-FIT-BL-D5,3,3,2,6,5 | CHI05-04-01-ER-1310 | Door Frame Installation - COLO4 Cell 1 - ER | Not Started | 26-Feb-25 17:00:00 | 32 | 20-Feb-25 08:00:00 |
| 621 | CHI05-PH2-FIT-BL-D5,3,3,2,6,5 | CHI05-04-01-ER-1320 | Finishes and Signage - COLO4 Cell 1 - ER | Not Started | 13-Mar-25 17:00:00 | 85 | 07-Mar-25 08:00:00 |
| 622 | CHI05-PH2-FIT-BL-D5,3,3,2,6,5 | CHI05-04-01-ER-1285 | Installation of MSB - COLO4 Cell 1 - ER | Not Started | 14-Feb-25 17:00:00 | 36 | 10-Feb-25 08:00:00 |
| 623 | CHI05-PH2-FIT-BL-D5,3,3,2,6,1 | CHI05-04-01-DH-1210 | Cable Pulling at PDU & Busway - COLO4 Cell 1 - DH | Not Started | 12-Mar-25 17:00:00 | 2 | 20-Feb-25 08:00:00 |
| 624 | CHI05-PH2-FIT-BL-D5,3,3,2,6,1 | CHI05-04-01-DH-1220 | Overhead MEP and Hangers (Above Ceiling) - COLO4 Cell 1 - DH | Not Started | 21-Jan-25 17:00:00 | 3 | 06-Jan-25 08:00:00 |
| 625 | CHI05-PH2-FIT-BL-D5,3,3,2,6,1 | CHI05-04-01-DH-1230 | HAC install and Rise - COLO4 Cell 1 - DH | Not Started | 26-Feb-25 17:00:00 | 40 | 20-Feb-25 08:00:00 |
| 626 | CHI05-PH2-FIT-BL-D5,3,3,2,6,1 | CHI05-04-01-DH-1240 | Termination at PDU & Busway- COLO4 Cell 1 - DH | Not Started | 05-Mar-25 17:00:00 | 7 | 20-Feb-25 08:00:00 |
| 627 | CHI05-PH2-FIT-BL-D5,3,3,2,6,1 | CHI05-04-01-DH-1250 | Security Screen Installation - COLO4 Cell 1 - DH | Not Started | 22-Jan-25 17:00:00 | 2 | 20-Jan-25 08:00:00 |
| 628 | CHI05-PH2-FIT-BL-D5,3,3,2,6,1 | CHI05-04-01-DH-1260 | Ceiling Grid and Tile - COLO4 Cell 1 - DH | Not Started | 29-Jan-25 17:00:00 | 2 | 23-Jan-25 08:00:00 |
| 629 | CHI05-PH2-FIT-BL-D5,3,3,2,6,1 | CHI05-04-01-DH-1270 | Install PDU's - COLO4 Cell 1 - DH | Not Started | 19-Feb-25 17:00:00 | 2 | 13-Feb-25 08:00:00 |
| 630 | CHI05-PH2-FIT-BL-D5,3,3,2,6,1 | CHI05-04-01-DH-1280 | Overhead MEP Installation (Below Ceiling) - COLO4 Cell 1 - DH | Not Started | 12-Feb-25 17:00:00 | 2 | 30-Jan-25 08:00:00 |

| entry | activity_code | activity_id | activity_name | activity_status | finish | total_float | start |
| --- | --- | --- | --- | --- | --- | --- | --- |
| 631 | CHI05-PH2-FIT-BL-D5,3,3,2,6,1 | CHI05-04-01-DH-1290 | Install Low Voltage Wiring and Fiber Optic - COLO4 Cell 1 - DH | Not Started | 12-Mar-25 17:00:00 | 40 | 27-Feb-25 08:00:00 |
| 632 | CHI05-PH2-FIT-BL-D5,3,3,2,6,1 | CHI05-04-01-DH-1300 | HAC Placing - COLO4 Cell 1 - DH | Not Started | 19-Feb-25 17:00:00 | 40 | 13-Feb-25 08:00:00 |
| 633 | CHI05-PH2-FIT-BL-D5,3,3,2,6,1 | CHI05-04-01-DH-1310 | Finishes and Signage - COLO4 Cell 1 - DH | Not Started | 19-Mar-25 17:00:00 | 81 | 13-Mar-25 08:00:00 |
| 634 | CHI05-PH2-FIT-BL-D5,3,3,2,6,4,1 | CHI05-04-01-L1-1380 | Interior - L1 UPS - COLO4 Cell 1 | Not Started | 20-Feb-25 17:00:00 | 46 | 20-Feb-25 08:00:00 |
| 635 | CHI05-PH2-FIT-BL-D5,3,3,2,6,4,1 | CHI05-04-01-L1-1390 | Interior - L1 MSB - COLO4 Cell 1 | Not Started | 21-Feb-25 17:00:00 | 63 | 21-Feb-25 08:00:00 |
| 636 | CHI05-PH2-FIT-BL-D5,3,3,2,6,4,1 | CHI05-04-01-L1-1400 | Interior - L1 PDUs - COLO4 Cell 1 | Not Started | 24-Feb-25 17:00:00 | 67 | 24-Feb-25 08:00:00 |
| 637 | CHI05-PH2-FIT-BL-D5,3,3,2,6,4,1 | CHI05-04-01-L1-1410 | Interior - L1 AHUs - COLO4 Cell 1 | Not Started | 26-Feb-25 17:00:00 | 75 | 26-Feb-25 08:00:00 |
| 638 | CHI05-PH2-FIT-BL-D5,3,3,2,6,4,1 | CHI05-04-01-L1-1420 | Interior - L1 ATSs - COLO4 Cell 1 | Not Started | 25-Feb-25 17:00:00 | 71 | 25-Feb-25 08:00:00 |
| 639 | CHI05-PH2-FIT-BL-D5,3,3,2,6,4,1 | CHI05-04-01-L1-1430 | Interior - L1 Busway - COLO4 Cell 1 | Not Started | 25-Feb-25 17:00:00 | 71 | 25-Feb-25 08:00:00 |
| 640 | CHI05-PH2-FIT-BL-D5,3,3,2,6,4,1 | CHI05-04-01-L1-1490 | Interior - L1 ADP - COLO4 Cell 1 | Not Started | 24-Feb-25 17:00:00 | 67 | 24-Feb-25 08:00:00 |
| 641 | CHI05-PH2-FIT-BL-D5,3,3,2,6,4,2 | CHI05-04-01-L2-1500 | Interior - L2 UPS - COLO4 Cell 1 | Not Started | 03-Mar-25 17:00:00 | 57 | 25-Feb-25 08:00:00 |
| 642 | CHI05-PH2-FIT-BL-D5,3,3,2,6,4,2 | CHI05-04-01-L2-1510 | Interior - L2 MSB - COLO4 Cell 1 | Not Started | 10-Mar-25 17:00:00 | 57 | 04-Mar-25 08:00:00 |
| 643 | CHI05-PH2-FIT-BL-D5,3,3,2,6,4,2 | CHI05-04-01-L2-1520 | Interior - L2 PDUs - COLO4 Cell 1 | Not Started | 19-Mar-25 17:00:00 | 55 | 13-Mar-25 08:00:00 |
| 644 | CHI05-PH2-FIT-BL-D5,3,3,2,6,4,2 | CHI05-04-01-L2-1530 | Interior - L2 AHUs - COLO4 Cell 1 | Not Started | 02-Apr-25 17:00:00 | 55 | 27-Mar-25 08:00:00 |
| 645 | CHI05-PH2-FIT-BL-D5,3,3,2,6,4,2 | CHI05-04-01-L2-1540 | Interior - L2 ATSs - COLO4 Cell 1 | Not Started | 24-Mar-25 17:00:00 | 57 | 18-Mar-25 08:00:00 |
| 646 | CHI05-PH2-FIT-BL-D5,3,3,2,6,4,2 | CHI05-04-01-L2-1550 | Interior - L2 Busway - COLO4 Cell 1 | Not Started | 26-Mar-25 17:00:00 | 55 | 20-Mar-25 08:00:00 |
| 647 | CHI05-PH2-FIT-BL-D5,3,3,2,6,4,2 | CHI05-04-01-L2-1610 | Interior - L2 ADP - COLO4 Cell 1 | Not Started | 17-Mar-25 17:00:00 | 57 | 11-Mar-25 08:00:00 |
| 648 | CHI05-PH2-FIT-BL-D5,3,3,2,6,4,3 | CHI05-04-01-L3-1620 | Interior - L3 UPS - COLO4 Cell 1 | Not Started | 16-May-25 17:00:00 | 8 | 12-May-25 08:00:00 |
| 649 | CHI05-PH2-FIT-BL-D5,3,3,2,6,4,3 | CHI05-04-01-L3-1630 | Interior - L3 MSB - COLO4 Cell 1 | Not Started | 23-May-25 17:00:00 | 8 | 19-May-25 08:00:00 |
| 650 | CHI05-PH2-FIT-BL-D5,3,3,2,6,4,3 | CHI05-04-01-L3-1640 | Interior - L3 PDUs - COLO4 Cell 1 | Not Started | 02-Jun-25 17:00:00 | 8 | 27-May-25 08:00:00 |
| 651 | CHI05-PH2-FIT-BL-D5,3,3,2,6,4,3 | CHI05-04-01-L3-1650 | Interior - L3 AHUs - COLO4 Cell 1 | Not Started | 16-Jun-25 17:00:00 | 8 | 10-Jun-25 08:00:00 |
| 652 | CHI05-PH2-FIT-BL-D5,3,3,2,6,4,3 | CHI05-04-01-L3-1660 | Interior - L3 ATSs - COLO4 Cell 1 | Not Started | 09-Jun-25 17:00:00 | 8 | 03-Jun-25 08:00:00 |
| 653 | CHI05-PH2-FIT-BL-D5,3,3,2,6,4,3 | CHI05-04-01-L3-1670 | Interior - L3 Busway - COLO4 Cell 1 | Not Started | 16-Jun-25 17:00:00 | 8 | 10-Jun-25 08:00:00 |
| 654 | CHI05-PH2-FIT-BL-D5,3,3,2,6,4,3 | CHI05-04-01-L3-1730 | Interior - L3 ADP - COLO4 Cell 1 | Not Started | 02-Jun-25 17:00:00 | 8 | 27-May-25 08:00:00 |
| 655 | CHI05-PH2-FIT-BL-D5,3,3,2,1,2 | CHI05-04-02-MG-1330 | Install Dampers and actuators at Louvers - Upper level (RED) - COLO4 Cell 2 - MG | Not Started | 18-Dec-24 17:00:00 | 13 | 12-Dec-24 08:00:00 |
| 656 | CHI05-PH2-FIT-BL-D5,3,3,2,1,2 | CHI05-04-02-MG-1340 | Install Dampers and actuators at Louvers - Lower level (OA) - COLO4 Cell 2 - MG | Not Started | 20-Dec-24 17:00:00 | 13 | 16-Dec-24 08:00:00 |
| 657 | CHI05-PH2-FIT-BL-D5,3,3,2,1,2 | CHI05-04-02-MG-1350 | Overhead MEP Installation - COLO4 Cell 2 - MG | Not Started | 13-Jan-25 17:00:00 | 9 | 30-Dec-24 08:00:00 |
| 658 | CHI05-PH2-FIT-BL-D5,3,3,2,1,2 | CHI05-04-02-MG-1360 | Deliver AHU into Mech. Gallery - COLO4 Cell 2 - MG | Not Started | 15-Jan-25 17:00:00 | 9 | 14-Jan-25 08:00:00 |
| 659 | CHI05-PH2-FIT-BL-D5,3,3,2,1,2 | CHI05-04-02-MG-1370 | Install Walls and Primer Paint - COLO4 Cell 2 - MG | Not Started | 29-Jan-25 17:00:00 | 9 | 16-Jan-25 08:00:00 |
| 660 | CHI05-PH2-FIT-BL-D5,3,3,2,1,2 | CHI05-04-02-MG-1380 | Placing the AHU - COLO4 Cell 2 - MG | Not Started | 10-Feb-25 12:00:00 | 56 | 06-Feb-25 08:00:00 |
| 661 | CHI05-PH2-FIT-BL-D5,3,3,2,1,2 | CHI05-04-02-MG-1390 | Layout Ceiling and install Pencile Rod - COLO4 Cell 2 - MG | Not Started | 30-Jan-25 17:00:00 | 60 | 30-Jan-25 08:00:00 |
| 662 | CHI05-PH2-FIT-BL-D5,3,3,2,1,2 | CHI05-04-02-MG-1400 | Piping and Electrical Termination to AHUs - COLO4 Cell 2 - MG | Not Started | 24-Feb-25 12:00:00 | 58 | 10-Feb-25 13:00:00 |
| 663 | CHI05-PH2-FIT-BL-D5,3,3,2,1,2 | CHI05-04-02-MG-1410 | Pipe Testing - COLO4 Cell 2 - MG | Not Started | 26-Feb-25 12:00:00 | 62 | 24-Feb-25 13:00:00 |
| 664 | CHI05-PH2-FIT-BL-D5,3,3,2,1,2 | CHI05-04-02-MG-1420 | Install ceiling and Light Fittings - COLO4 Cell 2 - MG | Not Started | 10-Mar-25 12:00:00 | 62 | 26-Feb-25 13:00:00 |
| 665 | CHI05-PH2-FIT-BL-D5,3,3,2,1,2 | CHI05-04-02-MG-1430 | Trim out MEP - COLO4 Cell 2 - MG | Not Started | 10-Mar-25 12:00:00 | 68 | 03-Mar-25 13:00:00 |
| 666 | CHI05-PH2-FIT-BL-D5,3,3,2,1,2 | CHI05-04-02-MG-1375 | Post Wall Overhead MEP - COLO4 Cell 2 - MG | Not Started | 19-Feb-25 17:00:00 | 56 | 30-Jan-25 08:00:00 |
| 667 | CHI05-PH2-FIT-BL-D5,3,3,2,1,5 | CHI05-04-02-ER-1330 | Install Walls and Primer Paint - COLO4 Cell 2 - ER | Not Started | 31-Jan-25 17:00:00 | 0 | 20-Jan-25 08:00:00 |
| 668 | CHI05-PH2-FIT-BL-D5,3,3,2,1,5 | CHI05-04-02-ER-1340 | Sprinklers and Overhead MEP (Above Ceiling) - COLO4 Cell 2 - ER | Not Started | 18-Feb-25 17:00:00 | 0 | 05-Feb-25 08:00:00 |
| 669 | CHI05-PH2-FIT-BL-D5,3,3,2,1,5 | CHI05-04-02-ER-1350 | Install Upper Screens - COLO4 Cell 2 - ER | Not Started | 04-Feb-25 17:00:00 | 0 | 29-Jan-25 08:00:00 |
| 670 | CHI05-PH2-FIT-BL-D5,3,3,2,1,5 | CHI05-04-02-ER-1360 | Install Ceiling - COLO4 Cell 2 - ER | Not Started | 21-Feb-25 17:00:00 | 0 | 19-Feb-25 08:00:00 |
| 671 | CHI05-PH2-FIT-BL-D5,3,3,2,1,5 | CHI05-04-02-ER-1370 | Below Ceiling MEP Rough In - COLO4 Cell 2 - ER | Not Started | 07-Mar-25 17:00:00 | 0 | 24-Feb-25 08:00:00 |
| 672 | CHI05-PH2-FIT-BL-D5,3,3,2,1,5 | CHI05-04-02-ER-1380 | Installation of ADP & ATS - COLO4 Cell 2 - ER | Not Started | 04-Mar-25 17:00:00 | 29 | 26-Feb-25 08:00:00 |
| 673 | CHI05-PH2-FIT-BL-D5,3,3,2,1,5 | CHI05-04-02-ER-1390 | Installation of UPS Equipment - COLO4 Cell 2 - ER | Not Started | 07-Mar-25 17:00:00 | 10 | 03-Mar-25 08:00:00 |
| 674 | CHI05-PH2-FIT-BL-D5,3,3,2,1,5 | CHI05-04-02-ER-1400 | Connet to Cable tray and conduit equipment - COLO4 Cell 2 - ER | Not Started | 06-Mar-25 17:00:00 | 60 | 28-Feb-25 08:00:00 |
| 675 | CHI05-PH2-FIT-BL-D5,3,3,2,1,5 | CHI05-04-02-ER-1410 | Cable Pulling at Elec. Equipment - COLO4 Cell 2 - ER | Not Started | 01-Apr-25 17:00:00 | 57 | 12-Mar-25 08:00:00 |
| 676 | CHI05-PH2-FIT-BL-D5,3,3,2,1,5 | CHI05-04-02-ER-1420 | Door Frame Installation - COLO4 Cell 2 - ER | Not Started | 14-Mar-25 17:00:00 | 48 | 10-Mar-25 08:00:00 |
| 677 | CHI05-PH2-FIT-BL-D5,3,3,2,1,5 | CHI05-04-02-ER-1430 | Finishes and Signage - COLO4 Cell 2 - ER | Not Started | 03-Apr-25 17:00:00 | 75 | 28-Mar-25 08:00:00 |
| 678 | CHI05-PH2-FIT-BL-D5,3,3,2,1,5 | CHI05-04-02-ER-1385 | Installation of MSB - COLO4 Cell 2 - ER | Not Started | 04-Mar-25 17:00:00 | 29 | 26-Feb-25 08:00:00 |
| 679 | CHI05-PH2-FIT-BL-D5,3,3,2,1,1 | CHI05-04-02-DH-1320 | Termination at PDU & Busway - COLO4 Cell 2 - DH | Not Started | 02-Apr-25 17:00:00 | 2 | 13-Mar-25 08:00:00 |
| 680 | CHI05-PH2-FIT-BL-D5,3,3,2,1,1 | CHI05-04-02-DH-1330 | Overhead MEP and Hangers (Above Ceiling) - COLO4 Cell 2 - DH | Not Started | 06-Feb-25 17:00:00 | 6 | 22-Jan-25 08:00:00 |
| 681 | CHI05-PH2-FIT-BL-D5,3,3,2,1,1 | CHI05-04-02-DH-1340 | HAC install and Rise - COLO4 Cell 2 - DH | Not Started | 14-Mar-25 17:00:00 | 38 | 10-Mar-25 08:00:00 |
| 682 | CHI05-PH2-FIT-BL-D5,3,3,2,1,1 | CHI05-04-02-DH-1350 | Cable Pulling at PDU & Busway- COLO4 Cell 2 - DH | Not Started | 21-Mar-25 17:00:00 | 10 | 10-Mar-25 08:00:00 |
| 683 | CHI05-PH2-FIT-BL-D5,3,3,2,1,1 | CHI05-04-02-DH-1360 | Security Screen Installation - COLO4 Cell 2 - DH | Not Started | 07-Feb-25 17:00:00 | 5 | 05-Feb-25 08:00:00 |
| 684 | CHI05-PH2-FIT-BL-D5,3,3,2,1,1 | CHI05-04-02-DH-1370 | Ceiling Grid and Tile - COLO4 Cell 2 - DH | Not Started | 14-Feb-25 17:00:00 | 5 | 10-Feb-25 08:00:00 |
| 685 | CHI05-PH2-FIT-BL-D5,3,3,2,1,1 | CHI05-04-02-DH-1380 | Install PDU's - COLO4 Cell 2 - DH | Not Started | 07-Mar-25 17:00:00 | 5 | 03-Mar-25 08:00:00 |
| 686 | CHI05-PH2-FIT-BL-D5,3,3,2,1,1 | CHI05-04-02-DH-1390 | Overhead MEP Installation (Below Ceiling) - COLO4 Cell 2 - DH | Not Started | 28-Feb-25 17:00:00 | 5 | 17-Feb-25 08:00:00 |
| 687 | CHI05-PH2-FIT-BL-D5,3,3,2,1,1 | CHI05-04-02-DH-1400 | Install Low Voltage Wiring and Fiber Optic - COLO4 Cell 2 - DH | Not Started | 28-Mar-25 17:00:00 | 38 | 17-Mar-25 08:00:00 |
| 688 | CHI05-PH2-FIT-BL-D5,3,3,2,1,1 | CHI05-04-02-DH-1410 | HAC Placing - COLO4 Cell 2 - DH | Not Started | 07-Mar-25 17:00:00 | 35 | 03-Mar-25 08:00:00 |
| 689 | CHI05-PH2-FIT-BL-D5,3,3,2,1,1 | CHI05-04-02-DH-1420 | Finishes and Signage - COLO4 Cell 2 - DH | Not Started | 04-Apr-25 17:00:00 | 74 | 31-Mar-25 08:00:00 |
| 690 | CHI05-PH2-FIT-BL-D5,3,3,2,1,4,1 | CHI05-04-02-L1-1500 | Interior - L1 UPS - COLO4 Cell 2 | Not Started | 10-Mar-25 17:00:00 | 35 | 10-Mar-25 08:00:00 |
| 691 | CHI05-PH2-FIT-BL-D5,3,3,2,1,4,1 | CHI05-04-02-L1-1510 | Interior - L1 MSB - COLO4 Cell 2 | Not Started | 11-Mar-25 17:00:00 | 45 | 11-Mar-25 08:00:00 |
| 692 | CHI05-PH2-FIT-BL-D5,3,3,2,1,4,1 | CHI05-04-02-L1-1520 | Interior - L1 PDUs - COLO4 Cell 2 | Not Started | 12-Mar-25 17:00:00 | 55 | 12-Mar-25 08:00:00 |
| 693 | CHI05-PH2-FIT-BL-D5,3,3,2,1,4,1 | CHI05-04-02-L1-1530 | Interior - L1 AHUs - COLO4 Cell 2 | Not Started | 14-Mar-25 17:00:00 | 63 | 14-Mar-25 08:00:00 |
| 694 | CHI05-PH2-FIT-BL-D5,3,3,2,1,4,1 | CHI05-04-02-L1-1540 | Interior - L1 ATSs - COLO4 Cell 2 | Not Started | 13-Mar-25 17:00:00 | 59 | 13-Mar-25 08:00:00 |
| 695 | CHI05-PH2-FIT-BL-D5,3,3,2,1,4,1 | CHI05-04-02-L1-1550 | Interior - L1 Busway - COLO4 Cell 2 | Not Started | 13-Mar-25 17:00:00 | 59 | 13-Mar-25 08:00:00 |
| 696 | CHI05-PH2-FIT-BL-D5,3,3,2,1,4,1 | CHI05-04-02-L1-1610 | Interior - L1 ADP - COLO4 Cell 2 | Not Started | 12-Mar-25 17:00:00 | 45 | 12-Mar-25 08:00:00 |
| 697 | CHI05-PH2-FIT-BL-D5,3,3,2,1,4,2 | CHI05-04-02-L2-1620 | Interior - L2 UPS - COLO4 Cell 2 | Not Started | 19-Mar-25 17:00:00 | 45 | 13-Mar-25 08:00:00 |
| 698 | CHI05-PH2-FIT-BL-D5,3,3,2,1,4,2 | CHI05-04-02-L2-1630 | Interior - L2 MSB - COLO4 Cell 2 | Not Started | 26-Mar-25 17:00:00 | 45 | 20-Mar-25 08:00:00 |
| 699 | CHI05-PH2-FIT-BL-D5,3,3,2,1,4,2 | CHI05-04-02-L2-1640 | Interior - L2 PDUs - COLO4 Cell 2 | Not Started | 09-Apr-25 17:00:00 | 40 | 03-Apr-25 08:00:00 |
| 700 | CHI05-PH2-FIT-BL-D5,3,3,2,1,4,2 | CHI05-04-02-L2-1650 | Interior - L2 AHUs - COLO4 Cell 2 | Not Started | 23-Apr-25 17:00:00 | 40 | 17-Apr-25 08:00:00 |

| entry | activity_code | activity_id | activity_name | activity_status | finish | total_float | start |
| --- | --- | --- | --- | --- | --- | --- | --- |
| 701 | CHI05-PH2-FIT-BL-D5,3,3,2,1,4,2 | CHI05-04-02-L2-1660 | Interior - L2 ATSs - COLO4 Cell 2 | Not Started | 09-Apr-25 17:00:00 | 45 | 03-Apr-25 08:00:00 |
| 702 | CHI05-PH2-FIT-BL-D5,3,3,2,1,4,2 | CHI05-04-02-L2-1670 | Interior - L2 Busway - COLO4 Cell 2 | Not Started | 16-Apr-25 17:00:00 | 40 | 10-Apr-25 08:00:00 |
| 703 | CHI05-PH2-FIT-BL-D5,3,3,2,1,4,2 | CHI05-04-02-L2-1730 | Interior - L2 ADP - COLO4 Cell 2 | Not Started | 02-Apr-25 17:00:00 | 45 | 27-Mar-25 08:00:00 |
| 704 | CHI05-PH2-FIT-BL-D5,3,3,2,1,4,3 | CHI05-04-02-L3-1740 | Interior - L3 UPS - COLO4 Cell 2 | Not Started | 21-Mar-25 17:00:00 | 48 | 17-Mar-25 08:00:00 |
| 705 | CHI05-PH2-FIT-BL-D5,3,3,2,1,4,3 | CHI05-04-02-L3-1750 | Interior - L3 MSB - COLO4 Cell 2 | Not Started | 16-May-25 17:00:00 | 13 | 12-May-25 08:00:00 |
| 706 | CHI05-PH2-FIT-BL-D5,3,3,2,1,4,3 | CHI05-04-02-L3-1760 | Interior - L3 PDUs - COLO4 Cell 2 | Not Started | 23-May-25 17:00:00 | 18 | 19-May-25 08:00:00 |
| 707 | CHI05-PH2-FIT-BL-D5,3,3,2,1,4,3 | CHI05-04-02-L3-1770 | Interior - L3 AHUs - COLO4 Cell 2 | Not Started | 09-Jun-25 17:00:00 | 13 | 03-Jun-25 08:00:00 |
| 708 | CHI05-PH2-FIT-BL-D5,3,3,2,1,4,3 | CHI05-04-02-L3-1780 | Interior - L3 ATSs - COLO4 Cell 2 | Not Started | 02-Jun-25 17:00:00 | 13 | 27-May-25 08:00:00 |
| 709 | CHI05-PH2-FIT-BL-D5,3,3,2,1,4,3 | CHI05-04-02-L3-1790 | Interior - L3 Busway - COLO4 Cell 2 | Not Started | 09-Jun-25 17:00:00 | 13 | 03-Jun-25 08:00:00 |
| 710 | CHI05-PH2-FIT-BL-D5,3,3,2,1,4,3 | CHI05-04-02-L3-1850 | Interior - L3 ADP - COLO4 Cell 2 | Not Started | 23-May-25 17:00:00 | 13 | 19-May-25 08:00:00 |
| 711 | CHI05-PH2-FIT-BL-D5,3,3,2,3,2 | CHI05-04-03-MG-1440 | Install Dampers and actuators at Louvers - Upper level (RED) - COLO4 Cell 3 - MG | Not Started | 26-Dec-24 17:00:00 | 23 | 19-Dec-24 08:00:00 |
| 712 | CHI05-PH2-FIT-BL-D5,3,3,2,3,2 | CHI05-04-03-MG-1450 | Install Dampers and actuators at Louvers - Lower level (OA) - COLO4 Cell 3 - MG | Not Started | 30-Dec-24 17:00:00 | 23 | 23-Dec-24 08:00:00 |
| 713 | CHI05-PH2-FIT-BL-D5,3,3,2,3,2 | CHI05-04-03-MG-1460 | Overhead MEP Installation - COLO4 Cell 3 - MG | Not Started | 27-Jan-25 17:00:00 | 14 | 14-Jan-25 08:00:00 |
| 714 | CHI05-PH2-FIT-BL-D5,3,3,2,3,2 | CHI05-04-03-MG-1470 | Deliver AHU into Mech. Gallery - COLO4 Cell 3 - MG | Not Started | 29-Jan-25 17:00:00 | 14 | 28-Jan-25 08:00:00 |
| 715 | CHI05-PH2-FIT-BL-D5,3,3,2,3,2 | CHI05-04-03-MG-1480 | Install Walls and Primer Paint - COLO4 Cell 3 - MG | Not Started | 12-Feb-25 17:00:00 | 14 | 30-Jan-25 08:00:00 |
| 716 | CHI05-PH2-FIT-BL-D5,3,3,2,3,2 | CHI05-04-03-MG-1490 | Placing the AHU - COLO4 Cell 3 - MG | Not Started | 24-Feb-25 12:00:00 | 49 | 20-Feb-25 08:00:00 |
| 717 | CHI05-PH2-FIT-BL-D5,3,3,2,3,2 | CHI05-04-03-MG-1500 | Layout Ceiling and install Pencile Rod - COLO4 Cell 3 - MG | Not Started | 13-Feb-25 17:00:00 | 53 | 13-Feb-25 08:00:00 |
| 718 | CHI05-PH2-FIT-BL-D5,3,3,2,3,2 | CHI05-04-03-MG-1510 | Piping and Electrical Termination to AHUs - COLO4 Cell 3 - MG | Not Started | 10-Mar-25 12:00:00 | 58 | 24-Feb-25 13:00:00 |
| 719 | CHI05-PH2-FIT-BL-D5,3,3,2,3,2 | CHI05-04-03-MG-1520 | Pipe Testing - COLO4 Cell 3 - MG | Not Started | 12-Mar-25 12:00:00 | 60 | 10-Mar-25 13:00:00 |
| 720 | CHI05-PH2-FIT-BL-D5,3,3,2,3,2 | CHI05-04-03-MG-1530 | Install ceiling and Light Fittings - COLO4 Cell 3 - MG | Not Started | 24-Mar-25 12:00:00 | 60 | 12-Mar-25 13:00:00 |
| 721 | CHI05-PH2-FIT-BL-D5,3,3,2,3,2 | CHI05-04-03-MG-1540 | Trim out MEP - COLO4 Cell 3 - MG | Not Started | 24-Mar-25 12:00:00 | 63 | 17-Mar-25 13:00:00 |
| 722 | CHI05-PH2-FIT-BL-D5,3,3,2,3,2 | CHI05-04-03-MG-1485 | Post Wall Overhead MEP - COLO4 Cell 3 - MG | Not Started | 05-Mar-25 17:00:00 | 49 | 13-Feb-25 08:00:00 |
| 723 | CHI05-PH2-FIT-BL-D5,3,3,2,3,5 | CHI05-04-03-ER-1440 | Install Walls and Primer Paint - COLO4 Cell 3 - ER | Not Started | 14-Feb-25 17:00:00 | 0 | 03-Feb-25 08:00:00 |
| 724 | CHI05-PH2-FIT-BL-D5,3,3,2,3,5 | CHI05-04-03-ER-1450 | Sprinklers and Overhead MEP (Above Ceiling) - COLO4 Cell 3 - ER | Not Started | 04-Mar-25 17:00:00 | 0 | 19-Feb-25 08:00:00 |
| 725 | CHI05-PH2-FIT-BL-D5,3,3,2,3,5 | CHI05-04-03-ER-1460 | Install Upper Screens - COLO4 Cell 3 - ER | Not Started | 18-Feb-25 17:00:00 | 0 | 12-Feb-25 08:00:00 |
| 726 | CHI05-PH2-FIT-BL-D5,3,3,2,3,5 | CHI05-04-03-ER-1470 | Install Ceiling - COLO4 Cell 3 - ER | Not Started | 07-Mar-25 17:00:00 | 0 | 05-Mar-25 08:00:00 |
| 727 | CHI05-PH2-FIT-BL-D5,3,3,2,3,5 | CHI05-04-03-ER-1480 | Below Ceiling MEP Rough In - COLO4 Cell 3 - ER | Not Started | 21-Mar-25 17:00:00 | 0 | 10-Mar-25 08:00:00 |
| 728 | CHI05-PH2-FIT-BL-D5,3,3,2,3,5 | CHI05-04-03-ER-1490 | Installation of ADP & ATS - COLO4 Cell 3 - ER | Not Started | 18-Mar-25 17:00:00 | 24 | 12-Mar-25 08:00:00 |
| 729 | CHI05-PH2-FIT-BL-D5,3,3,2,3,5 | CHI05-04-03-ER-1500 | Installation of UPS Equipment - COLO4 Cell 3 - ER | Not Started | 21-Mar-25 17:00:00 | 5 | 17-Mar-25 08:00:00 |
| 730 | CHI05-PH2-FIT-BL-D5,3,3,2,3,5 | CHI05-04-03-ER-1510 | Connet to Cable tray and conduit equipment - COLO4 Cell 3 - ER | Not Started | 20-Mar-25 17:00:00 | 65 | 14-Mar-25 08:00:00 |
| 731 | CHI05-PH2-FIT-BL-D5,3,3,2,3,5 | CHI05-04-03-ER-1520 | Cable Pulling at Elec. Equipment - COLO4 Cell 3 - ER | Not Started | 22-Apr-25 17:00:00 | 57 | 02-Apr-25 08:00:00 |
| 732 | CHI05-PH2-FIT-BL-D5,3,3,2,3,5 | CHI05-04-03-ER-1530 | Door Frame Installation - COLO4 Cell 3 - ER | Not Started | 28-Mar-25 17:00:00 | 10 | 24-Mar-25 08:00:00 |
| 733 | CHI05-PH2-FIT-BL-D5,3,3,2,3,5 | CHI05-04-03-ER-1540 | Finishes and Signage - COLO4 Cell 3 - ER | Not Started | 24-Apr-25 17:00:00 | 65 | 18-Apr-25 08:00:00 |
| 734 | CHI05-PH2-FIT-BL-D5,3,3,2,3,5 | CHI05-04-03-ER-1495 | Installation of MSB - COLO4 Cell 3 - ER | Not Started | 18-Mar-25 17:00:00 | 24 | 12-Mar-25 08:00:00 |
| 735 | CHI05-PH2-FIT-BL-D5,3,3,2,3,1 | CHI05-04-03-DH-1430 | Termination at PDU & Busway - COLO4 Cell 3 - DH | Not Started | 23-Apr-25 17:00:00 | 2 | 03-Apr-25 08:00:00 |
| 736 | CHI05-PH2-FIT-BL-D5,3,3,2,3,1 | CHI05-04-03-DH-1440 | Overhead MEP and Hangers (Above Ceiling) - COLO4 Cell 3 - DH | Not Started | 24-Feb-25 17:00:00 | 9 | 07-Feb-25 08:00:00 |
| 737 | CHI05-PH2-FIT-BL-D5,3,3,2,3,1 | CHI05-04-03-DH-1450 | HAC install and Rise - COLO4 Cell 3 - DH | Not Started | 31-Mar-25 17:00:00 | 37 | 25-Mar-25 08:00:00 |
| 738 | CHI05-PH2-FIT-BL-D5,3,3,2,3,1 | CHI05-04-03-DH-1460 | Cable Pulling at PDU & Busway- COLO4 Cell 3 - DH | Not Started | 07-Apr-25 17:00:00 | 14 | 25-Mar-25 08:00:00 |
| 739 | CHI05-PH2-FIT-BL-D5,3,3,2,3,1 | CHI05-04-03-DH-1470 | Security Screen Installation - COLO4 Cell 3 - DH | Not Started | 21-Feb-25 17:00:00 | 10 | 19-Feb-25 08:00:00 |
| 740 | CHI05-PH2-FIT-BL-D5,3,3,2,3,1 | CHI05-04-03-DH-1480 | Ceiling Grid and Tile - COLO4 Cell 3 - DH | Not Started | 03-Mar-25 17:00:00 | 9 | 25-Feb-25 08:00:00 |
| 741 | CHI05-PH2-FIT-BL-D5,3,3,2,3,1 | CHI05-04-03-DH-1490 | Install PDU's - COLO4 Cell 3 - DH | Not Started | 24-Mar-25 17:00:00 | 9 | 18-Mar-25 08:00:00 |
| 742 | CHI05-PH2-FIT-BL-D5,3,3,2,3,1 | CHI05-04-03-DH-1500 | Overhead MEP Installation (Below Ceiling) - COLO4 Cell 3 - DH | Not Started | 17-Mar-25 17:00:00 | 9 | 04-Mar-25 08:00:00 |
| 743 | CHI05-PH2-FIT-BL-D5,3,3,2,3,1 | CHI05-04-03-DH-1510 | Install Low Voltage Wiring and Fiber Optic - COLO4 Cell 3 - DH | Not Started | 14-Apr-25 17:00:00 | 37 | 01-Apr-25 08:00:00 |
| 744 | CHI05-PH2-FIT-BL-D5,3,3,2,3,1 | CHI05-04-03-DH-1520 | HAC Placing - COLO4 Cell 3 - DH | Not Started | 24-Mar-25 17:00:00 | 29 | 18-Mar-25 08:00:00 |
| 745 | CHI05-PH2-FIT-BL-D5,3,3,2,3,1 | CHI05-04-03-DH-1530 | Finishes and Signage - COLO4 Cell 3 - DH | Not Started | 23-Apr-25 17:00:00 | 66 | 17-Apr-25 08:00:00 |
| 746 | CHI05-PH2-FIT-BL-D5,3,3,2,3,4,1 | CHI05-04-03-L1-1620 | Interior - L1 UPS - COLO4 Cell 3 | Not Started | 24-Mar-25 17:00:00 | 26 | 24-Mar-25 08:00:00 |
| 747 | CHI05-PH2-FIT-BL-D5,3,3,2,3,4,1 | CHI05-04-03-L1-1630 | Interior - L1 MSB - COLO4 Cell 3 | Not Started | 25-Mar-25 17:00:00 | 33 | 25-Mar-25 08:00:00 |
| 748 | CHI05-PH2-FIT-BL-D5,3,3,2,3,4,1 | CHI05-04-03-L1-1640 | Interior - L1 PDUs - COLO4 Cell 3 | Not Started | 26-Mar-25 17:00:00 | 33 | 26-Mar-25 08:00:00 |
| 749 | CHI05-PH2-FIT-BL-D5,3,3,2,3,4,1 | CHI05-04-03-L1-1650 | Interior - L1 AHUs - COLO4 Cell 3 | Not Started | 28-Mar-25 17:00:00 | 33 | 28-Mar-25 08:00:00 |
| 750 | CHI05-PH2-FIT-BL-D5,3,3,2,3,4,1 | CHI05-04-03-L1-1660 | Interior - L1 ATSs - COLO4 Cell 3 | Not Started | 27-Mar-25 17:00:00 | 33 | 27-Mar-25 08:00:00 |
| 751 | CHI05-PH2-FIT-BL-D5,3,3,2,3,4,1 | CHI05-04-03-L1-1670 | Interior - L1 Busway - COLO4 Cell 3 | Not Started | 27-Mar-25 17:00:00 | 33 | 27-Mar-25 08:00:00 |
| 752 | CHI05-PH2-FIT-BL-D5,3,3,2,3,4,1 | CHI05-04-03-L1-1730 | Interior - L1 ADP - COLO4 Cell 3 | Not Started | 26-Mar-25 17:00:00 | 33 | 26-Mar-25 08:00:00 |
| 753 | CHI05-PH2-FIT-BL-D5,3,3,2,3,4,2 | CHI05-04-03-L2-1740 | Interior - L2 UPS - COLO4 Cell 3 | Not Started | 04-Apr-25 17:00:00 | 33 | 31-Mar-25 08:00:00 |
| 754 | CHI05-PH2-FIT-BL-D5,3,3,2,3,4,2 | CHI05-04-03-L2-1750 | Interior - L2 MSB - COLO4 Cell 3 | Not Started | 11-Apr-25 17:00:00 | 33 | 07-Apr-25 08:00:00 |
| 755 | CHI05-PH2-FIT-BL-D5,3,3,2,3,4,2 | CHI05-04-03-L2-1760 | Interior - L2 PDUs - COLO4 Cell 3 | Not Started | 30-Apr-25 17:00:00 | 25 | 24-Apr-25 08:00:00 |
| 756 | CHI05-PH2-FIT-BL-D5,3,3,2,3,4,2 | CHI05-04-03-L2-1770 | Interior - L2 AHUs - COLO4 Cell 3 | Not Started | 14-May-25 17:00:00 | 25 | 08-May-25 08:00:00 |
| 757 | CHI05-PH2-FIT-BL-D5,3,3,2,3,4,2 | CHI05-04-03-L2-1780 | Interior - L2 ATSs - COLO4 Cell 3 | Not Started | 25-Apr-25 17:00:00 | 33 | 21-Apr-25 08:00:00 |
| 758 | CHI05-PH2-FIT-BL-D5,3,3,2,3,4,2 | CHI05-04-03-L2-1790 | Interior - L2 Busway - COLO4 Cell 3 | Not Started | 07-May-25 17:00:00 | 25 | 01-May-25 08:00:00 |
| 759 | CHI05-PH2-FIT-BL-D5,3,3,2,3,4,2 | CHI05-04-03-L2-1850 | Interior - L2 ADP - COLO4 Cell 3 | Not Started | 18-Apr-25 17:00:00 | 33 | 14-Apr-25 08:00:00 |
| 760 | CHI05-PH2-FIT-BL-D5,3,3,2,3,4,3 | CHI05-04-03-L3-1860 | Interior - L3 UPS - COLO4 Cell 3 | Not Started | 04-Apr-25 17:00:00 | 38 | 31-Mar-25 08:00:00 |
| 761 | CHI05-PH2-FIT-BL-D5,3,3,2,3,4,3 | CHI05-04-03-L3-1870 | Interior - L3 MSB - COLO4 Cell 3 | Not Started | 16-May-25 17:00:00 | 13 | 12-May-25 08:00:00 |
| 762 | CHI05-PH2-FIT-BL-D5,3,3,2,3,4,3 | CHI05-04-03-L3-1880 | Interior - L3 PDUs - COLO4 Cell 3 | Not Started | 23-May-25 17:00:00 | 18 | 19-May-25 08:00:00 |
| 763 | CHI05-PH2-FIT-BL-D5,3,3,2,3,4,3 | CHI05-04-03-L3-1890 | Interior - L3 AHUs - COLO4 Cell 3 | Not Started | 09-Jun-25 17:00:00 | 13 | 03-Jun-25 08:00:00 |
| 764 | CHI05-PH2-FIT-BL-D5,3,3,2,3,4,3 | CHI05-04-03-L3-1900 | Interior - L3 ATSs - COLO4 Cell 3 | Not Started | 02-Jun-25 17:00:00 | 13 | 27-May-25 08:00:00 |
| 765 | CHI05-PH2-FIT-BL-D5,3,3,2,3,4,3 | CHI05-04-03-L3-1910 | Interior - L3 Busway - COLO4 Cell 3 | Not Started | 09-Jun-25 17:00:00 | 13 | 03-Jun-25 08:00:00 |
| 766 | CHI05-PH2-FIT-BL-D5,3,3,2,3,4,3 | CHI05-04-03-L3-1970 | Interior - L3 ADP - COLO4 Cell 3 | Not Started | 23-May-25 17:00:00 | 13 | 19-May-25 08:00:00 |
| 767 | CHI05-PH2-FIT-BL-D5,3,3,2,2,2 | CHI05-04-04-MG-1550 | Install Dampers and actuators at Louvers - Upper level (RED) - COLO4 Cell 4 - MG | Not Started | 03-Jan-25 17:00:00 | 33 | 27-Dec-24 08:00:00 |
| 768 | CHI05-PH2-FIT-BL-D5,3,3,2,2,2 | CHI05-04-04-MG-1560 | Install Dampers and actuators at Louvers - Lower level (OA) - COLO4 Cell 4 - MG | Not Started | 07-Jan-25 17:00:00 | 33 | 31-Dec-24 08:00:00 |
| 769 | CHI05-PH2-FIT-BL-D5,3,3,2,2,2 | CHI05-04-04-MG-1570 | Overhead MEP Installation - COLO4 Cell 4 - MG | Not Started | 10-Feb-25 17:00:00 | 19 | 28-Jan-25 08:00:00 |
| 770 | CHI05-PH2-FIT-BL-D5,3,3,2,2,2 | CHI05-04-04-MG-1580 | Deliver AHU into Mech. Gallery - COLO4 Cell 4 - MG | Not Started | 12-Feb-25 17:00:00 | 19 | 11-Feb-25 08:00:00 |

| entry | activity_code | activity_id | activity_name | activity_status | finish | total_float | start |
| --- | --- | --- | --- | --- | --- | --- | --- |
| 771 | CHI05-PH2-FIT-BL-D5,3,3,2,2,2 | CHI05-04-04-MG-1590 | Install Walls and Primer Paint - COLO4 Cell 4 - MG | Not Started | 26-Feb-25 17:00:00 | 19 | 13-Feb-25 08:00:00 |
| 772 | CHI05-PH2-FIT-BL-D5,3,3,2,2,2 | CHI05-04-04-MG-1600 | Placing the AHU - COLO4 Cell 4 - MG | Not Started | 10-Mar-25 12:00:00 | 41 | 06-Mar-25 08:00:00 |
| 773 | CHI05-PH2-FIT-BL-D5,3,3,2,2,2 | CHI05-04-04-MG-1610 | Layout Ceiling and install Pencile Rod - COLO4 Cell 4 - MG | Not Started | 27-Feb-25 17:00:00 | 45 | 27-Feb-25 08:00:00 |
| 774 | CHI05-PH2-FIT-BL-D5,3,3,2,2,2 | CHI05-04-04-MG-1620 | Piping and Electrical Termination to AHUs - COLO4 Cell 4 - MG | Not Started | 24-Mar-25 12:00:00 | 58 | 10-Mar-25 13:00:00 |
| 775 | CHI05-PH2-FIT-BL-D5,3,3,2,2,2 | CHI05-04-04-MG-1630 | Pipe Testing - COLO4 Cell 4 - MG | Not Started | 26-Mar-25 12:00:00 | 58 | 24-Mar-25 13:00:00 |
| 776 | CHI05-PH2-FIT-BL-D5,3,3,2,2,2 | CHI05-04-04-MG-1640 | Install ceiling and Light Fittings - COLO4 Cell 4 - MG | Not Started | 07-Apr-25 12:00:00 | 58 | 26-Mar-25 13:00:00 |
| 777 | CHI05-PH2-FIT-BL-D5,3,3,2,2,2 | CHI05-04-04-MG-1650 | Trim out MEP - COLO4 Cell 4 - MG | Not Started | 07-Apr-25 12:00:00 | 58 | 31-Mar-25 13:00:00 |
| 778 | CHI05-PH2-FIT-BL-D5,3,3,2,2,2 | CHI05-04-04-MG-1595 | Post Wall Overhead MEP - COLO4 Cell 4 - MG | Not Started | 19-Mar-25 17:00:00 | 41 | 27-Feb-25 08:00:00 |
| 779 | CHI05-PH2-FIT-BL-D5,3,3,2,2,5 | CHI05-04-04-ER-1550 | Install Walls and Primer Paint - COLO4 Cell 4 - ER | Not Started | 28-Feb-25 17:00:00 | 0 | 17-Feb-25 08:00:00 |
| 780 | CHI05-PH2-FIT-BL-D5,3,3,2,2,5 | CHI05-04-04-ER-1560 | Sprinklers and Overhead MEP (Above Ceiling) - COLO4 Cell 4 - ER | Not Started | 18-Mar-25 17:00:00 | 0 | 05-Mar-25 08:00:00 |
| 781 | CHI05-PH2-FIT-BL-D5,3,3,2,2,5 | CHI05-04-04-ER-1570 | Install Upper Screens - COLO4 Cell 4 - ER | Not Started | 04-Mar-25 17:00:00 | 0 | 26-Feb-25 08:00:00 |
| 782 | CHI05-PH2-FIT-BL-D5,3,3,2,2,5 | CHI05-04-04-ER-1580 | Install Ceiling - COLO4 Cell 4 - ER | Not Started | 21-Mar-25 17:00:00 | 0 | 19-Mar-25 08:00:00 |
| 783 | CHI05-PH2-FIT-BL-D5,3,3,2,2,5 | CHI05-04-04-ER-1590 | Below Ceiling MEP Rough In - COLO4 Cell 4 - ER | Not Started | 04-Apr-25 17:00:00 | 0 | 24-Mar-25 08:00:00 |
| 784 | CHI05-PH2-FIT-BL-D5,3,3,2,2,5 | CHI05-04-04-ER-1600 | Installation of ADP & ATS - COLO4 Cell 4 - ER | Not Started | 28-Mar-25 17:00:00 | 23 | 24-Mar-25 08:00:00 |
| 785 | CHI05-PH2-FIT-BL-D5,3,3,2,2,5 | CHI05-04-04-ER-1610 | Installation of UPS Equipment - COLO4 Cell 4 - ER | Not Started | 04-Apr-25 17:00:00 | 0 | 31-Mar-25 08:00:00 |
| 786 | CHI05-PH2-FIT-BL-D5,3,3,2,2,5 | CHI05-04-04-ER-1620 | Connet to Cable tray and conduit equipment - COLO4 Cell 4 - ER | Not Started | 28-Mar-25 17:00:00 | 74 | 24-Mar-25 08:00:00 |
| 787 | CHI05-PH2-FIT-BL-D5,3,3,2,2,5 | CHI05-04-04-ER-1630 | Cable Pulling at Elec. Equipment - COLO4 Cell 4 - ER | Not Started | 13-May-25 17:00:00 | 57 | 23-Apr-25 08:00:00 |
| 788 | CHI05-PH2-FIT-BL-D5,3,3,2,2,5 | CHI05-04-04-ER-1640 | Door Frame Installation - COLO4 Cell 4 - ER | Not Started | 11-Apr-25 17:00:00 | 0 | 07-Apr-25 08:00:00 |
| 789 | CHI05-PH2-FIT-BL-D5,3,3,2,2,5 | CHI05-04-04-ER-1650 | Finishes and Signage - COLO4 Cell 4 - ER | Not Started | 13-May-25 17:00:00 | 57 | 07-May-25 08:00:00 |
| 790 | CHI05-PH2-FIT-BL-D5,3,3,2,2,5 | CHI05-04-04-ER-1625 | Installation of MSB - COLO4 Cell 4 - ER | Not Started | 28-Mar-25 17:00:00 | 21 | 24-Mar-25 08:00:00 |
| 791 | CHI05-PH2-FIT-BL-D5,3,3,2,2,1 | CHI05-04-04-DH-1635 | Closing Construction Access Door - COLO4 Cell 4 - DH | Not Started | 30-Apr-25 17:00:00 | 40 | 10-Apr-25 08:00:00 |
| 792 | CHI05-PH2-FIT-BL-D5,3,3,2,2,1 | CHI05-04-04-DH-1540 | Termination at PDU & Busway - COLO4 Cell 4 - DH | Not Started | 14-May-25 17:00:00 | 2 | 24-Apr-25 08:00:00 |
| 793 | CHI05-PH2-FIT-BL-D5,3,3,2,2,1 | CHI05-04-04-DH-1550 | Overhead MEP and Hangers (Above Ceiling) - COLO4 Cell 4 - DH | Not Started | 12-Mar-25 17:00:00 | 12 | 25-Feb-25 08:00:00 |
| 794 | CHI05-PH2-FIT-BL-D5,3,3,2,2,1 | CHI05-04-04-DH-1560 | HAC install and Rise - COLO4 Cell 4 - DH | Not Started | 16-Apr-25 17:00:00 | 35 | 10-Apr-25 08:00:00 |
| 795 | CHI05-PH2-FIT-BL-D5,3,3,2,2,1 | CHI05-04-04-DH-1570 | Cable Pulling at PDU & Busway- COLO4 Cell 4 - DH | Not Started | 23-Apr-25 17:00:00 | 17 | 10-Apr-25 08:00:00 |
| 796 | CHI05-PH2-FIT-BL-D5,3,3,2,2,1 | CHI05-04-04-DH-1580 | Security Screen Installation - COLO4 Cell 4 - DH | Not Started | 07-Mar-25 17:00:00 | 15 | 05-Mar-25 08:00:00 |
| 797 | CHI05-PH2-FIT-BL-D5,3,3,2,2,1 | CHI05-04-04-DH-1590 | Ceiling Grid and Tile - COLO4 Cell 4 - DH | Not Started | 19-Mar-25 17:00:00 | 12 | 13-Mar-25 08:00:00 |
| 798 | CHI05-PH2-FIT-BL-D5,3,3,2,2,1 | CHI05-04-04-DH-1600 | Install PDU's - COLO4 Cell 4 - DH | Not Started | 09-Apr-25 17:00:00 | 12 | 03-Apr-25 08:00:00 |
| 799 | CHI05-PH2-FIT-BL-D5,3,3,2,2,1 | CHI05-04-04-DH-1610 | Overhead MEP Installation (Below Ceiling) - COLO4 Cell 4 - DH | Not Started | 02-Apr-25 17:00:00 | 12 | 20-Mar-25 08:00:00 |
| 800 | CHI05-PH2-FIT-BL-D5,3,3,2,2,1 | CHI05-04-04-DH-1620 | Install Low Voltage Wiring and Fiber Optic - COLO4 Cell 4 - DH | Not Started | 30-Apr-25 17:00:00 | 35 | 17-Apr-25 08:00:00 |
| 801 | CHI05-PH2-FIT-BL-D5,3,3,2,2,1 | CHI05-04-04-DH-1630 | HAC Placing - COLO4 Cell 4 - DH | Not Started | 09-Apr-25 17:00:00 | 22 | 03-Apr-25 08:00:00 |
| 802 | CHI05-PH2-FIT-BL-D5,3,3,2,2,1 | CHI05-04-04-DH-1640 | Finishes and Signage - COLO4 Cell 4 - DH | Not Started | 14-May-25 17:00:00 | 56 | 08-May-25 08:00:00 |
| 803 | CHI05-PH2-FIT-BL-D5,3,3,2,2,4,1 | CHI05-04-04-L1-1740 | Interior - L1 UPS - COLO4 Cell 4 | Not Started | 07-Apr-25 17:00:00 | 16 | 07-Apr-25 08:00:00 |
| 804 | CHI05-PH2-FIT-BL-D5,3,3,2,2,4,1 | CHI05-04-04-L1-1750 | Interior - L1 MSB - COLO4 Cell 4 | Not Started | 07-Apr-25 17:00:00 | 16 | 07-Apr-25 08:00:00 |
| 805 | CHI05-PH2-FIT-BL-D5,3,3,2,2,4,1 | CHI05-04-04-L1-1760 | Interior - L1 PDUs - COLO4 Cell 4 | Not Started | 10-Apr-25 17:00:00 | 14 | 10-Apr-25 08:00:00 |
| 806 | CHI05-PH2-FIT-BL-D5,3,3,2,2,4,1 | CHI05-04-04-L1-1770 | Interior - L1 AHUs - COLO4 Cell 4 | Not Started | 14-Apr-25 17:00:00 | 14 | 14-Apr-25 08:00:00 |
| 807 | CHI05-PH2-FIT-BL-D5,3,3,2,2,4,1 | CHI05-04-04-L1-1780 | Interior - L1 ATSs - COLO4 Cell 4 | Not Started | 08-Apr-25 17:00:00 | 17 | 08-Apr-25 08:00:00 |
| 808 | CHI05-PH2-FIT-BL-D5,3,3,2,2,4,1 | CHI05-04-04-L1-1790 | Interior - L1 Busway - COLO4 Cell 4 | Not Started | 11-Apr-25 17:00:00 | 14 | 11-Apr-25 08:00:00 |
| 809 | CHI05-PH2-FIT-BL-D5,3,3,2,2,4,1 | CHI05-04-04-L1-1850 | Interior - L1 ADP - COLO4 Cell 4 | Not Started | 08-Apr-25 17:00:00 | 17 | 08-Apr-25 08:00:00 |
| 810 | CHI05-PH2-FIT-BL-D5,3,3,2,2,4,2 | CHI05-04-04-L2-1860 | Interior - L2 UPS - COLO4 Cell 4 | Not Started | 21-Apr-25 17:00:00 | 14 | 15-Apr-25 08:00:00 |
| 811 | CHI05-PH2-FIT-BL-D5,3,3,2,2,4,2 | CHI05-04-04-L2-1870 | Interior - L2 MSB - COLO4 Cell 4 | Not Started | 28-Apr-25 17:00:00 | 14 | 22-Apr-25 08:00:00 |
| 812 | CHI05-PH2-FIT-BL-D5,3,3,2,2,4,2 | CHI05-04-04-L2-1880 | Interior - L2 PDUs - COLO4 Cell 4 | Not Started | 21-May-25 17:00:00 | 2 | 15-May-25 08:00:00 |
| 813 | CHI05-PH2-FIT-BL-D5,3,3,2,2,4,2 | CHI05-04-04-L2-1890 | Interior - L2 AHUs - COLO4 Cell 4 | Not Started | 05-Jun-25 17:00:00 | 10 | 30-May-25 08:00:00 |
| 814 | CHI05-PH2-FIT-BL-D5,3,3,2,2,4,2 | CHI05-04-04-L2-1900 | Interior - L2 ATSs - COLO4 Cell 4 | Not Started | 12-May-25 17:00:00 | 19 | 06-May-25 08:00:00 |
| 815 | CHI05-PH2-FIT-BL-D5,3,3,2,2,4,2 | CHI05-04-04-L2-1910 | Interior - L2 Busway - COLO4 Cell 4 | Not Started | 29-May-25 17:00:00 | 10 | 22-May-25 08:00:00 |
| 816 | CHI05-PH2-FIT-BL-D5,3,3,2,2,4,2 | CHI05-04-04-L2-1970 | Interior - L2 ADP - COLO4 Cell 4 | Not Started | 05-May-25 17:00:00 | 19 | 29-Apr-25 08:00:00 |
| 817 | CHI05-PH2-FIT-BL-D5,3,3,2,2,4,3 | CHI05-04-04-L3-1980 | Interior - L3 UPS - COLO4 Cell 4 | Not Started | 16-May-25 17:00:00 | 0 | 12-May-25 08:00:00 |
| 818 | CHI05-PH2-FIT-BL-D5,3,3,2,2,4,3 | CHI05-04-04-L3-1990 | Interior - L3 MSB - COLO4 Cell 4 | Not Started | 23-May-25 17:00:00 | 0 | 19-May-25 08:00:00 |
| 819 | CHI05-PH2-FIT-BL-D5,3,3,2,2,4,3 | CHI05-04-04-L3-2000 | Interior - L3 PDUs - COLO4 Cell 4 | Not Started | 02-Jun-25 17:00:00 | 0 | 27-May-25 08:00:00 |
| 820 | CHI05-PH2-FIT-BL-D5,3,3,2,2,4,3 | CHI05-04-04-L3-2010 | Interior - L3 AHUs - COLO4 Cell 4 | Not Started | 26-Jun-25 17:00:00 | 0 | 20-Jun-25 08:00:00 |
| 821 | CHI05-PH2-FIT-BL-D5,3,3,2,2,4,3 | CHI05-04-04-L3-2020 | Interior - L3 ATSs - COLO4 Cell 4 | Not Started | 16-Jun-25 17:00:00 | 0 | 10-Jun-25 08:00:00 |
| 822 | CHI05-PH2-FIT-BL-D5,3,3,2,2,4,3 | CHI05-04-04-L3-2030 | Interior - L3 Busway - COLO4 Cell 4 | Not Started | 23-Jun-25 17:00:00 | 0 | 17-Jun-25 08:00:00 |
| 823 | CHI05-PH2-FIT-BL-D5,3,3,2,2,4,3 | CHI05-04-04-L3-2090 | Interior - L3 ADP - COLO4 Cell 4 | Not Started | 09-Jun-25 17:00:00 | 0 | 03-Jun-25 08:00:00 |
| 824 | CHI05-PH2-FIT-BL-D5,3,3,2,5,1 | CHI05-04-04-L4-1000 | Cx LEV4 - COLO4 | Not Started | 31-Jul-25 17:00:00 | 0 | 27-Jun-25 08:00:00 |
| 825 | CHI05-PH2-FIT-BL-D5,3,3,2,5,2 | CHI05-04-04-L5-1000 | Cx LEV5 / IST - COLO4 | Not Started | 04-Aug-25 17:00:00 | 0 | 01-Aug-25 08:00:00 |
| 826 | CHI05-PH2-FIT-BL-D5,3,3,3,6,2 | CHI05-05-01-MG-1330 | Install Dampers and actuators at Louvers - Upper level (RED) - COLO5 Cell 1 - MG | Not Started | 11-Oct-24 17:00:00 | 0 | 07-Oct-24 08:00:00 |
| 827 | CHI05-PH2-FIT-BL-D5,3,3,3,6,2 | CHI05-05-01-MG-1340 | Install Dampers and actuators at Louvers - Lower level (OA) - COLO5 Cell 1 - MG | Not Started | 15-Oct-24 17:00:00 | 53 | 09-Oct-24 08:00:00 |
| 828 | CHI05-PH2-FIT-BL-D5,3,3,3,6,2 | CHI05-05-01-MG-1350 | Overhead MEP Installation - COLO5 Cell 1 - MG | Not Started | 29-Oct-24 17:00:00 | 53 | 16-Oct-24 08:00:00 |
| 829 | CHI05-PH2-FIT-BL-D5,3,3,3,6,2 | CHI05-05-01-MG-1360 | Deliver AHU into Mech. Gallery - COLO5 Cell 1 - MG | Not Started | 20-Nov-24 17:00:00 | 39 | 19-Nov-24 08:00:00 |
| 830 | CHI05-PH2-FIT-BL-D5,3,3,3,6,2 | CHI05-05-01-MG-1370 | Install Walls and Primer Paint - COLO5 Cell 1 - MG | Not Started | 05-Dec-24 17:00:00 | 39 | 21-Nov-24 08:00:00 |
| 831 | CHI05-PH2-FIT-BL-D5,3,3,3,6,2 | CHI05-05-01-MG-1380 | Placing the AHU - COLO5 Cell 1 - MG | Not Started | 19-Dec-24 17:00:00 | 77 | 13-Dec-24 08:00:00 |
| 832 | CHI05-PH2-FIT-BL-D5,3,3,3,6,2 | CHI05-05-01-MG-1390 | Layout Ceiling and install Pencile Rod - COLO5 Cell 1 - MG | Not Started | 06-Dec-24 17:00:00 | 81 | 06-Dec-24 08:00:00 |
| 833 | CHI05-PH2-FIT-BL-D5,3,3,3,6,2 | CHI05-05-01-MG-1400 | Piping and Electrical Termination to AHUs - COLO5 Cell 1 - MG | Not Started | 06-Jan-25 17:00:00 | 77 | 20-Dec-24 08:00:00 |
| 834 | CHI05-PH2-FIT-BL-D5,3,3,3,6,2 | CHI05-05-01-MG-1410 | Pipe Testing - COLO5 Cell 1 - MG | Not Started | 08-Jan-25 17:00:00 | 83 | 07-Jan-25 08:00:00 |
| 835 | CHI05-PH2-FIT-BL-D5,3,3,3,6,2 | CHI05-05-01-MG-1420 | Install ceiling and Light Fittings - COLO5 Cell 1 - MG | Not Started | 20-Jan-25 17:00:00 | 83 | 09-Jan-25 08:00:00 |
| 836 | CHI05-PH2-FIT-BL-D5,3,3,3,6,2 | CHI05-05-01-MG-1430 | Trim out MEP - COLO5 Cell 1 - MG | Not Started | 27-Jan-25 17:00:00 | 87 | 21-Jan-25 08:00:00 |
| 837 | CHI05-PH2-FIT-BL-D5,3,3,3,6,2 | CHI05-05-01-MG-1375 | Post Wall Overhead MEP - COLO5 Cell 1 - MG | Not Started | 27-Dec-24 17:00:00 | 77 | 06-Dec-24 08:00:00 |
| 838 | CHI05-PH2-FIT-BL-D5,3,3,3,6,2 | CHI05-05-01-MG-1425 | Install Damper in Ceiling (RAD) - COLO 5 Cell 1 - MG | Not Started | 27-Jan-25 17:00:00 | 87 | 21-Jan-25 08:00:00 |
| 839 | CHI05-PH2-FIT-BL-D5,3,3,3,6,5 | CHI05-05-01-ER-1330 | Install Walls and Primer Paint - COLO5 Cell 1 - ER | Not Started | 15-Oct-24 17:00:00 | 58 | 02-Oct-24 08:00:00 |
| 840 | CHI05-PH2-FIT-BL-D5,3,3,3,6,5 | CHI05-05-01-ER-1340 | Sprinklers and Overhead MEP (Above Ceiling) - COLO5 Cell 1 - ER | Not Started | 05-Nov-24 17:00:00 | 58 | 23-Oct-24 08:00:00 |

| entry | activity_code | activity_id | activity_name | activity_status | finish | total_float | start |
| --- | --- | --- | --- | --- | --- | --- | --- |
| 841 | CHI05-PH2-FIT-BL-D5,3,3,3,6,5 | CHI05-05-01-ER-1350 | Install Upper Screens - COLO5 Cell 1 - ER | Not Started | 22-Oct-24 17:00:00 | 58 | 16-Oct-24 08:00:00 |
| 842 | CHI05-PH2-FIT-BL-D5,3,3,3,6,5 | CHI05-05-01-ER-1360 | Install Ceiling - COLO5 Cell 1 - ER | Not Started | 08-Nov-24 17:00:00 | 58 | 06-Nov-24 08:00:00 |
| 843 | CHI05-PH2-FIT-BL-D5,3,3,3,6,5 | CHI05-05-01-ER-1370 | Below Ceiling MEP Rough In - COLO5 Cell 1 - ER | Not Started | 22-Nov-24 17:00:00 | 58 | 11-Nov-24 08:00:00 |
| 844 | CHI05-PH2-FIT-BL-D5,3,3,3,6,5 | CHI05-05-01-ER-1380 | Installation of ADP & ATS - COLO5 Cell 1 - ER | Not Started | 05-Dec-24 17:00:00 | 87 | 29-Nov-24 08:00:00 |
| 845 | CHI05-PH2-FIT-BL-D5,3,3,3,6,5 | CHI05-05-01-ER-1390 | Installation of UPS Equipment - COLO5 Cell 1 - ER | Not Started | 02-Dec-24 17:00:00 | 73 | 25-Nov-24 08:00:00 |
| 846 | CHI05-PH2-FIT-BL-D5,3,3,3,6,5 | CHI05-05-01-ER-1400 | Connet to Cable tray and conduit equipment - COLO5 Cell 1 - ER | Not Started | 16-Dec-24 17:00:00 | 94 | 10-Dec-24 08:00:00 |
| 847 | CHI05-PH2-FIT-BL-D5,3,3,3,6,5 | CHI05-05-01-ER-1410 | Cable Pulling at Elec. Equipment - COLO5 Cell 1 - ER | Not Started | 08-Jan-25 17:00:00 | 94 | 17-Dec-24 08:00:00 |
| 848 | CHI05-PH2-FIT-BL-D5,3,3,3,6,5 | CHI05-05-01-ER-1420 | Door Frame Installation - COLO5 Cell 1 - ER | Not Started | 09-Dec-24 17:00:00 | 88 | 03-Dec-24 08:00:00 |
| 849 | CHI05-PH2-FIT-BL-D5,3,3,3,6,5 | CHI05-05-01-ER-1430 | Finishes and Signage - COLO5 Cell 1 - ER | Not Started | 10-Jan-25 17:00:00 | 109 | 06-Jan-25 08:00:00 |
| 850 | CHI05-PH2-FIT-BL-D5,3,3,3,6,5 | CHI05-05-01-ER-1385 | Installation of MSB - COLO5 Cell 1 - ER | Not Started | 12-Dec-24 17:00:00 | 81 | 06-Dec-24 08:00:00 |
| 851 | CHI05-PH2-FIT-BL-D5,3,3,3,6,1 | CHI05-05-01-DH-1320 | Cable Pulling at PDU & Busway - COLO5 Cell 1 - DH | Not Started | 16-Jan-25 17:00:00 | 44 | 26-Dec-24 08:00:00 |
| 852 | CHI05-PH2-FIT-BL-D5,3,3,3,6,1 | CHI05-05-01-DH-1330 | Overhead MEP and Hangers (Above Ceiling) - COLO5 Cell 1 - DH | Not Started | 29-Oct-24 17:00:00 | 63 | 02-Oct-24 08:00:00 |
| 853 | CHI05-PH2-FIT-BL-D5,3,3,3,6,1 | CHI05-05-01-DH-1340 | HAC install and Rise - COLO5 Cell 1 - DH | Not Started | 02-Jan-25 17:00:00 | 74 | 26-Dec-24 08:00:00 |
| 854 | CHI05-PH2-FIT-BL-D5,3,3,3,6,1 | CHI05-05-01-DH-1350 | Termination at PDU & Busway- COLO5 Cell 1 - DH | Not Started | 09-Jan-25 17:00:00 | 49 | 26-Dec-24 08:00:00 |
| 855 | CHI05-PH2-FIT-BL-D5,3,3,3,6,1 | CHI05-05-01-DH-1360 | Security Screen Installation - COLO5 Cell 1 - DH | Not Started | 25-Nov-24 17:00:00 | 44 | 21-Nov-24 08:00:00 |
| 856 | CHI05-PH2-FIT-BL-D5,3,3,3,6,1 | CHI05-05-01-DH-1370 | Ceiling Grid and Tile - COLO5 Cell 1 - DH | Not Started | 03-Dec-24 17:00:00 | 44 | 26-Nov-24 08:00:00 |
| 857 | CHI05-PH2-FIT-BL-D5,3,3,3,6,1 | CHI05-05-01-DH-1380 | Install PDU's - COLO5 Cell 1 - DH | Not Started | 24-Dec-24 17:00:00 | 44 | 18-Dec-24 08:00:00 |
| 858 | CHI05-PH2-FIT-BL-D5,3,3,3,6,1 | CHI05-05-01-DH-1390 | Overhead MEP Installation (Below Ceiling) - COLO5 Cell 1 - DH | Not Started | 17-Dec-24 17:00:00 | 44 | 04-Dec-24 08:00:00 |
| 859 | CHI05-PH2-FIT-BL-D5,3,3,3,6,1 | CHI05-05-01-DH-1400 | Install Low Voltage Wiring and Fiber Optic - COLO5 Cell 1 - DH | Not Started | 16-Jan-25 17:00:00 | 74 | 03-Jan-25 08:00:00 |
| 860 | CHI05-PH2-FIT-BL-D5,3,3,3,6,1 | CHI05-05-01-DH-1410 | HAC Placing - COLO5 Cell 1 - DH | Not Started | 24-Dec-24 17:00:00 | 74 | 18-Dec-24 08:00:00 |
| 861 | CHI05-PH2-FIT-BL-D5,3,3,3,6,1 | CHI05-05-01-DH-1420 | Finishes and Signage - COLO5 Cell 1 - DH | Not Started | 23-Jan-25 17:00:00 | 105 | 17-Jan-25 08:00:00 |
| 862 | CHI05-PH2-FIT-BL-D5,3,3,3,6,4,1 | CHI05-05-01-L1-1500 | Interior - L1 UPS - COLO5 Cell 1 | Not Started | 03-Dec-24 17:00:00 | 103 | 03-Dec-24 08:00:00 |
| 863 | CHI05-PH2-FIT-BL-D5,3,3,3,6,4,1 | CHI05-05-01-L1-1510 | Interior - L1 MSB - COLO5 Cell 1 | Not Started | 13-Dec-24 17:00:00 | 106 | 13-Dec-24 08:00:00 |
| 864 | CHI05-PH2-FIT-BL-D5,3,3,3,6,4,1 | CHI05-05-01-L1-1520 | Interior - L1 PDUs - COLO5 Cell 1 | Not Started | 26-Dec-24 17:00:00 | 103 | 26-Dec-24 08:00:00 |
| 865 | CHI05-PH2-FIT-BL-D5,3,3,3,6,4,1 | CHI05-05-01-L1-1530 | Interior - L1 AHUs - COLO5 Cell 1 | Not Started | 03-Jan-25 17:00:00 | 108 | 03-Jan-25 08:00:00 |
| 866 | CHI05-PH2-FIT-BL-D5,3,3,3,6,4,1 | CHI05-05-01-L1-1540 | Interior - L1 ATSs - COLO5 Cell 1 | Not Started | 17-Dec-24 17:00:00 | 114 | 17-Dec-24 08:00:00 |
| 867 | CHI05-PH2-FIT-BL-D5,3,3,3,6,4,1 | CHI05-05-01-L1-1550 | Interior - L1 Busway - COLO5 Cell 1 | Not Started | 27-Dec-24 17:00:00 | 107 | 27-Dec-24 08:00:00 |
| 868 | CHI05-PH2-FIT-BL-D5,3,3,3,6,4,1 | CHI05-05-01-L1-1610 | Interior - L1 ADP - COLO5 Cell 1 | Not Started | 16-Dec-24 17:00:00 | 110 | 16-Dec-24 08:00:00 |
| 869 | CHI05-PH2-FIT-BL-D5,3,3,3,6,4,2 | CHI05-05-01-L2-1620 | Interior - L2 UPS - COLO5 Cell 1 | Not Started | 03-Mar-25 17:00:00 | 52 | 25-Feb-25 08:00:00 |
| 870 | CHI05-PH2-FIT-BL-D5,3,3,3,6,4,2 | CHI05-05-01-L2-1630 | Interior - L2 MSB - COLO5 Cell 1 | Not Started | 10-Mar-25 17:00:00 | 52 | 04-Mar-25 08:00:00 |
| 871 | CHI05-PH2-FIT-BL-D5,3,3,3,6,4,2 | CHI05-05-01-L2-1640 | Interior - L2 PDUs - COLO5 Cell 1 | Not Started | 17-Mar-25 17:00:00 | 52 | 11-Mar-25 08:00:00 |
| 872 | CHI05-PH2-FIT-BL-D5,3,3,3,6,4,2 | CHI05-05-01-L2-1650 | Interior - L2 AHUs - COLO5 Cell 1 | Not Started | 31-Mar-25 17:00:00 | 52 | 25-Mar-25 08:00:00 |
| 873 | CHI05-PH2-FIT-BL-D5,3,3,3,6,4,2 | CHI05-05-01-L2-1660 | Interior - L2 ATSs - COLO5 Cell 1 | Not Started | 24-Mar-25 17:00:00 | 52 | 18-Mar-25 08:00:00 |
| 874 | CHI05-PH2-FIT-BL-D5,3,3,3,6,4,2 | CHI05-05-01-L2-1670 | Interior - L2 Busway - COLO5 Cell 1 | Not Started | 24-Mar-25 17:00:00 | 52 | 18-Mar-25 08:00:00 |
| 875 | CHI05-PH2-FIT-BL-D5,3,3,3,6,4,2 | CHI05-05-01-L2-1730 | Interior - L2 ADP - COLO5 Cell 1 | Not Started | 17-Mar-25 17:00:00 | 52 | 11-Mar-25 08:00:00 |
| 876 | CHI05-PH2-FIT-BL-D5,3,3,3,6,4,3 | CHI05-05-01-L3-1740 | Interior - L3 UPS - COLO5 Cell 1 | Not Started | 31-Mar-25 17:00:00 | 37 | 25-Mar-25 08:00:00 |
| 877 | CHI05-PH2-FIT-BL-D5,3,3,3,6,4,3 | CHI05-05-01-L3-1750 | Interior - L3 MSB - COLO5 Cell 1 | Not Started | 07-Apr-25 17:00:00 | 37 | 01-Apr-25 08:00:00 |
| 878 | CHI05-PH2-FIT-BL-D5,3,3,3,6,4,3 | CHI05-05-01-L3-1760 | Interior - L3 PDUs - COLO5 Cell 1 | Not Started | 14-Apr-25 17:00:00 | 37 | 08-Apr-25 08:00:00 |
| 879 | CHI05-PH2-FIT-BL-D5,3,3,3,6,4,3 | CHI05-05-01-L3-1770 | Interior - L3 AHUs - COLO5 Cell 1 | Not Started | 28-Apr-25 17:00:00 | 37 | 22-Apr-25 08:00:00 |
| 880 | CHI05-PH2-FIT-BL-D5,3,3,3,6,4,3 | CHI05-05-01-L3-1780 | Interior - L3 ATSs - COLO5 Cell 1 | Not Started | 21-Apr-25 17:00:00 | 37 | 15-Apr-25 08:00:00 |
| 881 | CHI05-PH2-FIT-BL-D5,3,3,3,6,4,3 | CHI05-05-01-L3-1790 | Interior - L3 Busway - COLO5 Cell 1 | Not Started | 21-Apr-25 17:00:00 | 37 | 15-Apr-25 08:00:00 |
| 882 | CHI05-PH2-FIT-BL-D5,3,3,3,6,4,3 | CHI05-05-01-L3-1850 | Interior - L3 ADP - COLO5 Cell 1 | Not Started | 14-Apr-25 17:00:00 | 37 | 08-Apr-25 08:00:00 |
| 883 | CHI05-PH2-FIT-BL-D5,3,3,3,1,2 | CHI05-05-02-MG-1440 | Install Dampers and actuators at Louvers - Upper level (RED) - COLO5 Cell 2 - MG | Not Started | 18-Oct-24 17:00:00 | 58 | 14-Oct-24 08:00:00 |
| 884 | CHI05-PH2-FIT-BL-D5,3,3,3,1,2 | CHI05-05-02-MG-1450 | Install Dampers and actuators at Louvers - Lower level (OA) - COLO5 Cell 2 - MG | Not Started | 22-Oct-24 17:00:00 | 58 | 16-Oct-24 08:00:00 |
| 885 | CHI05-PH2-FIT-BL-D5,3,3,3,1,2 | CHI05-05-02-MG-1460 | Overhead MEP Installation - COLO5 Cell 2 - MG | Not Started | 12-Nov-24 17:00:00 | 53 | 30-Oct-24 08:00:00 |
| 886 | CHI05-PH2-FIT-BL-D5,3,3,3,1,2 | CHI05-05-02-MG-1470 | Deliver AHU into Mech. Gallery - COLO5 Cell 2 - MG | Not Started | 22-Nov-24 17:00:00 | 47 | 21-Nov-24 08:00:00 |
| 887 | CHI05-PH2-FIT-BL-D5,3,3,3,1,2 | CHI05-05-02-MG-1480 | Install Walls and Primer Paint - COLO5 Cell 2 - MG | Not Started | 19-Dec-24 17:00:00 | 39 | 06-Dec-24 08:00:00 |
| 888 | CHI05-PH2-FIT-BL-D5,3,3,3,1,2 | CHI02-05-02-MG-1490 | Placing the AHU - COLO5 Cell 2 - MG | Not Started | 02-Jan-25 12:00:00 | 80 | 30-Dec-24 08:00:00 |
| 889 | CHI05-PH2-FIT-BL-D5,3,3,3,1,2 | CHI02-05-02-MG-1500 | Layout Ceiling and install Pencile Rod - COLO5 Cell 2 - MG | Not Started | 20-Dec-24 17:00:00 | 84 | 20-Dec-24 08:00:00 |
| 890 | CHI05-PH2-FIT-BL-D5,3,3,3,1,2 | CHI02-05-02-MG-1510 | Piping and Electrical Termination to AHUs - COLO5 Cell 2 - MG | Not Started | 20-Jan-25 17:00:00 | 77 | 07-Jan-25 08:00:00 |
| 891 | CHI05-PH2-FIT-BL-D5,3,3,3,1,2 | CHI05-05-02-MG-1520 | Pipe Testing - COLO5 Cell 2 - MG | Not Started | 22-Jan-25 17:00:00 | 81 | 21-Jan-25 08:00:00 |
| 892 | CHI05-PH2-FIT-BL-D5,3,3,3,1,2 | CHI05-05-02-MG-1530 | Install ceiling and Light Fittings - COLO5 Cell 2 - MG | Not Started | 03-Feb-25 17:00:00 | 81 | 23-Jan-25 08:00:00 |
| 893 | CHI05-PH2-FIT-BL-D5,3,3,3,1,2 | CHI05-05-02-MG-1540 | Trim out MEP - COLO5 Cell 2 - MG | Not Started | 03-Feb-25 17:00:00 | 87 | 28-Jan-25 08:00:00 |
| 894 | CHI05-PH2-FIT-BL-D5,3,3,3,1,2 | CHI05-05-02-MG-1485 | Post Wall Overhead MEP - COLO5 Cell 2 - MG | Not Started | 13-Jan-25 17:00:00 | 80 | 20-Dec-24 08:00:00 |
| 895 | CHI05-PH2-FIT-BL-D5,3,3,3,1,5 | CHI05-05-02-ER-1440 | Install Walls and Primer Paint - COLO5 Cell 2 - ER | Not Started | 29-Oct-24 17:00:00 | 61 | 16-Oct-24 08:00:00 |
| 896 | CHI05-PH2-FIT-BL-D5,3,3,3,1,5 | CHI05-05-02-ER-1450 | Sprinklers and Overhead MEP (Above Ceiling) - COLO5 Cell 2 - ER | Not Started | 19-Nov-24 17:00:00 | 58 | 06-Nov-24 08:00:00 |
| 897 | CHI05-PH2-FIT-BL-D5,3,3,3,1,5 | CHI02-05-02-ER-1460 | Install Upper Screens - COLO5 Cell 2 - ER | Not Started | 31-Oct-24 17:00:00 | 61 | 25-Oct-24 08:00:00 |
| 898 | CHI05-PH2-FIT-BL-D5,3,3,3,1,5 | CHI05-05-02-ER-1470 | Install Ceiling - COLO5 Cell 2 - ER | Not Started | 22-Nov-24 17:00:00 | 58 | 20-Nov-24 08:00:00 |
| 899 | CHI05-PH2-FIT-BL-D5,3,3,3,1,5 | CHI05-05-02-ER-1480 | Below Ceiling MEP Rough In - COLO5 Cell 2 - ER | Not Started | 09-Dec-24 17:00:00 | 58 | 25-Nov-24 08:00:00 |
| 900 | CHI05-PH2-FIT-BL-D5,3,3,3,1,5 | CHI05-05-02-ER-1490 | Installation of ADP & ATS - COLO5 Cell 2 - ER | Not Started | 12-Dec-24 17:00:00 | 87 | 06-Dec-24 08:00:00 |
| 901 | CHI05-PH2-FIT-BL-D5,3,3,3,1,5 | CHI05-05-02-ER-1500 | Installation of UPS Equipment - COLO5 Cell 2 - ER | Not Started | 16-Dec-24 17:00:00 | 68 | 10-Dec-24 08:00:00 |
| 902 | CHI05-PH2-FIT-BL-D5,3,3,3,1,5 | CHI05-05-02-ER-1510 | Connet to Cable tray and conduit equipment - COLO5 Cell 2 - ER | Not Started | 23-Dec-24 17:00:00 | 104 | 17-Dec-24 08:00:00 |
| 903 | CHI05-PH2-FIT-BL-D5,3,3,3,1,5 | CHI05-05-02-ER-1520 | Cable Pulling at Elec. Equipment - COLO5 Cell 2 - ER | Not Started | 29-Jan-25 17:00:00 | 94 | 09-Jan-25 08:00:00 |
| 904 | CHI05-PH2-FIT-BL-D5,3,3,3,1,5 | CHI05-05-02-ER-1530 | Door Frame Installation - COLO5 Cell 2 - ER | Not Started | 09-Jan-25 17:00:00 | 67 | 03-Jan-25 08:00:00 |
| 905 | CHI05-PH2-FIT-BL-D5,3,3,3,1,5 | CHI05-05-02-ER-1540 | Finishes and Signage - COLO5 Cell 2 - ER | Not Started | 31-Jan-25 17:00:00 | 104 | 27-Jan-25 08:00:00 |
| 906 | CHI05-PH2-FIT-BL-D5,3,3,3,1,5 | CHI05-05-02-ER-1495 | Installation of MSB - COLO5 Cell 2 - ER | Not Started | 19-Dec-24 17:00:00 | 81 | 13-Dec-24 08:00:00 |
| 907 | CHI05-PH2-FIT-BL-D5,3,3,3,1,1 | CHI05-05-02-DH-1430 | Cable Pulling at PDU & Busway - COLO5 Cell 2 - DH | Not Started | 13-Feb-25 17:00:00 | 39 | 24-Jan-25 08:00:00 |
| 908 | CHI05-PH2-FIT-BL-D5,3,3,3,1,1 | CHI05-05-02-DH-1440 | Overhead MEP and Hangers (Above Ceiling) - COLO5 Cell 2 - DH | Not Started | 14-Nov-24 17:00:00 | 66 | 30-Oct-24 08:00:00 |
| 909 | CHI05-PH2-FIT-BL-D5,3,3,3,1,1 | CHI05-05-02-DH-1450 | HAC install and Rise - COLO5 Cell 2 - DH | Not Started | 30-Jan-25 17:00:00 | 64 | 24-Jan-25 08:00:00 |
| 910 | CHI05-PH2-FIT-BL-D5,3,3,3,1,1 | CHI05-05-02-DH-1460 | Termination at PDU & Busway- COLO5 Cell 2 - DH | Not Started | 27-Feb-25 17:00:00 | 85 | 14-Feb-25 08:00:00 |

| entry | activity_code | activity_id | activity_name | activity_status | finish | total_float | start |
| --- | --- | --- | --- | --- | --- | --- | --- |
| 911 | CHI05-PH2-FIT-BL-D5,3,3,3,1,1 | CHI05-05-02-DH-1470 | Security Screen Installation - COLO5 Cell 2 - DH | Not Started | 24-Dec-24 17:00:00 | 39 | 20-Dec-24 08:00:00 |
| 912 | CHI05-PH2-FIT-BL-D5,3,3,3,1,1 | CHI05-05-02-DH-1480 | Ceiling Grid and Tile - COLO5 Cell 2 - DH | Not Started | 02-Jan-25 17:00:00 | 39 | 26-Dec-24 08:00:00 |
| 913 | CHI05-PH2-FIT-BL-D5,3,3,3,1,1 | CHI05-05-02-DH-1490 | Install PDU's - COLO5 Cell 2 - DH | Not Started | 23-Jan-25 17:00:00 | 39 | 17-Jan-25 08:00:00 |
| 914 | CHI05-PH2-FIT-BL-D5,3,3,3,1,1 | CHI05-05-02-DH-1500 | Overhead MEP Installation (Below Ceiling) - COLO5 Cell 2 - DH | Not Started | 16-Jan-25 17:00:00 | 39 | 03-Jan-25 08:00:00 |
| 915 | CHI05-PH2-FIT-BL-D5,3,3,3,1,1 | CHI05-05-02-DH-1510 | Install Low Voltage Wiring and Fiber Optic - COLO5 Cell 2 - DH | Not Started | 13-Feb-25 17:00:00 | 64 | 31-Jan-25 08:00:00 |
| 916 | CHI05-PH2-FIT-BL-D5,3,3,3,1,1 | CHI05-05-02-DH-1520 | HAC Placing - COLO5 Cell 2 - DH | Not Started | 23-Jan-25 17:00:00 | 64 | 17-Jan-25 08:00:00 |
| 917 | CHI05-PH2-FIT-BL-D5,3,3,3,1,1 | CHI05-05-02-DH-1530 | Finishes and Signage - COLO5 Cell 2 - DH | Not Started | 06-Mar-25 17:00:00 | 85 | 28-Feb-25 08:00:00 |
| 918 | CHI05-PH2-FIT-BL-D5,3,3,3,1,4,1 | CHI05-05-02-L1-1620 | Interior - L1 UPS - COLO5 Cell 2 | Not Started | 17-Dec-24 17:00:00 | 93 | 17-Dec-24 08:00:00 |
| 919 | CHI05-PH2-FIT-BL-D5,3,3,3,1,4,1 | CHI05-05-02-L1-1630 | Interior - L1 MSB - COLO5 Cell 2 | Not Started | 20-Dec-24 17:00:00 | 101 | 20-Dec-24 08:00:00 |
| 920 | CHI05-PH2-FIT-BL-D5,3,3,3,1,4,1 | CHI05-05-02-L1-1640 | Interior - L1 PDUs - COLO5 Cell 2 | Not Started | 24-Jan-25 17:00:00 | 83 | 24-Jan-25 08:00:00 |
| 921 | CHI05-PH2-FIT-BL-D5,3,3,3,1,4,1 | CHI05-05-02-L1-1650 | Interior - L1 AHUs - COLO5 Cell 2 | Not Started | 28-Jan-25 17:00:00 | 91 | 28-Jan-25 08:00:00 |
| 922 | CHI05-PH2-FIT-BL-D5,3,3,3,1,4,1 | CHI05-05-02-L1-1660 | Interior - L1 ATSs - COLO5 Cell 2 | Not Started | 24-Dec-24 17:00:00 | 109 | 24-Dec-24 08:00:00 |
| 923 | CHI05-PH2-FIT-BL-D5,3,3,3,1,4,1 | CHI05-05-02-L1-1670 | Interior - L1 Busway - COLO5 Cell 2 | Not Started | 27-Jan-25 17:00:00 | 87 | 27-Jan-25 08:00:00 |
| 924 | CHI05-PH2-FIT-BL-D5,3,3,3,1,4,1 | CHI05-05-02-L1-1730 | Interior - L1 ADP - COLO5 Cell 2 | Not Started | 23-Dec-24 17:00:00 | 105 | 23-Dec-24 08:00:00 |
| 925 | CHI05-PH2-FIT-BL-D5,3,3,3,1,4,2 | CHI05-05-02-L2-1740 | Interior - L2 UPS - COLO5 Cell 2 | Not Started | 03-Mar-25 17:00:00 | 52 | 25-Feb-25 08:00:00 |
| 926 | CHI05-PH2-FIT-BL-D5,3,3,3,1,4,2 | CHI05-05-02-L2-1750 | Interior - L2 MSB - COLO5 Cell 2 | Not Started | 10-Mar-25 17:00:00 | 52 | 04-Mar-25 08:00:00 |
| 927 | CHI05-PH2-FIT-BL-D5,3,3,3,1,4,2 | CHI05-05-02-L2-1760 | Interior - L2 PDUs - COLO5 Cell 2 | Not Started | 17-Mar-25 17:00:00 | 52 | 11-Mar-25 08:00:00 |
| 928 | CHI05-PH2-FIT-BL-D5,3,3,3,1,4,2 | CHI05-05-02-L2-1770 | Interior - L2 AHUs - COLO5 Cell 2 | Not Started | 31-Mar-25 17:00:00 | 52 | 25-Mar-25 08:00:00 |
| 929 | CHI05-PH2-FIT-BL-D5,3,3,3,1,4,2 | CHI05-05-02-L2-1780 | Interior - L2 ATSs - COLO5 Cell 2 | Not Started | 24-Mar-25 17:00:00 | 52 | 18-Mar-25 08:00:00 |
| 930 | CHI05-PH2-FIT-BL-D5,3,3,3,1,4,2 | CHI05-05-02-L2-1790 | Interior - L2 Busway - COLO5 Cell 2 | Not Started | 24-Mar-25 17:00:00 | 52 | 18-Mar-25 08:00:00 |
| 931 | CHI05-PH2-FIT-BL-D5,3,3,3,1,4,2 | CHI05-05-02-L2-1850 | Interior - L2 ADP - COLO5 Cell 2 | Not Started | 17-Mar-25 17:00:00 | 52 | 11-Mar-25 08:00:00 |
| 932 | CHI05-PH2-FIT-BL-D5,3,3,3,1,4,3 | CHI05-05-02-L3-1860 | Interior - L3 UPS - COLO5 Cell 2 | Not Started | 31-Mar-25 17:00:00 | 37 | 25-Mar-25 08:00:00 |
| 933 | CHI05-PH2-FIT-BL-D5,3,3,3,1,4,3 | CHI05-05-02-L3-1870 | Interior - L3 MSB - COLO5 Cell 2 | Not Started | 07-Apr-25 17:00:00 | 37 | 01-Apr-25 08:00:00 |
| 934 | CHI05-PH2-FIT-BL-D5,3,3,3,1,4,3 | CHI05-05-02-L3-1880 | Interior - L3 PDUs - COLO5 Cell 2 | Not Started | 14-Apr-25 17:00:00 | 37 | 08-Apr-25 08:00:00 |
| 935 | CHI05-PH2-FIT-BL-D5,3,3,3,1,4,3 | CHI05-05-02-L3-1890 | Interior - L3 AHUs - COLO5 Cell 2 | Not Started | 28-Apr-25 17:00:00 | 37 | 22-Apr-25 08:00:00 |
| 936 | CHI05-PH2-FIT-BL-D5,3,3,3,1,4,3 | CHI05-05-02-L3-1900 | Interior - L3 ATSs - COLO5 Cell 2 | Not Started | 21-Apr-25 17:00:00 | 37 | 15-Apr-25 08:00:00 |
| 937 | CHI05-PH2-FIT-BL-D5,3,3,3,1,4,3 | CHI05-05-02-L3-1910 | Interior - L3 Busway - COLO5 Cell 2 | Not Started | 21-Apr-25 17:00:00 | 37 | 15-Apr-25 08:00:00 |
| 938 | CHI05-PH2-FIT-BL-D5,3,3,3,1,4,3 | CHI05-05-02-L3-1970 | Interior - L3 ADP - COLO5 Cell 2 | Not Started | 14-Apr-25 17:00:00 | 37 | 08-Apr-25 08:00:00 |
| 939 | CHI05-PH2-FIT-BL-D5,3,3,3,3,2 | CHI05-05-03-MG-1550 | Install Dampers and actuators at Louvers - Upper level (RED) - COLO5 Cell 3 - MG | Not Started | 25-Oct-24 17:00:00 | 68 | 21-Oct-24 08:00:00 |
| 940 | CHI05-PH2-FIT-BL-D5,3,3,3,3,2 | CHI05-05-03-MG-1560 | Install Dampers and actuators at Louvers - Lower level (OA) - COLO5 Cell 3 - MG | Not Started | 29-Oct-24 17:00:00 | 68 | 23-Oct-24 08:00:00 |
| 941 | CHI05-PH2-FIT-BL-D5,3,3,3,3,2 | CHI05-05-03-MG-1570 | Overhead MEP Installation - COLO5 Cell 3 - MG | Not Started | 26-Nov-24 17:00:00 | 58 | 13-Nov-24 08:00:00 |
| 942 | CHI05-PH2-FIT-BL-D5,3,3,3,3,2 | CHI05-05-03-MG-1580 | Deliver AHU into Mech. Gallery - COLO5 Cell 3 - MG | Not Started | 29-Nov-24 17:00:00 | 58 | 27-Nov-24 08:00:00 |
| 943 | CHI05-PH2-FIT-BL-D5,3,3,3,3,2 | CHI05-05-03-MG-1590 | Install Walls and Primer Paint - COLO5 Cell 3 - MG | Not Started | 06-Jan-25 17:00:00 | 44 | 20-Dec-24 08:00:00 |
| 944 | CHI05-PH2-FIT-BL-D5,3,3,3,3,2 | CHI05-05-03-MG-1600 | Placing the AHU - COLO5 Cell 3 - MG | Not Started | 16-Jan-25 12:00:00 | 77 | 14-Jan-25 08:00:00 |
| 945 | CHI05-PH2-FIT-BL-D5,3,3,3,3,2 | CHI05-05-03-MG-1610 | Layout Ceiling and install Pencile Rod - COLO5 Cell 3 - MG | Not Started | 07-Jan-25 17:00:00 | 81 | 07-Jan-25 08:00:00 |
| 946 | CHI05-PH2-FIT-BL-D5,3,3,3,3,2 | CHI05-05-03-MG-1620 | Piping and Electrical Termination to AHUs - COLO5 Cell 3 - MG | Not Started | 03-Feb-25 17:00:00 | 77 | 21-Jan-25 08:00:00 |
| 947 | CHI05-PH2-FIT-BL-D5,3,3,3,3,2 | CHI05-05-03-MG-1630 | Pipe Testing - COLO5 Cell 3 - MG | Not Started | 05-Feb-25 17:00:00 | 79 | 04-Feb-25 08:00:00 |
| 948 | CHI05-PH2-FIT-BL-D5,3,3,3,3,2 | CHI05-05-03-MG-1640 | Install ceiling and Light Fittings - COLO5 Cell 3 - MG | Not Started | 17-Feb-25 17:00:00 | 79 | 06-Feb-25 08:00:00 |
| 949 | CHI05-PH2-FIT-BL-D5,3,3,3,3,2 | CHI05-05-03-MG-1650 | Trim out MEP - COLO5 Cell 3 - MG | Not Started | 17-Feb-25 17:00:00 | 82 | 11-Feb-25 08:00:00 |
| 950 | CHI05-PH2-FIT-BL-D5,3,3,3,3,2 | CHI05-05-03-MG-1595 | Post Wall Overhead MEP - COLO5 Cell 3 - MG | Not Started | 27-Jan-25 17:00:00 | 77 | 07-Jan-25 08:00:00 |
| 951 | CHI05-PH2-FIT-BL-D5,3,3,3,3,5 | CHI05-05-03-ER-1550 | Install Walls and Primer Paint - COLO5 Cell 3 - ER | Not Started | 12-Nov-24 17:00:00 | 61 | 30-Oct-24 08:00:00 |
| 952 | CHI05-PH2-FIT-BL-D5,3,3,3,3,5 | CHI05-05-03-ER-1560 | Sprinklers and Overhead MEP (Above Ceiling) - COLO5 Cell 3 - ER | Not Started | 04-Dec-24 17:00:00 | 58 | 20-Nov-24 08:00:00 |
| 953 | CHI05-PH2-FIT-BL-D5,3,3,3,3,5 | CHI05-05-03-ER-1570 | Install Upper Screens - COLO5 Cell 3 - ER | Not Started | 14-Nov-24 17:00:00 | 61 | 08-Nov-24 08:00:00 |
| 954 | CHI05-PH2-FIT-BL-D5,3,3,3,3,5 | CHI05-05-03-ER-1580 | Install Ceiling - COLO5 Cell 3 - ER | Not Started | 09-Dec-24 17:00:00 | 58 | 05-Dec-24 08:00:00 |
| 955 | CHI05-PH2-FIT-BL-D5,3,3,3,3,5 | CHI05-05-03-ER-1590 | Below Ceiling MEP Rough In - COLO5 Cell 3 - ER | Not Started | 23-Dec-24 17:00:00 | 58 | 10-Dec-24 08:00:00 |
| 956 | CHI05-PH2-FIT-BL-D5,3,3,3,3,5 | CHI05-05-03-ER-1600 | Installation of ADP & ATS - COLO5 Cell 3 - ER | Not Started | 19-Dec-24 17:00:00 | 87 | 13-Dec-24 08:00:00 |
| 957 | CHI05-PH2-FIT-BL-D5,3,3,3,3,5 | CHI05-05-03-ER-1610 | Installation of UPS Equipment - COLO5 Cell 3 - ER | Not Started | 31-Dec-24 17:00:00 | 63 | 24-Dec-24 08:00:00 |
| 958 | CHI05-PH2-FIT-BL-D5,3,3,3,3,5 | CHI05-05-03-ER-1620 | Connet to Cable tray and conduit equipment - COLO5 Cell 3 - ER | Not Started | 31-Dec-24 17:00:00 | 114 | 24-Dec-24 08:00:00 |
| 959 | CHI05-PH2-FIT-BL-D5,3,3,3,3,5 | CHI05-05-03-ER-1630 | Cable Pulling at Elec. Equipment - COLO5 Cell 3 - ER | Not Started | 19-Feb-25 17:00:00 | 94 | 30-Jan-25 08:00:00 |
| 960 | CHI05-PH2-FIT-BL-D5,3,3,3,3,5 | CHI05-05-03-ER-1640 | Door Frame Installation - COLO5 Cell 3 - ER | Not Started | 09-Jan-25 17:00:00 | 67 | 03-Jan-25 08:00:00 |
| 961 | CHI05-PH2-FIT-BL-D5,3,3,3,3,5 | CHI05-05-03-ER-1650 | Finishes and Signage - COLO5 Cell 3 - ER | Not Started | 13-Mar-25 17:00:00 | 85 | 07-Mar-25 08:00:00 |
| 962 | CHI05-PH2-FIT-BL-D5,3,3,3,3,5 | CHI05-05-03-ER-1605 | Installation of MSB - COLO5 Cell 3 - ER | Not Started | 27-Dec-24 17:00:00 | 81 | 20-Dec-24 08:00:00 |
| 963 | CHI05-PH2-FIT-BL-D5,3,3,3,3,1 | CHI05-05-03-DH-1540 | Termination at PDU & Busway - COLO5 Cell 3 - DH | Not Started | 06-Mar-25 17:00:00 | 39 | 14-Feb-25 08:00:00 |
| 964 | CHI05-PH2-FIT-BL-D5,3,3,3,3,1 | CHI05-05-03-DH-1550 | Overhead MEP and Hangers (Above Ceiling) - COLO5 Cell 3 - DH | Not Started | 03-Dec-24 17:00:00 | 69 | 15-Nov-24 08:00:00 |
| 965 | CHI05-PH2-FIT-BL-D5,3,3,3,3,1 | CHI05-05-03-DH-1560 | HAC install and Rise - COLO5 Cell 3 - DH | Not Started | 13-Feb-25 17:00:00 | 64 | 07-Feb-25 08:00:00 |
| 966 | CHI05-PH2-FIT-BL-D5,3,3,3,3,1 | CHI05-05-03-DH-1570 | Cable Pulling at PDU & Busway- COLO5 Cell 3 - DH | Not Started | 20-Feb-25 17:00:00 | 49 | 07-Feb-25 08:00:00 |
| 967 | CHI05-PH2-FIT-BL-D5,3,3,3,3,1 | CHI05-05-03-DH-1580 | Security Screen Installation - COLO5 Cell 3 - DH | Not Started | 09-Jan-25 17:00:00 | 44 | 07-Jan-25 08:00:00 |
| 968 | CHI05-PH2-FIT-BL-D5,3,3,3,3,1 | CHI05-05-03-DH-1590 | Ceiling Grid and Tile - COLO5 Cell 3 - DH | Not Started | 16-Jan-25 17:00:00 | 44 | 10-Jan-25 08:00:00 |
| 969 | CHI05-PH2-FIT-BL-D5,3,3,3,3,1 | CHI05-05-03-DH-1600 | Install PDU's - COLO5 Cell 3 - DH | Not Started | 06-Feb-25 17:00:00 | 44 | 31-Jan-25 08:00:00 |
| 970 | CHI05-PH2-FIT-BL-D5,3,3,3,3,1 | CHI05-05-03-DH-1610 | Overhead MEP Installation (Below Ceiling) - COLO5 Cell 3 - DH | Not Started | 30-Jan-25 17:00:00 | 44 | 17-Jan-25 08:00:00 |
| 971 | CHI05-PH2-FIT-BL-D5,3,3,3,3,1 | CHI05-05-03-DH-1620 | Install Low Voltage Wiring and Fiber Optic - COLO5 Cell 3 - DH | Not Started | 27-Feb-25 17:00:00 | 64 | 14-Feb-25 08:00:00 |
| 972 | CHI05-PH2-FIT-BL-D5,3,3,3,3,1 | CHI05-05-03-DH-1630 | HAC Placing - COLO5 Cell 3 - DH | Not Started | 06-Feb-25 17:00:00 | 64 | 31-Jan-25 08:00:00 |
| 973 | CHI05-PH2-FIT-BL-D5,3,3,3,3,1 | CHI05-05-03-DH-1640 | Finishes and Signage - COLO5 Cell 3 - DH | Not Started | 20-Mar-25 17:00:00 | 85 | 14-Mar-25 08:00:00 |
| 974 | CHI05-PH2-FIT-BL-D5,3,3,3,3,4,1 | CHI05-05-03-L1-1740 | Interior - L1 UPS - COLO5 Cell 3 | Not Started | 02-Jan-25 17:00:00 | 83 | 02-Jan-25 08:00:00 |
| 975 | CHI05-PH2-FIT-BL-D5,3,3,3,3,4,1 | CHI05-05-03-L1-1750 | Interior - L1 MSB - COLO5 Cell 3 | Not Started | 03-Jan-25 17:00:00 | 93 | 03-Jan-25 08:00:00 |
| 976 | CHI05-PH2-FIT-BL-D5,3,3,3,3,4,1 | CHI05-05-03-L1-1760 | Interior - L1 PDUs - COLO5 Cell 3 | Not Started | 07-Feb-25 17:00:00 | 73 | 07-Feb-25 08:00:00 |
| 977 | CHI05-PH2-FIT-BL-D5,3,3,3,3,4,1 | CHI05-05-03-L1-1770 | Interior - L1 AHUs - COLO5 Cell 3 | Not Started | 11-Feb-25 17:00:00 | 81 | 11-Feb-25 08:00:00 |
| 978 | CHI05-PH2-FIT-BL-D5,3,3,3,3,4,1 | CHI05-05-03-L1-1780 | Interior - L1 ATSs - COLO5 Cell 3 | Not Started | 07-Jan-25 17:00:00 | 101 | 07-Jan-25 08:00:00 |
| 979 | CHI05-PH2-FIT-BL-D5,3,3,3,3,4,1 | CHI05-05-03-L1-1790 | Interior - L1 Busway - COLO5 Cell 3 | Not Started | 10-Feb-25 17:00:00 | 77 | 10-Feb-25 08:00:00 |
| 980 | CHI05-PH2-FIT-BL-D5,3,3,3,3,4,1 | CHI05-05-03-L1-1850 | Interior - L1 ADP - COLO5 Cell 3 | Not Started | 06-Jan-25 17:00:00 | 97 | 06-Jan-25 08:00:00 |

| entry | activity_code | activity_id | activity_name | activity_status | finish | total_float | start |
| --- | --- | --- | --- | --- | --- | --- | --- |
| 981 | CHI05-PH2-FIT-BL-D5,3,3,3,3,4,2 | CHI05-05-03-L2-1860 | Interior - L2 UPS - COLO5 Cell 3 | Not Started | 03-Mar-25 17:00:00 | 52 | 25-Feb-25 08:00:00 |
| 982 | CHI05-PH2-FIT-BL-D5,3,3,3,3,4,2 | CHI05-05-03-L2-1870 | Interior - L2 MSB - COLO5 Cell 3 | Not Started | 10-Mar-25 17:00:00 | 52 | 04-Mar-25 08:00:00 |
| 983 | CHI05-PH2-FIT-BL-D5,3,3,3,3,4,2 | CHI05-05-03-L2-1880 | Interior - L2 PDUs - COLO5 Cell 3 | Not Started | 17-Mar-25 17:00:00 | 52 | 11-Mar-25 08:00:00 |
| 984 | CHI05-PH2-FIT-BL-D5,3,3,3,3,4,2 | CHI05-05-03-L2-1890 | Interior - L2 AHUs - COLO5 Cell 3 | Not Started | 31-Mar-25 17:00:00 | 52 | 25-Mar-25 08:00:00 |
| 985 | CHI05-PH2-FIT-BL-D5,3,3,3,3,4,2 | CHI05-05-03-L2-1900 | Interior - L2 ATSs - COLO5 Cell 3 | Not Started | 24-Mar-25 17:00:00 | 52 | 18-Mar-25 08:00:00 |
| 986 | CHI05-PH2-FIT-BL-D5,3,3,3,3,4,2 | CHI05-05-03-L2-1910 | Interior - L2 Busway - COLO5 Cell 3 | Not Started | 24-Mar-25 17:00:00 | 52 | 18-Mar-25 08:00:00 |
| 987 | CHI05-PH2-FIT-BL-D5,3,3,3,3,4,2 | CHI05-05-03-L2-1970 | Interior - L2 ADP - COLO5 Cell 3 | Not Started | 17-Mar-25 17:00:00 | 52 | 11-Mar-25 08:00:00 |
| 988 | CHI05-PH2-FIT-BL-D5,3,3,3,3,4,3 | CHI05-05-03-L3-1980 | Interior - L3 UPS - COLO5 Cell 3 | Not Started | 31-Mar-25 17:00:00 | 37 | 25-Mar-25 08:00:00 |
| 989 | CHI05-PH2-FIT-BL-D5,3,3,3,3,4,3 | CHI05-05-03-L3-1990 | Interior - L3 MSB - COLO5 Cell 3 | Not Started | 07-Apr-25 17:00:00 | 37 | 01-Apr-25 08:00:00 |
| 990 | CHI05-PH2-FIT-BL-D5,3,3,3,3,4,3 | CHI05-05-03-L3-2000 | Interior - L3 PDUs - COLO5 Cell 3 | Not Started | 14-Apr-25 17:00:00 | 37 | 08-Apr-25 08:00:00 |
| 991 | CHI05-PH2-FIT-BL-D5,3,3,3,3,4,3 | CHI05-05-03-L3-2010 | Interior - L3 AHUs - COLO5 Cell 3 | Not Started | 28-Apr-25 17:00:00 | 37 | 22-Apr-25 08:00:00 |
| 992 | CHI05-PH2-FIT-BL-D5,3,3,3,3,4,3 | CHI05-05-03-L3-2020 | Interior - L3 ATSs - COLO5 Cell 3 | Not Started | 21-Apr-25 17:00:00 | 37 | 15-Apr-25 08:00:00 |
| 993 | CHI05-PH2-FIT-BL-D5,3,3,3,3,4,3 | CHI05-05-03-L3-2030 | Interior - L3 Busway - COLO5 Cell 3 | Not Started | 21-Apr-25 17:00:00 | 37 | 15-Apr-25 08:00:00 |
| 994 | CHI05-PH2-FIT-BL-D5,3,3,3,3,4,3 | CHI05-05-03-L3-2090 | Interior - L3 ADP - COLO5 Cell 3 | Not Started | 14-Apr-25 17:00:00 | 37 | 08-Apr-25 08:00:00 |
| 995 | CHI05-PH2-FIT-BL-D5,3,3,3,2,2 | CHI05-05-04-MG-1660 | Install Dampers and actuators at Louvers - Upper level (RED) - COLO5 Cell 4 - MG | Not Started | 01-Nov-24 17:00:00 | 73 | 28-Oct-24 08:00:00 |
| 996 | CHI05-PH2-FIT-BL-D5,3,3,3,2,2 | CHI05-05-04-MG-1670 | Install Dampers and actuators at Louvers - Lower level (OA) - COLO5 Cell 4 - MG | Not Started | 05-Nov-24 17:00:00 | 78 | 30-Oct-24 08:00:00 |
| 997 | CHI05-PH2-FIT-BL-D5,3,3,3,2,2 | CHI05-05-04-MG-1680 | Overhead MEP Installation - COLO5 Cell 4 - MG | Not Started | 11-Dec-24 17:00:00 | 63 | 27-Nov-24 08:00:00 |
| 998 | CHI05-PH2-FIT-BL-D5,3,3,3,2,2 | CHI05-05-04-MG-1690 | Deliver AHU into Mech. Gallery - COLO5 Cell 4 - MG | Not Started | 13-Dec-24 17:00:00 | 63 | 12-Dec-24 08:00:00 |
| 999 | CHI05-PH2-FIT-BL-D5,3,3,3,2,2 | CHI05-05-04-MG-1700 | Install Walls and Primer Paint - COLO5 Cell 4 - MG | Not Started | 20-Jan-25 17:00:00 | 49 | 07-Jan-25 08:00:00 |
| 1000 | CHI05-PH2-FIT-BL-D5,3,3,3,2,2 | CHI05-05-04-MG-1710 | Placing the AHU - COLO5 Cell 4 - MG | Not Started | 30-Jan-25 12:00:00 | 69 | 28-Jan-25 08:00:00 |
| 1001 | CHI05-PH2-FIT-BL-D5,3,3,3,2,2 | CHI05-05-04-MG-1720 | Layout Ceiling and install Pencile Rod - COLO5 Cell 4 - MG | Not Started | 21-Jan-25 17:00:00 | 73 | 21-Jan-25 08:00:00 |
| 1002 | CHI05-PH2-FIT-BL-D5,3,3,3,2,2 | CHI05-05-04-MG-1730 | Piping and Electrical Termination to AHUs - COLO5 Cell 4 - MG | Not Started | 17-Feb-25 17:00:00 | 77 | 04-Feb-25 08:00:00 |
| 1003 | CHI05-PH2-FIT-BL-D5,3,3,3,2,2 | CHI05-05-04-MG-1740 | Pipe Testing - COLO5 Cell 4 - MG | Not Started | 19-Feb-25 17:00:00 | 77 | 18-Feb-25 08:00:00 |
| 1004 | CHI05-PH2-FIT-BL-D5,3,3,3,2,2 | CHI05-05-04-MG-1750 | Install ceiling and Light Fittings - COLO5 Cell 4 - MG | Not Started | 03-Mar-25 17:00:00 | 77 | 20-Feb-25 08:00:00 |
| 1005 | CHI05-PH2-FIT-BL-D5,3,3,3,2,2 | CHI05-05-04-MG-1760 | Trim out MEP - COLO5 Cell 4 - MG | Not Started | 03-Mar-25 17:00:00 | 77 | 25-Feb-25 08:00:00 |
| 1006 | CHI05-PH2-FIT-BL-D5,3,3,3,2,2 | CHI05-05-04-MG-1705 | Post Wall Overhead MEP - COLO5 Cell 4 - MG | Not Started | 10-Feb-25 17:00:00 | 69 | 21-Jan-25 08:00:00 |
| 1007 | CHI05-PH2-FIT-BL-D5,3,3,3,2,5 | CHI05-05-04-ER-1660 | Install Walls and Primer Paint - COLO5 Cell 4 - ER | Not Started | 26-Nov-24 17:00:00 | 61 | 13-Nov-24 08:00:00 |
| 1008 | CHI05-PH2-FIT-BL-D5,3,3,3,2,5 | CHI05-05-04-ER-1670 | Sprinklers and Overhead MEP (Above Ceiling) - COLO5 Cell 4 - ER | Not Started | 18-Dec-24 17:00:00 | 58 | 05-Dec-24 08:00:00 |
| 1009 | CHI05-PH2-FIT-BL-D5,3,3,3,2,5 | CHI05-05-04-ER-1680 | Install Upper Screens - COLO5 Cell 4 - ER | Not Started | 29-Nov-24 17:00:00 | 61 | 22-Nov-24 08:00:00 |
| 1010 | CHI05-PH2-FIT-BL-D5,3,3,3,2,5 | CHI05-05-04-ER-1690 | Install Ceiling - COLO5 Cell 4 - ER | Not Started | 23-Dec-24 17:00:00 | 58 | 19-Dec-24 08:00:00 |
| 1011 | CHI05-PH2-FIT-BL-D5,3,3,3,2,5 | CHI05-05-04-ER-1700 | Below Ceiling MEP Rough In - COLO5 Cell 4 - ER | Not Started | 08-Jan-25 17:00:00 | 58 | 24-Dec-24 08:00:00 |
| 1012 | CHI05-PH2-FIT-BL-D5,3,3,3,2,5 | CHI05-05-04-ER-1710 | Installation of ADP & ATS - COLO5 Cell 4 - ER | Not Started | 03-Jan-25 17:00:00 | 83 | 27-Dec-24 08:00:00 |
| 1013 | CHI05-PH2-FIT-BL-D5,3,3,3,2,5 | CHI05-05-04-ER-1720 | Installation of UPS Equipment - COLO5 Cell 4 - ER | Not Started | 15-Jan-25 17:00:00 | 58 | 09-Jan-25 08:00:00 |
| 1014 | CHI05-PH2-FIT-BL-D5,3,3,3,2,5 | CHI05-05-04-ER-1730 | Connet to Cable tray and conduit equipment - COLO5 Cell 4 - ER | Not Started | 08-Jan-25 17:00:00 | 124 | 02-Jan-25 08:00:00 |
| 1015 | CHI05-PH2-FIT-BL-D5,3,3,3,2,5 | CHI05-05-04-ER-1740 | Cable Pulling at Elec. Equipment - COLO5 Cell 4 - ER | Not Started | 12-Mar-25 17:00:00 | 94 | 20-Feb-25 08:00:00 |
| 1016 | CHI05-PH2-FIT-BL-D5,3,3,3,2,5 | CHI05-05-04-ER-1750 | Door Frame Installation - COLO5 Cell 4 - ER | Not Started | 22-Jan-25 17:00:00 | 58 | 16-Jan-25 08:00:00 |
| 1017 | CHI05-PH2-FIT-BL-D5,3,3,3,2,5 | CHI05-05-04-ER-1760 | Finishes and Signage - COLO5 Cell 4 - ER | Not Started | 27-Mar-25 17:00:00 | 85 | 21-Mar-25 08:00:00 |
| 1018 | CHI05-PH2-FIT-BL-D5,3,3,3,2,5 | CHI05-05-04-ER-1715 | Installation of MSB - COLO5 Cell 4 - ER | Not Started | 06-Jan-25 17:00:00 | 81 | 30-Dec-24 08:00:00 |
| 1019 | CHI05-PH2-FIT-BL-D5,3,3,3,2,1 | CHI05-05-04-DH-1745 | Closing Construction Access Door - COLO5 Cell 4 - DH | Not Started | 13-Mar-25 17:00:00 | 69 | 21-Feb-25 08:00:00 |
| 1020 | CHI05-PH2-FIT-BL-D5,3,3,3,2,1 | CHI05-05-04-DH-1650 | Termination at PDU & Busway - COLO5 Cell 4 - DH | Not Started | 27-Mar-25 17:00:00 | 39 | 07-Mar-25 08:00:00 |
| 1021 | CHI05-PH2-FIT-BL-D5,3,3,3,2,1 | CHI05-05-04-DH-1660 | Overhead MEP and Hangers (Above Ceiling) - COLO5 Cell 4 - DH | Not Started | 19-Dec-24 17:00:00 | 72 | 04-Dec-24 08:00:00 |
| 1022 | CHI05-PH2-FIT-BL-D5,3,3,3,2,1 | CHI05-05-04-DH-1670 | HAC install and Rise - COLO5 Cell 4 - DH | Not Started | 27-Feb-25 17:00:00 | 64 | 21-Feb-25 08:00:00 |
| 1023 | CHI05-PH2-FIT-BL-D5,3,3,3,2,1 | CHI05-05-04-DH-1680 | Cable Pulling at PDU & Busway- COLO5 Cell 4 - DH | Not Started | 06-Mar-25 17:00:00 | 54 | 21-Feb-25 08:00:00 |
| 1024 | CHI05-PH2-FIT-BL-D5,3,3,3,2,1 | CHI05-05-04-DH-1690 | Security Screen Installation - COLO5 Cell 4 - DH | Not Started | 23-Jan-25 17:00:00 | 49 | 21-Jan-25 08:00:00 |
| 1025 | CHI05-PH2-FIT-BL-D5,3,3,3,2,1 | CHI05-05-04-DH-1700 | Ceiling Grid and Tile - COLO5 Cell 4 - DH | Not Started | 30-Jan-25 17:00:00 | 49 | 24-Jan-25 08:00:00 |
| 1026 | CHI05-PH2-FIT-BL-D5,3,3,3,2,1 | CHI05-05-04-DH-1710 | Install PDU's - COLO5 Cell 4 - DH | Not Started | 20-Feb-25 17:00:00 | 49 | 14-Feb-25 08:00:00 |
| 1027 | CHI05-PH2-FIT-BL-D5,3,3,3,2,1 | CHI05-05-04-DH-1720 | Overhead MEP Installation (Below Ceiling) - COLO5 Cell 4 - DH | Not Started | 13-Feb-25 17:00:00 | 49 | 31-Jan-25 08:00:00 |
| 1028 | CHI05-PH2-FIT-BL-D5,3,3,3,2,1 | CHI05-05-04-DH-1730 | Install Low Voltage Wiring and Fiber Optic - COLO5 Cell 4 - DH | Not Started | 13-Mar-25 17:00:00 | 64 | 28-Feb-25 08:00:00 |
| 1029 | CHI05-PH2-FIT-BL-D5,3,3,3,2,1 | CHI05-05-04-DH-1740 | HAC Placing - COLO5 Cell 4 - DH | Not Started | 20-Feb-25 17:00:00 | 64 | 14-Feb-25 08:00:00 |
| 1030 | CHI05-PH2-FIT-BL-D5,3,3,3,2,1 | CHI05-05-04-DH-1750 | Finishes and Signage - COLO5 Cell 4 - DH | Not Started | 03-Apr-25 17:00:00 | 85 | 28-Mar-25 08:00:00 |
| 1031 | CHI05-PH2-FIT-BL-D5,3,3,3,2,4,1 | CHI05-05-04-L1-1860 | Interior - L1 UPS - COLO5 Cell 4 | Not Started | 02-Jan-25 17:00:00 | 83 | 02-Jan-25 08:00:00 |
| 1032 | CHI05-PH2-FIT-BL-D5,3,3,3,2,4,1 | CHI05-05-04-L1-1870 | Interior - L1 MSB - COLO5 Cell 4 | Not Started | 07-Jan-25 17:00:00 | 81 | 07-Jan-25 08:00:00 |
| 1033 | CHI05-PH2-FIT-BL-D5,3,3,3,2,4,1 | CHI05-05-04-L1-1880 | Interior - L1 PDUs - COLO5 Cell 4 | Not Started | 21-Feb-25 17:00:00 | 49 | 21-Feb-25 08:00:00 |
| 1034 | CHI05-PH2-FIT-BL-D5,3,3,3,2,4,1 | CHI05-05-04-L1-1890 | Interior - L1 AHUs - COLO5 Cell 4 | Not Started | 25-Feb-25 17:00:00 | 49 | 25-Feb-25 08:00:00 |
| 1035 | CHI05-PH2-FIT-BL-D5,3,3,3,2,4,1 | CHI05-05-04-L1-1900 | Interior - L1 ATSs - COLO5 Cell 4 | Not Started | 09-Jan-25 17:00:00 | 81 | 09-Jan-25 08:00:00 |
| 1036 | CHI05-PH2-FIT-BL-D5,3,3,3,2,4,1 | CHI05-05-04-L1-1910 | Interior - L1 Busway - COLO5 Cell 4 | Not Started | 24-Feb-25 17:00:00 | 49 | 24-Feb-25 08:00:00 |
| 1037 | CHI05-PH2-FIT-BL-D5,3,3,3,2,4,1 | CHI05-05-04-L1-1970 | Interior - L1 ADP - COLO5 Cell 4 | Not Started | 08-Jan-25 17:00:00 | 81 | 08-Jan-25 08:00:00 |
| 1038 | CHI05-PH2-FIT-BL-D5,3,3,3,2,4,2 | CHI05-05-04-L2-1980 | Interior - L2 UPS - COLO5 Cell 4 | Not Started | 04-Mar-25 17:00:00 | 49 | 26-Feb-25 08:00:00 |
| 1039 | CHI05-PH2-FIT-BL-D5,3,3,3,2,4,2 | CHI05-05-04-L2-1990 | Interior - L2 MSB - COLO5 Cell 4 | Not Started | 11-Mar-25 17:00:00 | 49 | 05-Mar-25 08:00:00 |
| 1040 | CHI05-PH2-FIT-BL-D5,3,3,3,2,4,2 | CHI05-05-04-L2-2000 | Interior - L2 PDUs - COLO5 Cell 4 | Not Started | 03-Apr-25 17:00:00 | 39 | 28-Mar-25 08:00:00 |
| 1041 | CHI05-PH2-FIT-BL-D5,3,3,3,2,4,2 | CHI05-05-04-L2-2010 | Interior - L2 AHUs - COLO5 Cell 4 | Not Started | 17-Apr-25 17:00:00 | 39 | 11-Apr-25 08:00:00 |
| 1042 | CHI05-PH2-FIT-BL-D5,3,3,3,2,4,2 | CHI05-05-04-L2-2020 | Interior - L2 ATSs - COLO5 Cell 4 | Not Started | 25-Mar-25 17:00:00 | 49 | 19-Mar-25 08:00:00 |
| 1043 | CHI05-PH2-FIT-BL-D5,3,3,3,2,4,2 | CHI05-05-04-L2-2030 | Interior - L2 Busway - COLO5 Cell 4 | Not Started | 10-Apr-25 17:00:00 | 39 | 04-Apr-25 08:00:00 |
| 1044 | CHI05-PH2-FIT-BL-D5,3,3,3,2,4,2 | CHI05-05-04-L2-2090 | Interior - L2 ADP - COLO5 Cell 4 | Not Started | 18-Mar-25 17:00:00 | 49 | 12-Mar-25 08:00:00 |
| 1045 | CHI05-PH2-FIT-BL-D5,3,3,3,2,4,3 | CHI05-05-04-L3-2100 | Interior - L3 UPS - COLO5 Cell 4 | Not Started | 31-Mar-25 17:00:00 | 35 | 25-Mar-25 08:00:00 |
| 1046 | CHI05-PH2-FIT-BL-D5,3,3,3,2,4,3 | CHI05-05-04-L3-2110 | Interior - L3 MSB - COLO5 Cell 4 | Not Started | 07-Apr-25 17:00:00 | 35 | 01-Apr-25 08:00:00 |
| 1047 | CHI05-PH2-FIT-BL-D5,3,3,3,2,4,3 | CHI05-05-04-L3-2120 | Interior - L3 PDUs - COLO5 Cell 4 | Not Started | 14-Apr-25 17:00:00 | 40 | 08-Apr-25 08:00:00 |
| 1048 | CHI05-PH2-FIT-BL-D5,3,3,3,2,4,3 | CHI05-05-04-L3-2130 | Interior - L3 AHUs - COLO5 Cell 4 | Not Started | 30-Apr-25 17:00:00 | 35 | 24-Apr-25 08:00:00 |
| 1049 | CHI05-PH2-FIT-BL-D5,3,3,3,2,4,3 | CHI05-05-04-L3-2140 | Interior - L3 ATSs - COLO5 Cell 4 | Not Started | 21-Apr-25 17:00:00 | 35 | 15-Apr-25 08:00:00 |
| 1050 | CHI05-PH2-FIT-BL-D5,3,3,3,2,4,3 | CHI05-05-04-L3-2150 | Interior - L3 Busway - COLO5 Cell 4 | Not Started | 28-Apr-25 17:00:00 | 35 | 22-Apr-25 08:00:00 |

| entry | activity_code | activity_id | activity_name | activity_status | finish | total_float | start |
| --- | --- | --- | --- | --- | --- | --- | --- |
| 1051 | CHI05-PH2-FIT-BL-D5,3,3,3,2,4,3 | CHI05-05-04-L3-2210 | Interior - L3 ADP - COLO5 Cell 4 | Not Started | 14-Apr-25 17:00:00 | 35 | 08-Apr-25 08:00:00 |
| 1052 | CHI05-PH2-FIT-BL-D5,3,3,3,5,1 | CHI05-05-04-L4-1000 | COLO5 Cx LEV4 - COLO5 | Not Started | 04-Jun-25 17:00:00 | 35 | 01-May-25 08:00:00 |
| 1053 | CHI05-PH2-FIT-BL-D5,3,3,3,5,2 | CHI05-05-04-L5-1000 | COLO5 Cx LEV5 / IST - COLO5 | Not Started | 06-Jun-25 17:00:00 | 35 | 05-Jun-25 08:00:00 |
| 1054 | CHI05-PH2-FIT-BL-D5,3,3,6,1 | CHI05-02-01-L1-1220 | L1 UPM - COLO2 | Not Started | 27-Nov-24 17:00:00 | 75 | 22-Nov-24 08:00:00 |
| 1055 | CHI05-PH2-FIT-BL-D5,3,3,6,1 | CHI05-02-01-L1-1230 | L1 XFMR - MV- COLO2 | Not Started | 05-Nov-24 17:00:00 | 96 | 31-Oct-24 08:00:00 |
| 1056 | CHI05-PH2-FIT-BL-D5,3,3,6,1 | CHI05-02-01-L1-1240 | L1 GEN - COLO2 | Not Started | 29-Nov-24 17:00:00 | 83 | 25-Nov-24 08:00:00 |
| 1057 | CHI05-PH2-FIT-BL-D5,3,3,6,1 | CHI05-03-01-L1-1340 | L1 UPM - COLO3 | Not Started | 27-Nov-24 17:00:00 | 68 | 22-Nov-24 08:00:00 |
| 1058 | CHI05-PH2-FIT-BL-D5,3,3,6,1 | CHI05-03-01-L1-1350 | L1 XFMR - MV- COLO3 | Not Started | 12-Nov-24 17:00:00 | 84 | 07-Nov-24 08:00:00 |
| 1059 | CHI05-PH2-FIT-BL-D5,3,3,6,1 | CHI05-03-01-L1-1360 | L1 GEN - COLO3 | Not Started | 08-Nov-24 17:00:00 | 86 | 05-Nov-24 08:00:00 |
| 1060 | CHI05-PH2-FIT-BL-D5,3,3,6,1 | CHI05-04-01-L1-1460 | L1 UPM - COLO4 | Not Started | 27-Nov-24 17:00:00 | 74 | 22-Nov-24 08:00:00 |
| 1061 | CHI05-PH2-FIT-BL-D5,3,3,6,1 | CHI05-04-01-L1-1470 | L1 XFMR - MV- COLO4 | Not Started | 19-Nov-24 17:00:00 | 85 | 14-Nov-24 08:00:00 |
| 1062 | CHI05-PH2-FIT-BL-D5,3,3,6,1 | CHI05-04-01-L1-1480 | L1 GEN - COLO4 | Not Started | 15-Nov-24 17:00:00 | 87 | 12-Nov-24 08:00:00 |
| 1063 | CHI05-PH2-FIT-BL-D5,3,3,6,1 | CHI05-05-01-L1-1580 | L1 UPM - COLO5 | Not Started | 27-Nov-24 17:00:00 | 75 | 22-Nov-24 08:00:00 |
| 1064 | CHI05-PH2-FIT-BL-D5,3,3,6,1 | CHI05-05-01-L1-1590 | L1 XFMR - MV- COLO5 | Not Started | 26-Nov-24 17:00:00 | 81 | 21-Nov-24 08:00:00 |
| 1065 | CHI05-PH2-FIT-BL-D5,3,3,6,1 | CHI05-05-01-L1-1600 | L1 GEN - COLO5 | Not Started | 22-Nov-24 17:00:00 | 83 | 19-Nov-24 08:00:00 |
| 1066 | CHI05-PH2-FIT-BL-D5,3,3,6,1 | CHI05-02-01-L1-1200 | L1 UTS / UTSR - Site | Not Started | 21-Jan-25 17:00:00 | 42 | 21-Jan-25 08:00:00 |
| 1067 | CHI05-PH2-FIT-BL-D5,3,3,6,1 | CHI05-02-01-L1-1210 | L1 UMS 04 - COLO 3 | Not Started | 14-Nov-24 17:00:00 | 73 | 14-Nov-24 08:00:00 |
| 1068 | CHI05-PH2-FIT-BL-D5,3,3,6,1 | CHI05-02-02-L1-1330 | L1 UMS 03 - COLO 3 | Not Started | 14-Nov-24 17:00:00 | 73 | 14-Nov-24 08:00:00 |
| 1069 | CHI05-PH2-FIT-BL-D5,3,3,6,1 | CHI05-02-03-L1-1450 | L1 UMS 01 - COLO 5 | Not Started | 21-Nov-24 17:00:00 | 68 | 21-Nov-24 08:00:00 |
| 1070 | CHI05-PH2-FIT-BL-D5,3,3,6,1 | CHI05-02-04-L1-1570 | L1 URS 01 - COLO 5 | Not Started | 21-Nov-24 17:00:00 | 68 | 21-Nov-24 08:00:00 |
| 1071 | CHI05-PH2-FIT-BL-D5,3,3,6,2 | CHI05-02-01-L2-1340 | L2 UPM - COLO2 | Not Started | 24-Feb-25 17:00:00 | 35 | 28-Jan-25 08:00:00 |
| 1072 | CHI05-PH2-FIT-BL-D5,3,3,6,2 | CHI05-02-01-L2-1350 | L2 XFMR - COLO2 | Not Started | 24-Feb-25 17:00:00 | 40 | 28-Jan-25 08:00:00 |
| 1073 | CHI05-PH2-FIT-BL-D5,3,3,6,2 | CHI05-02-01-L2-1360 | L2 GEN - COLO2 | Not Started | 24-Feb-25 17:00:00 | 40 | 28-Jan-25 08:00:00 |
| 1074 | CHI05-PH2-FIT-BL-D5,3,3,6,2 | CHI05-03-01-L2-1460 | L2 UPM - COLO3 | Not Started | 24-Feb-25 17:00:00 | 28 | 28-Jan-25 08:00:00 |
| 1075 | CHI05-PH2-FIT-BL-D5,3,3,6,2 | CHI05-03-01-L2-1470 | L2 XFMR - COLO3 | Not Started | 24-Feb-25 17:00:00 | 33 | 28-Jan-25 08:00:00 |
| 1076 | CHI05-PH2-FIT-BL-D5,3,3,6,2 | CHI05-03-01-L2-1480 | L2 GEN - COLO3 | Not Started | 24-Feb-25 17:00:00 | 33 | 28-Jan-25 08:00:00 |
| 1077 | CHI05-PH2-FIT-BL-D5,3,3,6,2 | CHI05-04-01-L2-1580 | L2 UPM - COLO4 | Not Started | 24-Feb-25 17:00:00 | 34 | 28-Jan-25 08:00:00 |
| 1078 | CHI05-PH2-FIT-BL-D5,3,3,6,2 | CHI05-04-01-L2-1590 | L2 XFMR - COLO4 | Not Started | 24-Feb-25 17:00:00 | 39 | 28-Jan-25 08:00:00 |
| 1079 | CHI05-PH2-FIT-BL-D5,3,3,6,2 | CHI05-04-01-L2-1600 | L2 GEN - COLO4 | Not Started | 24-Feb-25 17:00:00 | 39 | 28-Jan-25 08:00:00 |
| 1080 | CHI05-PH2-FIT-BL-D5,3,3,6,2 | CHI05-05-01-L2-1700 | L2 UPM - COLO5 | Not Started | 24-Feb-25 17:00:00 | 35 | 28-Jan-25 08:00:00 |
| 1081 | CHI05-PH2-FIT-BL-D5,3,3,6,2 | CHI05-05-01-L2-1710 | L2 XFMR - COLO5 | Not Started | 24-Feb-25 17:00:00 | 40 | 28-Jan-25 08:00:00 |
| 1082 | CHI05-PH2-FIT-BL-D5,3,3,6,2 | CHI05-05-01-L2-1720 | L2 GEN - COLO5 | Not Started | 24-Feb-25 17:00:00 | 40 | 28-Jan-25 08:00:00 |
| 1083 | CHI05-PH2-FIT-BL-D5,3,3,6,2 | CHI05-02-01-L2-1330 | L2 URS 01 - COLO 5 | Not Started | 17-Feb-25 17:00:00 | 33 | 11-Feb-25 08:00:00 |
| 1084 | CHI05-PH2-FIT-BL-D5,3,3,6,2 | CHI05-02-02-L2-1450 | L2 UMS 03 - COLO 3 | Not Started | 24-Feb-25 17:00:00 | 28 | 18-Feb-25 08:00:00 |
| 1085 | CHI05-PH2-FIT-BL-D5,3,3,6,2 | CHI05-02-03-L2-1570 | L2 UMS 04 - COLO 3 | Not Started | 24-Feb-25 17:00:00 | 28 | 18-Feb-25 08:00:00 |
| 1086 | CHI05-PH2-FIT-BL-D5,3,3,6,2 | CHI05-02-04-L2-1690 | L2 UMS 01 - COLO 5 | Not Started | 24-Feb-25 17:00:00 | 28 | 18-Feb-25 08:00:00 |
| 1087 | CHI05-PH2-FIT-BL-D5,3,3,6,2 | CHI05-05-01-L2-1680 | L2 UTS / UTSR - Site | Not Started | 17-Feb-25 17:00:00 | 28 | 11-Feb-25 08:00:00 |
| 1088 | CHI05-PH2-FIT-BL-D5,3,3,6,3 | CHI05-02-01-L3-1460 | L3 UPM - COLO2 | Not Started | 24-Mar-25 17:00:00 | 35 | 25-Feb-25 08:00:00 |
| 1089 | CHI05-PH2-FIT-BL-D5,3,3,6,3 | CHI05-02-01-L3-1470 | L3 XFMR - COLO2 | Not Started | 24-Mar-25 17:00:00 | 40 | 25-Feb-25 08:00:00 |
| 1090 | CHI05-PH2-FIT-BL-D5,3,3,6,3 | CHI05-02-01-L3-1480 | L3 GEN - COLO2 | Not Started | 24-Mar-25 17:00:00 | 40 | 25-Feb-25 08:00:00 |
| 1091 | CHI05-PH2-FIT-BL-D5,3,3,6,3 | CHI05-03-01-L3-1580 | L3 UPM - COLO3 | Not Started | 25-Mar-25 17:00:00 | 27 | 26-Feb-25 08:00:00 |
| 1092 | CHI05-PH2-FIT-BL-D5,3,3,6,3 | CHI05-03-01-L3-1590 | L3 XFMR - COLO3 | Not Started | 25-Mar-25 17:00:00 | 32 | 26-Feb-25 08:00:00 |
| 1093 | CHI05-PH2-FIT-BL-D5,3,3,6,3 | CHI05-03-01-L3-1600 | L3 GEN - COLO3 | Not Started | 25-Mar-25 17:00:00 | 32 | 26-Feb-25 08:00:00 |
| 1094 | CHI05-PH2-FIT-BL-D5,3,3,6,3 | CHI05-04-01-L3-1700 | L3 UPM - COLO4 | Not Started | 09-May-25 17:00:00 | 0 | 14-Apr-25 08:00:00 |
| 1095 | CHI05-PH2-FIT-BL-D5,3,3,6,3 | CHI05-04-01-L3-1710 | L3 XFMR - COLO4 | Not Started | 09-May-25 17:00:00 | 5 | 14-Apr-25 08:00:00 |
| 1096 | CHI05-PH2-FIT-BL-D5,3,3,6,3 | CHI05-04-01-L3-1720 | L3 GEN - COLO4 | Not Started | 09-May-25 17:00:00 | 5 | 14-Apr-25 08:00:00 |
| 1097 | CHI05-PH2-FIT-BL-D5,3,3,6,3 | CHI05-05-01-L3-1820 | L3 UPM - COLO5 | Not Started | 24-Mar-25 17:00:00 | 35 | 25-Feb-25 08:00:00 |
| 1098 | CHI05-PH2-FIT-BL-D5,3,3,6,3 | CHI05-05-01-L3-1830 | L3 XFMR - COLO5 | Not Started | 24-Mar-25 17:00:00 | 40 | 25-Feb-25 08:00:00 |
| 1099 | CHI05-PH2-FIT-BL-D5,3,3,6,3 | CHI05-05-01-L3-1840 | L3 GEN - COLO5 | Not Started | 24-Mar-25 17:00:00 | 40 | 25-Feb-25 08:00:00 |
| 1100 | CHI05-PH2-FIT-BL-D5,3,3,6,3 | CHI05-02-01-L3-1440 | L3 UTS / UTSR - Site | Not Started | 07-Mar-25 17:00:00 | 29 | 03-Mar-25 08:00:00 |
| 1101 | CHI05-PH2-FIT-BL-D5,3,3,6,3 | CHI05-02-01-L3-1450 | L3 UMS 04 - COLO 3 | Not Started | 21-Mar-25 17:00:00 | 29 | 17-Mar-25 08:00:00 |
| 1102 | CHI05-PH2-FIT-BL-D5,3,3,6,3 | CHI05-02-02-L3-1570 | L3 UMS 03 - COLO 3 | Not Started | 21-Mar-25 17:00:00 | 29 | 17-Mar-25 08:00:00 |
| 1103 | CHI05-PH2-FIT-BL-D5,3,3,6,3 | CHI05-02-03-L3-1690 | L3 URS 01 - COLO 5 | Not Started | 14-Mar-25 17:00:00 | 29 | 10-Mar-25 08:00:00 |
| 1104 | CHI05-PH2-FIT-BL-D5,3,3,6,3 | CHI05-02-04-L3-1810 | L3 UMS 01 - COLO 5 | Not Started | 14-Mar-25 17:00:00 | 29 | 10-Mar-25 08:00:00 |
| 1105 | CHI05-PH2-FIT-BL-D5,3,2 | CHI05-CON-1020 | (3) UTS - Install and Terminate (1 wk/ea) | Not Started | 10-Feb-25 17:00:00 | 28 | 21-Jan-25 08:00:00 |
| 1106 | CHI05-PH2-FIT-BL-D5,3,2 | CHI05-CON-1050 | Permanent Power Live | Not Started | 28-Feb-25 17:00:00 | 0 |  |
| 1107 | CHI05-PH2-FIT-BL-D5,3,2 | CHI05-CON-1030 | Installation and Termiation of MV Cable | Not Started | 24-Feb-25 17:00:00 | 28 | 21-Jan-25 08:00:00 |
| 1108 | CHI05-PH2-FIT-BL-D5,4,2,1 | CHI05-CFCI-1020 | HAC's - Submittal Preparation | Completed | 07-Jun-24 17:00:00 |  | 03-Jun-24 08:00:00 |
| 1109 | CHI05-PH2-FIT-BL-D5,4,2,1 | CHI05-CFCI-1080 | HAC's - Submittal Review | Completed | 10-Jun-24 17:00:00 |  | 10-Jun-24 08:00:00 |
| 1110 | CHI05-PH2-FIT-BL-D5,4,2,1 | CHI05-CFCI-1090 | HAC's - Lead Time | In Progress | 13-Sep-24 17:00:00 | 140 | 11-Jun-24 08:00:00 |
| 1111 | CHI05-PH2-FIT-BL-D5,4,2,9 | CHI05-CFCI-1140 | Doors/Frames/Hardware - Submittal Preparation | In Progress | 09-Aug-24 17:00:00 | 60 | 19-Jun-24 08:00:00 |
| 1112 | CHI05-PH2-FIT-BL-D5,4,2,9 | CHI05-CFCI-1160 | Doors/Frames/Hardware - Submittal Review | In Progress | 09-Aug-24 17:00:00 | 60 | 28-Jun-24 08:00:00 |
| 1113 | CHI05-PH2-FIT-BL-D5,4,2,9 | CHI05-CFCI-1220 | Doors/Frames/Hardware - Lead Time | Not Started | 02-Jan-25 17:00:00 | 60 | 12-Aug-24 08:00:00 |
| 1114 | CHI05-PH2-FIT-BL-D5,4,2,4 | CHI05-CFCI-1000 | DX Split Units - Submittal Preparation | Completed | 11-Jun-24 17:00:00 |  | 21-May-24 08:00:00 |
| 1115 | CHI05-PH2-FIT-BL-D5,4,2,4 | CHI05-CFCI-1120 | DX Split Units - Submittal Review | Completed | 28-Jun-24 17:00:00 |  | 12-Jun-24 08:00:00 |
| 1116 | CHI05-PH2-FIT-BL-D5,4,2,4 | CHI05-CFCI-1170 | DX Split Units - Lead Time | In Progress | 21-Oct-24 17:00:00 | 57 | 01-Jul-24 08:00:00 |
| 1117 | CHI05-PH2-FIT-BL-D5,4,2,6 | CHI05-CFCI-1030 | AHU (Admin) - Submittal Preparation | Completed | 21-Jun-24 17:00:00 |  | 03-Jun-24 08:00:00 |
| 1118 | CHI05-PH2-FIT-BL-D5,4,2,6 | CHI05-CFCI-1150 | AHU (Admin) - Submittal Review | Completed | 08-Jul-24 17:00:00 |  | 24-Jun-24 08:00:00 |
| 1119 | CHI05-PH2-FIT-BL-D5,4,2,6 | CHI05-CFCI-1200 | AHU (Admin) - Lead Time | In Progress | 18-Nov-24 17:00:00 | 39 | 09-Jul-24 08:00:00 |
| 1120 | CHI05-PH2-FIT-BL-D5,4,2,8 | CHI05-CFCI-1050 | Overhead Cable Bus - Submittal Preparation | Completed | 06-Jun-24 17:00:00 |  | 06-Jun-24 08:00:00 |

| entry | activity_code | activity_id | activity_name | activity_status | finish | total_float | start |
| --- | --- | --- | --- | --- | --- | --- | --- |
| 1121 | CHI05-PH2-FIT-BL-D5,4,2,8 | CHI05-CFCI-1070 | Overhead Cable Bus - Submittal Review | Completed | 10-Jun-24 17:00:00 |  | 07-Jun-24 08:00:00 |
| 1122 | CHI05-PH2-FIT-BL-D5,4,2,8 | CHI05-CFCI-1100 | Overhead Cable Bus - Lead Time | In Progress | 18-Nov-24 17:00:00 | 40 | 11-Jun-24 08:00:00 |
| 1123 | CHI05-PH2-FIT-BL-D5,4,2,3 | CHI05-CFCI-1180 | Medium Voltage Cabling - Submittal Preparation | Completed | 09-Jul-24 17:00:00 |  | 03-Jul-24 08:00:00 |
| 1124 | CHI05-PH2-FIT-BL-D5,4,2,3 | CHI05-CFCI-1190 | Medium Voltage Cabling - Submittal Review | In Progress | 09-Aug-24 17:00:00 | 33 | 04-Jul-24 08:00:00 |
| 1125 | CHI05-PH2-FIT-BL-D5,4,2,3 | CHI05-CFCI-1210 | Medium Voltage Cabling - Lead Time | In Progress | 27-Dec-24 17:00:00 | 33 | 10-Jul-24 08:00:00 |
| 1126 | CHI05-PH2-FIT-BL-D5,4,2,5 | CHI05-CFCI-1040 | Elec. Distribution System - Submittal Preparation | Completed | 07-Jun-24 17:00:00 |  | 03-Jun-24 08:00:00 |
| 1127 | CHI05-PH2-FIT-BL-D5,4,2,5 | CHI05-CFCI-1110 | Elec. Distribution System - Submittal Review | Completed | 11-Jun-24 17:00:00 |  | 11-Jun-24 08:00:00 |
| 1128 | CHI05-PH2-FIT-BL-D5,4,2,5 | CHI05-CFCI-1130 | Elec. Distribution System - Lead Time | In Progress | 26-Sep-24 17:00:00 | 186 | 12-Jun-24 08:00:00 |
| 1129 | CHI05-PH2-FIT-BL-D5,4,2,7 | CHI05-CFCI-1010 | Light Fixture - Submittal Preparation | In Progress | 09-Aug-24 17:00:00 | 130 | 27-May-24 08:00:00 |
| 1130 | CHI05-PH2-FIT-BL-D5,4,2,7 | CHI05-CFCI-1060 | Light Fixture - Submittal Review | In Progress | 09-Aug-24 17:00:00 | 130 | 06-Jun-24 08:00:00 |
| 1131 | CHI05-PH2-FIT-BL-D5,4,2,7 | CHI05-CFCI-1230 | Light Fixture - Lead Time | Not Started | 03-Dec-24 17:00:00 | 130 | 12-Aug-24 08:00:00 |
| 1132 | CHI05-PH2-FIT-BL-D5,4,2,2 | CHI05-CFCI-1240 | Damper Assembly and Delivery | Not Started | 04-Oct-24 17:00:00 | 0 | 02-Oct-24 08:00:00 |
| 1133 | CHI05-PH2-FIT-BL-D5,4,1,1,1 | CHI05-OFCI-1000 | AHU - COLO 2 - In Storage | Not Started | 08-Oct-24 17:00:00 | 49 | 02-Oct-24 08:00:00 |
| 1134 | CHI05-PH2-FIT-BL-D5,4,1,1,2 | CHI05-OFCI-1450 | AHU - COLO 3 - In Storage | Not Started | 15-Oct-24 17:00:00 | 49 | 09-Oct-24 08:00:00 |
| 1135 | CHI05-PH2-FIT-BL-D5,4,1,1,3 | CHI05-OFCI-1460 | AHU - COLO 4 - Start ROJ | Not Started |  | 55 | 09-Oct-24 08:00:00 |
| 1136 | CHI05-PH2-FIT-BL-D5,4,1,1,3 | CHI05-OFCI-1470 | AHU - COLO 4 - ROJ | Not Started | 15-Oct-24 17:00:00 | 55 | 09-Oct-24 08:00:00 |
| 1137 | CHI05-PH2-FIT-BL-D5,4,1,1,3 | CHI05-OFCI-1480 | AHU - COLO 4 - Finish ROJ | Not Started | 15-Oct-24 17:00:00 | 55 |  |
| 1138 | CHI05-PH2-FIT-BL-D5,4,1,1,5 | CHI05-OFCI-1010 | AHU - COLO 5 - Start ROJ | Not Started |  | 63 | 02-Oct-24 08:00:00 |
| 1139 | CHI05-PH2-FIT-BL-D5,4,1,1,5 | CHI05-OFCI-1020 | AHU - COLO 5 - ROJ | Not Started | 15-Oct-24 17:00:00 | 63 | 02-Oct-24 08:00:00 |
| 1140 | CHI05-PH2-FIT-BL-D5,4,1,1,5 | CHI05-OFCI-1490 | AHU - COLO 5 - Finish ROJ | Not Started | 15-Oct-24 17:00:00 | 63 |  |
| 1141 | CHI05-PH2-FIT-BL-D5,4,1,2,1 | CHI05-OFCI-1860 | ATS - COLO 2 - Start ROJ | Not Started |  | 0 | 14-Nov-24 08:00:00 |
| 1142 | CHI05-PH2-FIT-BL-D5,4,1,2,1 | CHI05-OFCI-1870 | ATS - COLO 2 - ROJ | Not Started | 27-Nov-24 17:00:00 | 94 | 14-Nov-24 08:00:00 |
| 1143 | CHI05-PH2-FIT-BL-D5,4,1,2,1 | CHI05-OFCI-1970 | ATS - COLO 2 - Finish ROJ | Not Started | 27-Nov-24 17:00:00 | 94 |  |
| 1144 | CHI05-PH2-FIT-BL-D5,4,1,2,2 | CHI05-OFCI-2140 | ATS - COLO 3 - Start ROJ | Not Started |  | 78 | 16-Dec-24 08:00:00 |
| 1145 | CHI05-PH2-FIT-BL-D5,4,1,2,2 | CHI05-OFCI-2150 | ATS - COLO 3 - ROJ | Not Started | 31-Dec-24 17:00:00 | 78 | 16-Dec-24 08:00:00 |
| 1146 | CHI05-PH2-FIT-BL-D5,4,1,2,2 | CHI05-OFCI-2270 | ATS - COLO 3 - Finish ROJ | Not Started | 31-Dec-24 17:00:00 | 78 |  |
| 1147 | CHI05-PH2-FIT-BL-D5,4,1,2,3 | CHI05-OFCI-1590 | ATS - COLO 4 - Start ROJ | Not Started |  | 64 | 28-Oct-24 08:00:00 |
| 1148 | CHI05-PH2-FIT-BL-D5,4,1,2,3 | CHI05-OFCI-1600 | ATS - COLO 4 - ROJ | Not Started | 27-Nov-24 17:00:00 | 64 | 28-Oct-24 08:00:00 |
| 1149 | CHI05-PH2-FIT-BL-D5,4,1,2,3 | CHI05-OFCI-1980 | ATS - COLO 4 - Finish ROJ | Not Started | 27-Nov-24 17:00:00 | 64 |  |
| 1150 | CHI05-PH2-FIT-BL-D5,4,1,2,5 | CHI05-OFCI-1030 | ATS - COLO 5 - Start ROJ | Not Started |  | 118 | 02-Oct-24 08:00:00 |
| 1151 | CHI05-PH2-FIT-BL-D5,4,1,2,5 | CHI05-OFCI-1040 | ATS - COLO 5 - ROJ | Not Started | 15-Oct-24 17:00:00 | 118 | 02-Oct-24 08:00:00 |
| 1152 | CHI05-PH2-FIT-BL-D5,4,1,2,5 | CHI05-OFCI-1500 | ATS - COLO 5 - Finish ROJ | Not Started | 15-Oct-24 17:00:00 | 118 |  |
| 1153 | CHI05-PH2-FIT-BL-D5,4,1,6,1 | CHI05-OFCI-1050 | BAS - COLO 2 - Start ROJ | Not Started |  | 27 | 02-Oct-24 08:00:00 |
| 1154 | CHI05-PH2-FIT-BL-D5,4,1,6,1 | CHI05-OFCI-1060 | BAS - COLO 2 - ROJ | Not Started | 29-Oct-24 17:00:00 | 27 | 02-Oct-24 08:00:00 |
| 1155 | CHI05-PH2-FIT-BL-D5,4,1,6,1 | CHI05-OFCI-1650 | BAS - COLO 2 - Finish ROJ | Not Started | 29-Oct-24 17:00:00 | 27 |  |
| 1156 | CHI05-PH2-FIT-BL-D5,4,1,6,2 | CHI05-OFCI-1680 | BAS - COLO 3 - Start ROJ | Not Started |  | 27 | 30-Oct-24 08:00:00 |
| 1157 | CHI05-PH2-FIT-BL-D5,4,1,6,2 | CHI05-OFCI-1690 | BAS - COLO 3 - ROJ | Not Started | 30-Dec-24 17:00:00 | 27 | 30-Oct-24 08:00:00 |
| 1158 | CHI05-PH2-FIT-BL-D5,4,1,6,2 | CHI05-OFCI-2230 | BAS - COLO 3 - Finish ROJ | Not Started | 30-Dec-24 17:00:00 | 27 |  |
| 1159 | CHI05-PH2-FIT-BL-D5,4,1,6,3 | CHI05-OFCI-1700 | BAS - COLO 4 - Start ROJ | Not Started |  | 38 | 30-Oct-24 08:00:00 |
| 1160 | CHI05-PH2-FIT-BL-D5,4,1,6,3 | CHI05-OFCI-1710 | BAS - COLO 4 - ROJ | Not Started | 30-Dec-24 17:00:00 | 38 | 30-Oct-24 08:00:00 |
| 1161 | CHI05-PH2-FIT-BL-D5,4,1,6,3 | CHI05-OFCI-2240 | BAS - COLO 4 - Finish ROJ | Not Started | 30-Dec-24 17:00:00 | 38 |  |
| 1162 | CHI05-PH2-FIT-BL-D5,4,1,6,5 | CHI05-OFCI-1070 | BAS - COLO 5 - Start ROJ | Not Started |  | 76 | 02-Oct-24 08:00:00 |
| 1163 | CHI05-PH2-FIT-BL-D5,4,1,6,5 | CHI05-OFCI-1080 | BAS - COLO 5 - ROJ | Not Started | 29-Oct-24 17:00:00 | 76 | 02-Oct-24 08:00:00 |
| 1164 | CHI05-PH2-FIT-BL-D5,4,1,6,5 | CHI05-OFCI-1660 | BAS - COLO 5 - Finish ROJ | Not Started | 29-Oct-24 17:00:00 | 76 |  |
| 1165 | CHI05-PH2-FIT-BL-D5,4,1,3,1 | CHI05-OFCI-1090 | Busway/Bus Plugs - COLO 2 - In Storage | Not Started | 16-Oct-24 17:00:00 | 31 | 02-Oct-24 08:00:00 |
| 1166 | CHI05-PH2-FIT-BL-D5,4,1,3,2 | CHI05-OFCI-2020 | Busway/Bus Plugs - COLO 3 - Start ROJ | Not Started |  | 0 | 02-Dec-24 08:00:00 |
| 1167 | CHI05-PH2-FIT-BL-D5,4,1,3,2 | CHI05-OFCI-2030 | Busway/Bus Plugs - COLO 3 - ROJ | Not Started | 30-Dec-24 17:00:00 | 85 | 02-Dec-24 08:00:00 |
| 1168 | CHI05-PH2-FIT-BL-D5,4,1,3,2 | CHI05-OFCI-2250 | Busway/Bus Plugs - COLO 3 - Finish ROJ | Not Started | 30-Dec-24 17:00:00 | 85 |  |
| 1169 | CHI05-PH2-FIT-BL-D5,4,1,3,3 | CHI05-OFCI-2040 | Busway/Bus Plugs - COLO 4 - Start ROJ | Not Started |  | 87 | 02-Dec-24 08:00:00 |
| 1170 | CHI05-PH2-FIT-BL-D5,4,1,3,3 | CHI05-OFCI-2050 | Busway/Bus Plugs - COLO 4 - ROJ | Not Started | 30-Dec-24 17:00:00 | 87 | 02-Dec-24 08:00:00 |
| 1171 | CHI05-PH2-FIT-BL-D5,4,1,3,3 | CHI05-OFCI-2260 | Busway/Bus Plugs - COLO 4 - Finish ROJ | Not Started | 30-Dec-24 17:00:00 | 87 |  |
| 1172 | CHI05-PH2-FIT-BL-D5,4,1,3,5 | CHI05-OFCI-1100 | Busway/Bus Plugs - COLO 5 - Start ROJ | Not Started |  | 122 | 02-Oct-24 08:00:00 |
| 1173 | CHI05-PH2-FIT-BL-D5,4,1,3,5 | CHI05-OFCI-1110 | Busway/Bus Plugs - COLO 5 - ROJ | Not Started | 29-Oct-24 17:00:00 | 122 | 02-Oct-24 08:00:00 |
| 1174 | CHI05-PH2-FIT-BL-D5,4,1,3,5 | CHI05-OFCI-1670 | Busway/Bus Plugs - COLO 5 - Finish ROJ | Not Started | 29-Oct-24 17:00:00 | 122 |  |
| 1175 | CHI05-PH2-FIT-BL-D5,4,1,4,1 | CHI05-OFCI-1120 | EPMS - COLO 2 | Not Started | 02-Oct-24 17:00:00 | 103 | 02-Oct-24 08:00:00 |
| 1176 | CHI05-PH2-FIT-BL-D5,4,1,4,2 | CHI05-OFCI-1440 | EPMS - COLO 3 | Not Started | 16-Oct-24 17:00:00 | 103 | 03-Oct-24 08:00:00 |
| 1177 | CHI05-PH2-FIT-BL-D5,4,1,4,3 | CHI05-OFCI-1570 | EPMS - COLO 4 | Not Started | 31-Oct-24 17:00:00 | 103 | 17-Oct-24 08:00:00 |
| 1178 | CHI05-PH2-FIT-BL-D5,4,1,4,5 | CHI05-OFCI-1730 | EPMS - COLO 5 | Not Started | 15-Nov-24 17:00:00 | 103 | 01-Nov-24 08:00:00 |
| 1179 | CHI05-PH2-FIT-BL-D5,4,1,5,1 | CHI05-OFCI-1130 | GENS - COLO 2 - In Storage | Not Started | 30-Sep-24 17:00:00 | 0 | 20-Sep-24 08:00:00 |
| 1180 | CHI05-PH2-FIT-BL-D5,4,1,5,2 | CHI05-OFCI-1140 | GENS - COLO 3 - In Storage | Not Started | 02-Oct-24 17:00:00 | 67 | 20-Sep-24 08:00:00 |
| 1181 | CHI05-PH2-FIT-BL-D5,4,1,5,3 | CHI05-OFCI-1150 | GENS - COLO 4 - In Storage | Not Started | 04-Oct-24 17:00:00 | 67 | 20-Sep-24 08:00:00 |
| 1182 | CHI05-PH2-FIT-BL-D5,4,1,5,5 | CHI05-OFCI-1160 | GENS - COLO 5 - In Storage | Not Started | 08-Oct-24 17:00:00 | 67 | 20-Sep-24 08:00:00 |
| 1183 | CHI05-PH2-FIT-BL-D5,4,1,7,1 | CHI05-OFCI-1840 | LVS - COLO 2 - Start ROJ | Not Started |  | 0 | 13-Nov-24 08:00:00 |
| 1184 | CHI05-PH2-FIT-BL-D5,4,1,7,1 | CHI05-OFCI-1850 | LVS - COLO 2 - ROJ | Not Started | 27-Nov-24 17:00:00 | 0 | 13-Nov-24 08:00:00 |
| 1185 | CHI05-PH2-FIT-BL-D5,4,1,7,1 | CHI05-OFCI-1990 | LVS - COLO 2 - Finish ROJ | Not Started | 27-Nov-24 17:00:00 | 94 |  |
| 1186 | CHI05-PH2-FIT-BL-D5,4,1,7,2 | CHI05-OFCI-1930 | LVS - COLO 3 - Start ROJ | Not Started |  | 87 | 21-Nov-24 08:00:00 |
| 1187 | CHI05-PH2-FIT-BL-D5,4,1,7,2 | CHI05-OFCI-1940 | LVS - COLO 3 - ROJ | Not Started | 05-Dec-24 17:00:00 | 95 | 21-Nov-24 08:00:00 |
| 1188 | CHI05-PH2-FIT-BL-D5,4,1,7,2 | CHI05-OFCI-2100 | LVS - COLO 3 - Finish ROJ | Not Started | 05-Dec-24 17:00:00 | 95 |  |
| 1189 | CHI05-PH2-FIT-BL-D5,4,1,7,3 | CHI05-OFCI-2180 | LVS - COLO 4 - Start ROJ | Not Started |  | 0 | 23-Dec-24 08:00:00 |
| 1190 | CHI05-PH2-FIT-BL-D5,4,1,7,3 | CHI05-OFCI-2190 | LVS - COLO 4 - ROJ | Not Started | 06-Jan-25 17:00:00 | 60 | 23-Dec-24 08:00:00 |

| entry | activity_code | activity_id | activity_name | activity_status | finish | total_float | start |
| --- | --- | --- | --- | --- | --- | --- | --- |
| 1191 | CHI05-PH2-FIT-BL-D5,4,1,7,3 | CHI05-OFCI-2280 | LVS - COLO 4 - Finish ROJ | Not Started | 06-Jan-25 17:00:00 | 60 |  |
| 1192 | CHI05-PH2-FIT-BL-D5,4,1,7,5 | CHI05-OFCI-1950 | LVS - COLO 5 - Start ROJ | Not Started |  | 87 | 21-Nov-24 08:00:00 |
| 1193 | CHI05-PH2-FIT-BL-D5,4,1,7,5 | CHI05-OFCI-1960 | LVS - COLO 5 - ROJ | Not Started | 05-Dec-24 17:00:00 | 87 | 21-Nov-24 08:00:00 |
| 1194 | CHI05-PH2-FIT-BL-D5,4,1,7,5 | CHI05-OFCI-2110 | LVS - COLO 5 - Finish ROJ | Not Started | 05-Dec-24 17:00:00 | 87 |  |
| 1195 | CHI05-PH2-FIT-BL-D5,4,1,8,1 | CHI05-OFCI-1170 | MVS (UPM) - COLO 2 - Start ROJ | Not Started |  | 173 | 02-Oct-24 08:00:00 |
| 1196 | CHI05-PH2-FIT-BL-D5,4,1,8,1 | CHI05-OFCI-1180 | MVS (UPM) - COLO 2 - ROJ | Not Started | 15-Oct-24 17:00:00 | 173 | 02-Oct-24 08:00:00 |
| 1197 | CHI05-PH2-FIT-BL-D5,4,1,8,1 | CHI05-OFCI-1530 | MVS (UPM) - COLO 2 - Finish ROJ | Not Started | 15-Oct-24 17:00:00 | 173 |  |
| 1198 | CHI05-PH2-FIT-BL-D5,4,1,8,2 | CHI05-OFCI-1190 | MVS (UPM) - COLO 3 - Start ROJ | Not Started |  | 173 | 02-Oct-24 08:00:00 |
| 1199 | CHI05-PH2-FIT-BL-D5,4,1,8,2 | CHI05-OFCI-1200 | MVS (UPM) - COLO 3 - ROJ | Not Started | 15-Oct-24 17:00:00 | 173 | 02-Oct-24 08:00:00 |
| 1200 | CHI05-PH2-FIT-BL-D5,4,1,8,2 | CHI05-OFCI-1510 | MVS (UPM) - COLO 3 - Finish ROJ | Not Started | 15-Oct-24 17:00:00 | 173 |  |
| 1201 | CHI05-PH2-FIT-BL-D5,4,1,8,3 | CHI05-OFCI-1210 | MVS (UPM) - COLO 4 - Start ROJ | Not Started |  | 178 | 02-Oct-24 08:00:00 |
| 1202 | CHI05-PH2-FIT-BL-D5,4,1,8,3 | CHI05-OFCI-1220 | MVS (UPM) - COLO 4 - ROJ | Not Started | 15-Oct-24 17:00:00 | 178 | 02-Oct-24 08:00:00 |
| 1203 | CHI05-PH2-FIT-BL-D5,4,1,8,3 | CHI05-OFCI-1520 | MVS (UPM) - COLO 4 - Finish ROJ | Not Started | 15-Oct-24 17:00:00 | 178 |  |
| 1204 | CHI05-PH2-FIT-BL-D5,4,1,8,5 | CHI05-OFCI-1230 | MVS (UPM) - COLO 5 - Start ROJ | Not Started |  | 89 | 02-Oct-24 08:00:00 |
| 1205 | CHI05-PH2-FIT-BL-D5,4,1,8,5 | CHI05-OFCI-1240 | MVS (UPM) - COLO 5 - ROJ | Not Started | 15-Oct-24 17:00:00 | 89 | 02-Oct-24 08:00:00 |
| 1206 | CHI05-PH2-FIT-BL-D5,4,1,8,5 | CHI05-OFCI-1540 | MVS (UPM) - COLO 5 - Finish ROJ | Not Started | 15-Oct-24 17:00:00 | 89 |  |
| 1207 | CHI05-PH2-FIT-BL-D5,4,1,9,1 | CHI05-OFCI-1250 | MVS (XFMR) - COLO 2 - In storage | Not Started | 02-Oct-24 17:00:00 | 63 | 02-Oct-24 08:00:00 |
| 1208 | CHI05-PH2-FIT-BL-D5,4,1,9,2 | CHI05-OFCI-1260 | MVS (XFMR) - COLO 3 - In storage | Not Started | 02-Oct-24 17:00:00 | 68 | 02-Oct-24 08:00:00 |
| 1209 | CHI05-PH2-FIT-BL-D5,4,1,9,3 | CHI05-OFCI-1270 | MVS (XFMR) - COLO 4 - In storage | Not Started | 02-Oct-24 17:00:00 | 73 | 02-Oct-24 08:00:00 |
| 1210 | CHI05-PH2-FIT-BL-D5,4,1,9,5 | CHI05-OFCI-1280 | MVS (XFMR) - COLO 5 - Start ROJ | Not Started |  | 0 | 23-Sep-24 08:00:00 |
| 1211 | CHI05-PH2-FIT-BL-D5,4,1,9,5 | CHI05-OFCI-1290 | MVS (XFMR) - COLO 5 - ROJ | Not Started | 23-Sep-24 17:00:00 | 65 | 23-Sep-24 08:00:00 |
| 1212 | CHI05-PH2-FIT-BL-D5,4,1,9,5 | CHI05-OFCI-1550 | MVS (XFMR) - COLO 5 - Finish ROJ | Not Started | 23-Sep-24 17:00:00 | 65 |  |
| 1213 | CHI05-PH2-FIT-BL-D5,4,1,10,1 | CHI05-OFCI-1300 | UMS & URS - COLO 2 - In storage, needs modifications | Not Started | 02-Oct-24 17:00:00 | 63 | 02-Oct-24 08:00:00 |
| 1214 | CHI05-PH2-FIT-BL-D5,4,1,10,2 | CHI05-OFCI-1580 | UMS & URS - COLO 3 - In storage, needs modifications | Not Started | 02-Oct-24 17:00:00 | 68 | 02-Oct-24 08:00:00 |
| 1215 | CHI05-PH2-FIT-BL-D5,4,1,10,3 | CHI05-OFCI-1720 | UMS & URS - COLO 4 - In storage, needs modifications | Not Started | 02-Oct-24 17:00:00 | 73 | 02-Oct-24 08:00:00 |
| 1216 | CHI05-PH2-FIT-BL-D5,4,1,10,5 | CHI05-OFCI-1880 | UMS & URS - COLO 5 - In storage, needs modifications | Not Started | 23-Sep-24 17:00:00 | 0 | 23-Sep-24 08:00:00 |
| 1217 | CHI05-PH2-FIT-BL-D5,4,1,11,1 | CHI05-OFCI-1610 | PDU - COLO 2 - Start ROJ | Not Started |  | 0 | 28-Oct-24 08:00:00 |
| 1218 | CHI05-PH2-FIT-BL-D5,4,1,11,1 | CHI05-OFCI-1620 | PDU - COLO 2 - ROJ | Not Started | 11-Nov-24 17:00:00 | 13 | 28-Oct-24 08:00:00 |
| 1219 | CHI05-PH2-FIT-BL-D5,4,1,11,1 | CHI05-OFCI-1820 | PDU - COLO 2 - Finish ROJ | Not Started | 11-Nov-24 17:00:00 | 13 |  |
| 1220 | CHI05-PH2-FIT-BL-D5,4,1,11,2 | CHI05-OFCI-2060 | PDU - COLO 3 - Start ROJ | Not Started |  | 0 | 02-Dec-24 08:00:00 |
| 1221 | CHI05-PH2-FIT-BL-D5,4,1,11,2 | CHI05-OFCI-2070 | PDU - COLO 3 - ROJ | Not Started | 16-Dec-24 17:00:00 | 36 | 02-Dec-24 08:00:00 |
| 1222 | CHI05-PH2-FIT-BL-D5,4,1,11,2 | CHI05-OFCI-2160 | PDU - COLO 3 - Finish ROJ | Not Started | 16-Dec-24 17:00:00 | 36 |  |
| 1223 | CHI05-PH2-FIT-BL-D5,4,1,11,3 | CHI05-OFCI-2080 | PDU - COLO 4 - Start ROJ | Not Started |  | 42 | 02-Dec-24 08:00:00 |
| 1224 | CHI05-PH2-FIT-BL-D5,4,1,11,3 | CHI05-OFCI-2090 | PDU - COLO 4 - ROJ | Not Started | 16-Dec-24 17:00:00 | 42 | 02-Dec-24 08:00:00 |
| 1225 | CHI05-PH2-FIT-BL-D5,4,1,11,3 | CHI05-OFCI-2170 | PDU - COLO 4 - Finish ROJ | Not Started | 16-Dec-24 17:00:00 | 42 |  |
| 1226 | CHI05-PH2-FIT-BL-D5,4,1,11,5 | CHI05-OFCI-1630 | PDU - COLO 5 - Start ROJ | Not Started |  | 69 | 28-Oct-24 08:00:00 |
| 1227 | CHI05-PH2-FIT-BL-D5,4,1,11,5 | CHI05-OFCI-1640 | PDU - COLO 5 - ROJ | Not Started | 11-Nov-24 17:00:00 | 69 | 28-Oct-24 08:00:00 |
| 1228 | CHI05-PH2-FIT-BL-D5,4,1,11,5 | CHI05-OFCI-1830 | PDU - COLO 5 - Finish ROJ | Not Started | 11-Nov-24 17:00:00 | 69 |  |
| 1229 | CHI05-PH2-FIT-BL-D5,4,1,12,1 | CHI05-OFCI-1310 | UPS - COLO 2 - In storage | Not Started | 15-Oct-24 17:00:00 | 89 | 02-Oct-24 08:00:00 |
| 1230 | CHI05-PH2-FIT-BL-D5,4,1,12,2 | CHI05-OFCI-1320 | UPS - COLO 3 - In storage | Not Started | 15-Oct-24 17:00:00 | 99 | 02-Oct-24 08:00:00 |
| 1231 | CHI05-PH2-FIT-BL-D5,4,1,12,3 | CHI05-OFCI-1330 | UPS - COLO 4 - In storage | Not Started | 15-Oct-24 17:00:00 | 100 | 02-Oct-24 08:00:00 |
| 1232 | CHI05-PH2-FIT-BL-D5,4,1,12,5 | CHI05-OFCI-1340 | UPS - COLO 5 - Start ROJ | Not Started |  | 101 | 02-Oct-24 08:00:00 |
| 1233 | CHI05-PH2-FIT-BL-D5,4,1,12,5 | CHI05-OFCI-1350 | UPS - COLO 5 - ROJ | Not Started | 15-Oct-24 17:00:00 | 101 | 02-Oct-24 08:00:00 |
| 1234 | CHI05-PH2-FIT-BL-D5,4,1,12,5 | CHI05-OFCI-1560 | UPS - COLO 5 - Finish ROJ | Not Started | 15-Oct-24 17:00:00 | 101 |  |
| 1235 | CHI05-PH2-FIT-BL-D5,4,1,13,1 | CHI05-OFCI-2000 | UTS - Site - Start ROJ | Not Started |  | 0 | 29-Nov-24 08:00:00 |
| 1236 | CHI05-PH2-FIT-BL-D5,4,1,13,1 | CHI05-OFCI-2010 | UTS - Site - ROJ | Not Started | 20-Jan-25 17:00:00 | 28 | 29-Nov-24 08:00:00 |
| 1237 | CHI05-PH2-FIT-BL-D5,4,1,13,1 | CHI05-OFCI-2130 | UTS - Site - Finish ROJ | Not Started | 20-Jan-25 17:00:00 | 28 |  |
| 1238 | CHI05-PH2-FIT-BL-D5,4,1,14,1 | CHI05-OFCI-1360 | MVS (UPM) Terminators/Lighting Arrestors - COLO 2 - Start ROJ | Not Started |  | 130 | 02-Oct-24 08:00:00 |
| 1239 | CHI05-PH2-FIT-BL-D5,4,1,14,1 | CHI05-OFCI-1370 | MVS (UPM) Terminators/Lighting Arrestors - COLO 2 - ROJ | Not Started | 16-Dec-24 17:00:00 | 130 | 02-Oct-24 08:00:00 |
| 1240 | CHI05-PH2-FIT-BL-D5,4,1,14,1 | CHI05-OFCI-2120 | MVS (UPM) Terminators/Lighting Arrestors - COLO 2 - Finish ROJ | Not Started | 16-Dec-24 17:00:00 | 130 |  |
| 1241 | CHI05-PH2-FIT-BL-D5,4,1,14,2 | CHI05-OFCI-1380 | MVS (UPM) Terminators/Lighting Arrestors - COLO 3 - Start ROJ | Not Started |  | 130 | 02-Oct-24 08:00:00 |
| 1242 | CHI05-PH2-FIT-BL-D5,4,1,14,2 | CHI05-OFCI-1390 | MVS (UPM) Terminators/Lighting Arrestors - COLO 3 - ROJ | Not Started | 16-Dec-24 17:00:00 | 130 | 02-Oct-24 08:00:00 |
| 1243 | CHI05-PH2-FIT-BL-D5,4,1,14,2 | CHI05-OFCI-2200 | MVS (UPM) Terminators/Lighting Arrestors - COLO 3 - Finish ROJ | Not Started | 16-Dec-24 17:00:00 | 130 |  |
| 1244 | CHI05-PH2-FIT-BL-D5,4,1,14,3 | CHI05-OFCI-1400 | MVS (UPM) Terminators/Lighting Arrestors - COLO 4 - Start ROJ | Not Started |  | 135 | 02-Oct-24 08:00:00 |
| 1245 | CHI05-PH2-FIT-BL-D5,4,1,14,3 | CHI05-OFCI-1410 | MVS (UPM) Terminators/Lighting Arrestors - COLO 4 - ROJ | Not Started | 16-Dec-24 17:00:00 | 135 | 02-Oct-24 08:00:00 |
| 1246 | CHI05-PH2-FIT-BL-D5,4,1,14,3 | CHI05-OFCI-2210 | MVS (UPM) Terminators/Lighting Arrestors - COLO 4 - Finish ROJ | Not Started | 16-Dec-24 17:00:00 | 135 |  |
| 1247 | CHI05-PH2-FIT-BL-D5,4,1,14,5 | CHI05-OFCI-1420 | MVS (UPM) Terminators/Lighting Arrestors - COLO 5 - Start ROJ | Not Started |  | 130 | 02-Oct-24 08:00:00 |
| 1248 | CHI05-PH2-FIT-BL-D5,4,1,14,5 | CHI05-OFCI-1430 | MVS (UPM) Terminators/Lighting Arrestors - COLO 5 - ROJ | Not Started | 16-Dec-24 17:00:00 | 130 | 02-Oct-24 08:00:00 |
| 1249 | CHI05-PH2-FIT-BL-D5,4,1,14,5 | CHI05-OFCI-2220 | MVS (UPM) Terminators/Lighting Arrestors - COLO 5 - Finish ROJ | Not Started | 16-Dec-24 17:00:00 | 130 |  |
| 1250 | CHI05-PH2-FIT-BL-D5,4,1,15,1 | CHI05-OFCI-1740 | Mufflers - COLO 2 - Start ROJ | Not Started |  | 47 | 02-Oct-24 08:00:00 |
| 1251 | CHI05-PH2-FIT-BL-D5,4,1,15,1 | CHI05-OFCI-1750 | Mufflers - COLO 2 - ROJ | Not Started | 25-Nov-24 17:00:00 | 82 | 02-Oct-24 08:00:00 |
| 1252 | CHI05-PH2-FIT-BL-D5,4,1,15,1 | CHI05-OFCI-1890 | Mufflers - COLO 2 - Finish ROJ | Not Started | 25-Nov-24 17:00:00 | 82 |  |
| 1253 | CHI05-PH2-FIT-BL-D5,4,1,15,2 | CHI05-OFCI-1760 | Mufflers - COLO 3 - Start ROJ | Not Started |  | 47 | 02-Oct-24 08:00:00 |
| 1254 | CHI05-PH2-FIT-BL-D5,4,1,15,2 | CHI05-OFCI-1770 | Mufflers - COLO 3 - ROJ | Not Started | 02-Dec-24 17:00:00 | 47 | 02-Oct-24 08:00:00 |
| 1255 | CHI05-PH2-FIT-BL-D5,4,1,15,2 | CHI05-OFCI-1900 | Mufflers - COLO 3 - Finish ROJ | Not Started | 02-Dec-24 17:00:00 | 47 |  |
| 1256 | CHI05-PH2-FIT-BL-D5,4,1,15,3 | CHI05-OFCI-1780 | Mufflers - COLO 4 - Start ROJ | Not Started |  | 47 | 03-Dec-24 08:00:00 |
| 1257 | CHI05-PH2-FIT-BL-D5,4,1,15,3 | CHI05-OFCI-1790 | Mufflers - COLO 4 - ROJ | Not Started | 09-Dec-24 17:00:00 | 47 | 03-Dec-24 08:00:00 |
| 1258 | CHI05-PH2-FIT-BL-D5,4,1,15,3 | CHI05-OFCI-1910 | Mufflers - COLO 4 - Finish ROJ | Not Started | 09-Dec-24 17:00:00 | 47 |  |
| 1259 | CHI05-PH2-FIT-BL-D5,4,1,15,5 | CHI05-OFCI-1800 | Mufflers - COLO 5 - Start ROJ | Not Started |  | 51 | 02-Oct-24 08:00:00 |
| 1260 | CHI05-PH2-FIT-BL-D5,4,1,15,5 | CHI05-OFCI-1810 | Mufflers - COLO 5 - ROJ | Not Started | 16-Dec-24 17:00:00 | 51 | 02-Oct-24 08:00:00 |

| entry | activity_code | activity_id | activity_name | activity_status | finish | total_float | start |
| --- | --- | --- | --- | --- | --- | --- | --- |
| 1261 | CHI05-PH2-FIT-BL-D5,4,1,15,5 | CHI05-OFCI-1920 | Mufflers - COLO 5 - Finish ROJ | Not Started | 16-Dec-24 17:00:00 | 51 |  |
| 1262 | CHI05-PH2-FIT-BL-D5,4,1,16,1 | A1000 | MSB - COLO 2 - ROJ | Not Started | 27-Nov-24 17:00:00 | 60 | 02-Oct-24 08:00:00 |
| 1263 | CHI05-PH2-FIT-BL-D5,4,1,16,2 | A1010 | MSB - COLO 3 - ROJ | Not Started | 05-Dec-24 17:00:00 | 60 | 29-Nov-24 08:00:00 |
| 1264 | CHI05-PH2-FIT-BL-D5,4,1,16,3 | A1020 | MSB - COLO 4 - ROJ | Not Started | 06-Jan-25 17:00:00 | 60 | 06-Dec-24 08:00:00 |
| 1265 | CHI05-PH2-FIT-BL-D5,4,1,16,5 | A1040 | MSB - COLO 5 - ROJ | Not Started | 05-Dec-24 17:00:00 | 81 | 29-Nov-24 08:00:00 |
