| entry | phase | location | trade | activity_code | activity_name | start | finish |
| --- | --- | --- | --- | --- | --- | --- | --- |
| 1 | Precon | Prep | Construction Company | PRE-1 | 3.0, 4.0. 5.0 pre, during and post construction total job | 28-Sep-2023 | 05-May-2025 |
| 2 | Precon | Prep | Construction Company | PRE-2 | 3.0 Pre construction and mobilization | 28-Sep-2023 | 20-Dec-2023 |
| 3 | Precon | Prep | Construction Company | PRE-3 | Assign Permits check list | 28-Sep-2023 | 20-Dec-2023 |
| 4 | Precon | Prep | Construction Company | PRE-4 | Assign Health and Safety checklist | 28-Sep-2023 | 20-Dec-2023 |
| 5 | Precon | Prep | Construction Company | PRE-5 | Assign Mobilization check list | 28-Sep-2023 | 20-Dec-2023 |
| 6 | Precon | Prep | Construction Company | PRE-6 | Assign Equipment & Tools check list | 28-Sep-2023 | 20-Dec-2023 |
| 7 | Precon | Prep | Construction Company | PRE-7 | Assign Safety Equipment and Materials checklist | 28-Sep-2023 | 20-Dec-2023 |
| 8 | Precon | Prep | Construction Company | PRE-8 | Assign Procurement Plan check list | 28-Sep-2023 | 20-Dec-2023 |
| 9 | Precon | Prep | Construction Company | PRE-9 | Assign Site Services Planning check list | 28-Sep-2023 | 20-Dec-2023 |
| 10 | Precon | Prep | Construction Company | PRE-10 | Assign Sub Contractor planning checklist | 28-Sep-2023 | 20-Dec-2023 |
| 11 | Precon | Prep | Construction Company | PRE-11 | Assign Project Team | 28-Sep-2023 | 20-Dec-2023 |
| 12 | Precon | Prep | Construction Company | PRE-12 | Hold Pre Kick-Off meeting with Engineers and Trades people | 28-Sep-2023 | 02-Oct-2023 |
| 13 | Precon | Prep | Construction Company | PRE-13 | Assign hollow core ordering checklist | 28-Sep-2023 | 28-Sep-2023 |
| 14 | Precon | Prep | Construction Company | PRE-14 | Organize site team to have training and certificates | 28-Sep-2023 | 28-Sep-2023 |
| 15 | Precon | Prep | Construction Company | PRE-15 | Order Rebar (30 days before site delivery date required) | 08-Dec-2023 | 08-Dec-2023 |
| 16 | Sitework & Foundations | Site | Site Sub | SITE-1 | 4.1 Site Services & Foundation Work | 21-Dec-2023 | 25-Mar-2024 |
| 17 | Sitework | Site | Site Sub | SITE-2 | Site Preparation | 21-Dec-2023 | 05-Jan-2024 |
| 18 | Sitework | Site | Site Sub | SITE-3 | 18. Assign site prep check list (First) | 28-Dec-2023 | 28-Dec-2023 |
| 19 | Sitework | Site | Site Sub | SITE-4 | deliver rebar (footings and gradebeam only) | 21-Dec-2023 | 21-Dec-2023 |
| 20 | Sitework | Site | Site Sub | SITE-5 | Order all Anchor bolts | 21-Dec-2023 | 21-Dec-2023 |
| 21 | Sitework | Site | Site Sub | SITE-6 | Schedule locates to be done | 21-Dec-2023 | 27-Dec-2023 |
| 22 | Sitework | Site | Site Sub | SITE-7 | Survey for balcony piles | 21-Dec-2023 | 22-Dec-2023 |
| 23 | Sitework | Site | Site Sub | SITE-8 | Schedule Pile contractor | 21-Dec-2023 | 21-Dec-2023 |
| 24 | Sitework | Site | Site Sub | SITE-9 | Install balcony piles | 25-Dec-2023 | 27-Dec-2023 |
| 25 | Sitework | Site | Site Sub | SITE-10 | Strip site | 29-Dec-2023 | 04-Jan-2024 |
| 26 | Sitework | Site | Site Sub | SITE-11 | Measure corner offsets for excavation | 05-Jan-2024 | 05-Jan-2024 |
| 27 | Sitework | Site | Site Sub | SITE-12 | Excavation | 08-Jan-2024 | 18-Jan-2024 |
| 28 | Sitework | Site | Site Sub | SITE-13 | 28. Assign Pre excavation checklist | 08-Jan-2024 | 08-Jan-2024 |
| 29 | Sitework | Site | Site Sub | SITE-14 | Dig footing and parkade foot print | 08-Jan-2024 | 16-Jan-2024 |
| 30 | Sitework | Site | Site Sub | SITE-15 | Survey offsets, and footings | 17-Jan-2024 | 17-Jan-2024 |
| 31 | Sitework | Site | Site Sub | SITE-16 | Geo Tech Engineer inspection | 18-Jan-2024 | 18-Jan-2024 |
| 32 | Foundations | Bellow the Ground | Concrete | FOUND-1 | Foundation | 19-Jan-2024 | 29-Feb-2024 |
| 33 | Foundations | Bellow the Ground | Concrete | FOUND-2 | Form footings | 19-Jan-2024 | 24-Jan-2024 |
| 34 | Foundations | Bellow the Ground | Concrete | FOUND-3 | Tie footing rebar | 25-Jan-2024 | 31-Jan-2024 |
| 35 | Foundations | Bellow the Ground | Concrete | FOUND-4 | Rebar Inspection Structural Engineer | 01-Feb-2024 | 01-Feb-2024 |
| 36 | Foundations | Bellow the Ground | Concrete | FOUND-5 | Assign pre-pour checklist | 02-Feb-2024 | 02-Feb-2024 |
| 37 | Foundations | Bellow the Ground | Concrete | FOUND-6 | Pour footings | 05-Feb-2024 | 05-Feb-2024 |
| 38 | Foundations | Bellow the Ground | Concrete | FOUND-7 | Form grade beam | 06-Feb-2024 | 14-Feb-2024 |
| 39 | Foundations | Bellow the Ground | Concrete | FOUND-8 | Build templates for Anchor bolts | 15-Feb-2024 | 15-Feb-2024 |
| 40 | Foundations | Bellow the Ground | Concrete | FOUND-9 | Tie Grade beam rebar | 16-Feb-2024 | 26-Feb-2024 |
| 41 | Foundations | Bellow the Ground | Concrete | FOUND-10 | Ensure Sleeves for electrical are run in the grade beam prior to pouring | 06-Feb-2024 | 06-Feb-2024 |
| 42 | Foundations | Bellow the Ground | Concrete | FOUND-11 | Assign pre concrete pour checklist | 27-Feb-2024 | 27-Feb-2024 |
| 43 | Foundations | Bellow the Ground | Concrete | FOUND-12 | Rebar inspection Structural Engineer | 28-Feb-2024 | 28-Feb-2024 |
| 44 | Foundations | Bellow the Ground | Concrete | FOUND-13 | Pour grade beam | 29-Feb-2024 | 29-Feb-2024 |
| 45 | Foundations | Bellow the Ground | Concrete | FOUND-14 | Back fill foundation | 01-Mar-2024 | 14-Mar-2024 |
| 46 | Foundations | Bellow the Ground | Concrete | FOUND-15 | Assign pre back fill check list | 01-Mar-2024 | 01-Mar-2024 |
| 47 | Foundations | Bellow the Ground | Concrete | FOUND-16 | Install underground insulation | 04-Mar-2024 | 05-Mar-2024 |
| 48 | Foundations | Bellow the Ground | Concrete | FOUND-17 | Back fill exterior grade beam | 06-Mar-2024 | 07-Mar-2024 |
| 49 | Foundations | Bellow the Ground | Concrete | FOUND-18 | Back fill interior parkade | 08-Mar-2024 | 14-Mar-2024 |
| 50 | Foundations | Bellow the Ground | Concrete | FOUND-19 | Site services W/S/S install | 15-Mar-2024 | 25-Mar-2024 |
| 51 | Foundations | Bellow the Ground | Concrete | FOUND-20 | Assign water and sewer and storm checklist | 15-Mar-2024 | 15-Mar-2024 |
| 52 | Foundations | Bellow the Ground | Concrete | FOUND-21 | Install water and sewer | 18-Mar-2024 | 22-Mar-2024 |
| 53 | Foundations | Bellow the Ground | Concrete | FOUND-22 | Assign water and sewer commissioning checklist | 25-Mar-2024 | 25-Mar-2024 |
| 54 | Foundations | Bellow the Ground | Concrete | FOUND-23 | Commision Water/sewer/storm | 25-Mar-2024 | 25-Mar-2024 |
| 55 | Foundations | Bellow the Ground | Concrete | FOUND-24 | Strucutral Steel | 15-Mar-2024 | 21-Mar-2024 |
| 56 | Foundations | Bellow the Ground | Concrete | FOUND-25 | Assign structural steel checklist | 15-Mar-2024 | 15-Mar-2024 |
| 57 | Foundations | Bellow the Ground | Concrete | FOUND-26 | Structural steel delivered and sorted onsite | 18-Mar-2024 | 18-Mar-2024 |
| 58 | Foundations | Bellow the Ground | Concrete | FOUND-27 | Structural steel erection | 20-Mar-2024 | 21-Mar-2024 |
| 59 | Framing & RI | Structure | Framer & MEP | STR-1 | 4.2 Framing | 11-Apr-2024 | 03-Jan-2025 |
| 60 | Framing & RI | Structure | Framer & MEP | STR-2 | Rough in parkade slab | 12-Jun-2024 | 26-Jun-2024 |
| 61 | Framing & RI | Structure | Framer & MEP | STR-3 | Mechanical rough in in slab | 12-Jun-2024 | 18-Jun-2024 |
| 62 | Framing & RI | Structure | Framer & MEP | STR-4 | Electrical rough in in slab | 12-Jun-2024 | 18-Jun-2024 |
| 63 | Framing & RI | Structure | Framer & MEP | STR-5 | Deliver pakade slab rebar | 19-Jun-2024 | 19-Jun-2024 |
| 64 | Framing & RI | Structure | Framer & MEP | STR-6 | Back fill and level parkade | 20-Jun-2024 | 26-Jun-2024 |
| 65 | Framing & RI | Structure | Framer & MEP | STR-7 | Pour parakde slab | 27-Jun-2024 | 10-Jul-2024 |
| 66 | Framing & RI | Structure | Framer & MEP | STR-8 | Assign parkade slab rough in checklist | 27-Jun-2024 | 27-Jun-2024 |
| 67 | Framing & RI | Structure | Framer & MEP | STR-9 | Radon rock install | 28-Jun-2024 | 01-Jul-2024 |
| 68 | Framing & RI | Structure | Framer & MEP | STR-10 | Install poly | 02-Jul-2024 | 02-Jul-2024 |
| 69 | Framing & RI | Structure | Framer & MEP | STR-11 | Tie parkade rebar | 03-Jul-2024 | 05-Jul-2024 |
| 70 | Framing & RI | Structure | Framer & MEP | STR-12 | Assign pre concrete pour checklist | 08-Jul-2024 | 08-Jul-2024 |

| entry | phase | location | trade | activity_code | activity_name | start | finish |
| --- | --- | --- | --- | --- | --- | --- | --- |
| 71 | Framing & RI | Structure | Framer & MEP | STR-13 | Pour parkade floor | 09-Jul-2024 | 10-Jul-2024 |
| 72 | Framing & RI | Structure | Framer & MEP | STR-14 | Framing parkade | 11-Apr-2024 | 16-Apr-2024 |
| 73 | Framing & RI | Structure | Framer & MEP | STR-15 | Frame parkade level | 11-Apr-2024 | 15-Apr-2024 |
| 74 | Framing & RI | Structure | Framer & MEP | STR-16 | Assign framing checklist | 16-Apr-2024 | 16-Apr-2024 |
| 75 | Framing & RI | Structure | Framer & MEP | STR-17 | Hollowcore 2nd floor | 16-Apr-2024 | 17-Jun-2024 |
| 76 | Framing & RI | Structure | Framer & MEP | STR-18 | Install hollowcore 2nd floor , Install backer rod & Grout 2nd floor | 16-Apr-2024 | 18-Apr-2024 |
| 77 | Framing & RI | Structure | Framer & MEP | STR-19 | Assign hollow core erection checklist | 19-Apr-2024 | 19-Apr-2024 |
| 78 | Framing & RI | Structure | Framer & MEP | STR-20 | Paint underside of ceiling in parkade | 17-Jun-2024 | 17-Jun-2024 |
| 79 | Framing & RI | Structure | Framer & MEP | STR-21 | Framing 2nd floor | 19-Apr-2024 | 14-May-2024 |
| 80 | Framing & RI | Structure | Framer & MEP | STR-22 | Frame 2nd floor | 19-Apr-2024 | 13-May-2024 |
| 81 | Framing & RI | Structure | Framer & MEP | STR-23 | Assign framing check list | 14-May-2024 | 14-May-2024 |
| 82 | Framing & RI | Structure | Framer & MEP | STR-24 | Hollowcore 3rd floor | 23-May-2024 | 28-May-2024 |
| 83 | Framing & RI | Structure | Framer & MEP | STR-25 | Install hollow core 3rd floor, Install backer rod & grout | 23-May-2024 | 28-May-2024 |
| 84 | Framing & RI | Structure | Framer & MEP | STR-26 | Assign hollow core erection checklist | 27-May-2024 | 27-May-2024 |
| 85 | Framing & RI | Structure | Framer & MEP | STR-27 | Framing 3rd floor | 28-May-2024 | 26-Jul-2024 |
| 86 | Framing & RI | Structure | Framer & MEP | STR-28 | Frame 3rd floor | 28-May-2024 | 07-Jun-2024 |
| 87 | Framing & RI | Structure | Framer & MEP | STR-29 | Assign framing checklist | 10-Jun-2024 | 10-Jun-2024 |
| 88 | Framing & RI | Structure | Framer & MEP | STR-30 | Layout suites on 2nd floor | 18-Jul-2024 | 22-Jul-2024 |
| 89 | Framing & RI | Structure | Framer & MEP | STR-31 | Core floors begin at 2nd | 24-Jul-2024 | 26-Jul-2024 |
| 90 | Framing & RI | Structure | Framer & MEP | STR-32 | Hollowcore 4th floor | 11-Jun-2024 | 13-Jun-2024 |
| 91 | Framing & RI | Structure | Framer & MEP | STR-33 | Install hollow core 4th floor and grout | 11-Jun-2024 | 12-Jun-2024 |
| 92 | Framing & RI | Structure | Framer & MEP | STR-34 | Assign hollow core checklist | 13-Jun-2024 | 13-Jun-2024 |
| 93 | Framing & RI | Structure | Framer & MEP | STR-35 | Framing 4th floor | 19-Jun-2024 | 31-Jul-2024 |
| 94 | Framing & RI | Structure | Framer & MEP | STR-36 | Frame 4th floor | 19-Jun-2024 | 05-Jul-2024 |
| 95 | Framing & RI | Structure | Framer & MEP | STR-37 | Assign framing checklist | 08-Jul-2024 | 08-Jul-2024 |
| 96 | Framing & RI | Structure | Framer & MEP | STR-38 | Layout suites on 3rd floor | 23-Jul-2024 | 26-Jul-2024 |
| 97 | Framing & RI | Structure | Framer & MEP | STR-39 | Core floor beings at 3rd floor | 29-Jul-2024 | 31-Jul-2024 |
| 98 | Framing & RI | Structure | Framer & MEP | STR-40 | Roof trusses install | 09-Jul-2024 | 20-Aug-2024 |
| 99 | Framing & RI | Structure | Framer & MEP | STR-41 | Install roof trusses and sheeting and towers | 09-Jul-2024 | 06-Aug-2024 |
| 100 | Framing & RI | Structure | Framer & MEP | STR-42 | Assign roof trusses framing checklist | 07-Aug-2024 | 07-Aug-2024 |
| 101 | Framing & RI | Structure | Framer & MEP | STR-43 | Call for structural inspection | 20-Aug-2024 | 20-Aug-2024 |
| 102 | Framing & RI | Structure | Framer & MEP | STR-44 | Layout suites 4th floor | 29-Jul-2024 | 01-Aug-2024 |
| 103 | Framing & RI | Structure | Framer & MEP | STR-45 | Core floor beings at 4th floor | 01-Aug-2024 | 02-Aug-2024 |
| 104 | Exterior | Building | Exterior Subs | EXT-1 | install windows and doors | 08-Jul-2024 | 26-Nov-2024 |
| 105 | Exterior | Building | Exterior Subs | EXT-2 | Deliver tubs & showers to suites / checklist | 17-Jul-2024 | 18-Jul-2024 |
| 106 | Exterior | Building | Exterior Subs | EXT-3 | Assign window & door installation checklist | 08-Jul-2024 | 08-Jul-2024 |
| 107 | Exterior | Building | Exterior Subs | EXT-4 | Install windows & doors all floors | 01-Aug-2024 | 13-Aug-2024 |
| 108 | Exterior | Building | Exterior Subs | EXT-5 | Install stairs | 30-Jul-2024 | 30-Jul-2024 |
| 109 | Exterior | Building | Exterior Subs | EXT-6 | Call for envelope reviewer inspection | 26-Nov-2024 | 26-Nov-2024 |
| 110 | Exterior | Building | Exterior Subs | EXT-7 | Roofing and water proofing | 07-Aug-2024 | 23-Aug-2024 |
| 111 | Exterior | Building | Exterior Subs | EXT-8 | Assign roofing and water proofing checklist | 07-Aug-2024 | 07-Aug-2024 |
| 112 | Exterior | Building | Exterior Subs | EXT-9 | Install roofing and water proofing | 12-Aug-2024 | 23-Aug-2024 |
| 113 | Exterior | Building | Exterior Subs | EXT-10 | Soffit & Tower Siding | 03-Sep-2024 | 03-Jan-2025 |
| 114 | Exterior | Building | Exterior Subs | EXT-11 | Building paper the whole building | 03-Sep-2024 | 25-Nov-2024 |
| 115 | Exterior | Building | Exterior Subs | EXT-12 | Install fascia and soffit 4th floor | 15-Nov-2024 | 25-Nov-2024 |
| 116 | Exterior | Building | Exterior Subs | EXT-13 | Assign tower siding checklist | 26-Nov-2024 | 26-Nov-2024 |
| 117 | Exterior | Building | Exterior Subs | EXT-14 | Siding towers | 27-Nov-2024 | 16-Dec-2024 |
| 118 | Exterior | Building | Exterior Subs | EXT-15 | Delivery of Elevator & Install | 14-Oct-2024 | 03-Jan-2025 |
| 119 | Exterior | Building | Exterior Subs | EXT-16 | Exterior concrete works | 26-Aug-2024 | 19-Dec-2024 |
| 120 | Exterior | Building | Exterior Subs | EXT-17 | Excavate areas | 26-Aug-2024 | 27-Aug-2024 |
| 121 | Exterior | Building | Exterior Subs | EXT-18 | Form exterior pads | 28-Aug-2024 | 03-Sep-2024 |
| 122 | Exterior | Building | Exterior Subs | EXT-19 | Tie rebar exterior pads | 04-Sep-2024 | 06-Sep-2024 |
| 123 | Exterior | Building | Exterior Subs | EXT-20 | Assign conrete pour checklist | 09-Sep-2024 | 09-Sep-2024 |
| 124 | Exterior | Building | Exterior Subs | EXT-21 | Pour exterior pads | 10-Sep-2024 | 10-Sep-2024 |
| 125 | Exterior | Building | Exterior Subs | EXT-22 | Excatae exterior sidewalks | 11-Sep-2024 | 03-Dec-2024 |
| 126 | Exterior | Building | Exterior Subs | EXT-23 | Form exterior sidewalks | 04-Dec-2024 | 06-Dec-2024 |
| 127 | Exterior | Building | Exterior Subs | EXT-24 | Rebar exterior sidewalks | 09-Dec-2024 | 11-Dec-2024 |
| 128 | Exterior | Building | Exterior Subs | EXT-25 | Assign pre concrete pour checklist | 12-Dec-2024 | 16-Dec-2024 |
| 129 | Exterior | Building | Exterior Subs | EXT-26 | Pour exterior sidewalks | 17-Dec-2024 | 19-Dec-2024 |
| 130 | Interiors | Finishes | Clean | Cl-1 | Construction clean 2nd floor | 24-Feb-2025 | 27-Feb-2025 |
| 131 | Interiors | Finishes | Clean | Cl-1 | Construction clean on 1 | 14-Feb-2025 | 18-Feb-2025 |
| 132 | Interiors | Finishes | Clean | Cl-1 | Construction clean on 3rd | 11-Feb-2025 | 17-Feb-2025 |
| 133 | Interiors | Finishes | Clean | Cl-1 | Construction clean on 4th | 03-Feb-2025 | 07-Feb-2025 |
| 134 | Interiors | Finishes | Clean | Cl-2 | Final suite clean | 27-Feb-2025 | 28-Feb-2025 |
| 135 | Interiors | Finishes | Clean | Cl-2 | Final suite clean on 1 | 20-Feb-2025 | 24-Feb-2025 |
| 136 | Interiors | Finishes | Clean | Cl-2 | Final suite clean on 3rd | 17-Feb-2025 | 18-Feb-2025 |
| 137 | Interiors | Finishes | Clean | Cl-2 | Final suite clean on 4th | 07-Feb-2025 | 10-Feb-2025 |
| 138 | Interiors | Finishes | Construction Company | CC-1 | Assign Unit Commissioning Inspection list 2nd floor | 27-Feb-2025 | 27-Feb-2025 |
| 139 | Interiors | Finishes | Construction Company | CC-1 | Assign Unit Commissioning Inspection list on 1 | 19-Feb-2025 | 19-Feb-2025 |
| 140 | Interiors | Finishes | Construction Company | CC-1 | Assign Unit Commissioning Inspection list on 3rd | 17-Feb-2025 | 17-Feb-2025 |

| entry | phase | location | trade | activity_code | activity_name | start | finish |
| --- | --- | --- | --- | --- | --- | --- | --- |
| 141 | Interiors | Finishes | Drywall | D-1 | 2nd floor - Taper do the rectification of deficiences | 23-Dec-2024 | 23-Dec-2024 |
| 142 | Interiors | Finishes | Drywall | D-1 | 3rd floor - Taper do the rectification of deficiencies | 10-Dec-2024 | 10-Dec-2024 |
| 143 | Interiors | Finishes | Drywall | D-1 | 4th floor - Taper do the rectification of deficiencies | 02-Dec-2024 | 03-Dec-2024 |
| 144 | Interiors | Rough-Ins | Drywall | D-2 | 4th floor framing inspection | 04-Nov-2024 | 04-Nov-2024 |
| 145 | Interiors | Rough-Ins | Drywall | D-3 | Assign Corridor & Stairwell pre board inspection checklist | 28-Nov-2024 | 28-Nov-2024 |
| 146 | Interiors | Rough-Ins | Drywall | D-3 | Assign corridor & stairwell pre board inspection checklist | 12-Nov-2024 | 12-Nov-2024 |
| 147 | Interiors | Rough-Ins | Drywall | D-3 | Assign Corridor & Stairwell pre board inspection checklist | 08-Nov-2024 | 08-Nov-2024 |
| 148 | Interiors | Rough-Ins | Drywall | D-4 | Assign pre board inspection check list | 28-Nov-2024 | 28-Nov-2024 |
| 149 | Interiors | Rough-Ins | Drywall | D-4 | Assign pre board inspection check list | 15-Nov-2024 | 15-Nov-2024 |
| 150 | Interiors | Rough-Ins | Drywall | D-4 | Assign pre board inspection checklist | 22-Jan-2025 | 22-Jan-2025 |
| 151 | Interiors | Rough-Ins | Drywall | D-4 | Assign pre board inspection checklist | 22-Jan-2025 | 22-Jan-2025 |
| 152 | Interiors | Rough-Ins | Drywall | D-4 | Assign pre board interior walls checklist | 28-Nov-2024 | 28-Nov-2024 |
| 153 | Interiors | Rough-Ins | Drywall | D-4 | Assign pre board interior walls checklist | 15-Nov-2024 | 15-Nov-2024 |
| 154 | Interiors | Rough-Ins | Drywall | D-4 | Assign pre board interior walls checklist | 08-Nov-2024 | 08-Nov-2024 |
| 155 | Interiors | Rough-Ins | Drywall | D-5 | Assign siding checklist | 24-Dec-2024 | 24-Dec-2024 |
| 156 | Interiors | Rough-Ins | Drywall | D-5 | Assign siding checklist | 10-Dec-2024 | 10-Dec-2024 |
| 157 | Interiors | Rough-Ins | Drywall | D-5 | Assign siding checklist | 22-Nov-2024 | 22-Nov-2024 |
| 158 | Interiors | Rough-Ins | Drywall | D-5 | Assign siding checklist | 06-Nov-2024 | 06-Nov-2024 |
| 159 | Interiors | Rough-Ins | Drywall | D-6 | Assign taping inspection checklist | 23-Dec-2024 | 23-Dec-2024 |
| 160 | Interiors | Rough-Ins | Drywall | D-6 | Assign taping inspection checklist | 07-Oct-2024 | 07-Oct-2024 |
| 161 | Interiors | Rough-Ins | Drywall | D-6 | Assign taping inspection checklist | 19-Dec-2024 | 19-Dec-2024 |
| 162 | Interiors | Rough-Ins | Drywall | D-6 | Assign taping inspection checklist | 05-Dec-2024 | 05-Dec-2024 |
| 163 | Interiors | Rough-Ins | Drywall | D-6 | Assign taping inspection checklist | 15-Nov-2024 | 15-Nov-2024 |
| 164 | Interiors | Rough-Ins | Drywall | D-6 | Assign taping inspection checklist | 28-Nov-2024 | 28-Nov-2024 |
| 165 | Interiors | Rough-Ins | Drywall | D-6 | Assign taping inspection checklist for suites | 19-Dec-2024 | 19-Dec-2024 |
| 166 | Interiors | Rough-Ins | Drywall | D-6 | Assign taping inspection checklist for suites | 05-Dec-2024 | 05-Dec-2024 |
| 167 | Interiors | Rough-Ins | Drywall | D-7 | Back framing on 2nd | 21-Aug-2024 | 27-Aug-2024 |
| 168 | Interiors | Rough-Ins | Drywall | D-7 | Back framing on 3rd | 10-Sep-2024 | 16-Sep-2024 |
| 169 | Interiors | Rough-Ins | Drywall | D-7 | Back framing on 4th | 23-Sep-2024 | 27-Sep-2024 |
| 170 | Interiors | Rough-Ins | Drywall | D-8 | Board 2nd floor hallways and stairwells | 28-Nov-2024 | 04-Dec-2024 |
| 171 | Interiors | Rough-Ins | Drywall | D-8 | Board 2nd floor walls | 28-Nov-2024 | 04-Dec-2024 |
| 172 | Interiors | Rough-Ins | Drywall | D-9 | Board and prepare electrical/mechanical room | 06-Dec-2024 | 10-Dec-2024 |
| 173 | Interiors | Rough-Ins | Drywall | D-10 | Board exterior walls on 2nd and sheds | 28-Nov-2024 | 04-Dec-2024 |
| 174 | Interiors | Rough-Ins | Drywall | D-11 | Board parkade exterior walls and sheds | 09-Dec-2024 | 09-Dec-2024 |
| 175 | Interiors | Rough-Ins | Drywall | D-12 | Board Parkade interior walls | 10-Dec-2024 | 13-Dec-2024 |
| 176 | Interiors | Rough-Ins | Drywall | D-13 | Board upper 16" strips in common area & all suites on 3rd | 11-Sep-2024 | 16-Sep-2024 |
| 177 | Interiors | Rough-Ins | Drywall | D-13 | Board upper 16" strips in common area and all suites on 2nd | 30-Aug-2024 | 04-Sep-2024 |
| 178 | Interiors | Rough-Ins | Drywall | D-13 | Board upper 16" strips in common area and all suites on 4th | 27-Sep-2024 | 02-Oct-2024 |
| 179 | Interiors | Rough-Ins | Drywall | D-14 | Fire tape / Fire caulk upper strips on 2nd | 25-Nov-2024 | 25-Nov-2024 |
| 180 | Interiors | Rough-Ins | Drywall | D-14 | Fire tape / Fire caulk upper strips on 3rd | 11-Nov-2024 | 11-Nov-2024 |
| 181 | Interiors | Rough-Ins | Drywall | D-14 | Fire tape / Fire caulk upper strips on 4th | 01-Nov-2024 | 01-Nov-2024 |
| 182 | Interiors | Rough-Ins | Drywall | D-15 | Frame and board Parkade beams | 16-Dec-2024 | 20-Dec-2024 |
| 183 | Interiors | Rough-Ins | Drywall | D-16 | Frame drops on 2nd | 26-Nov-2024 | 02-Dec-2024 |
| 184 | Interiors | Rough-Ins | Drywall | D-16 | Frame drops on 3rd | 12-Nov-2024 | 18-Nov-2024 |
| 185 | Interiors | Rough-Ins | Drywall | D-16 | Frame drops on 4th | 29-Nov-2024 | 05-Dec-2024 |
| 186 | Interiors | Rough-Ins | Drywall | D-17 | Frame interior parkade walls | 19-Aug-2024 | 23-Aug-2024 |
| 187 | Interiors | Rough-Ins | Drywall | D-18 | Install drywall on 4th floor ceiling | 11-Sep-2024 | 17-Sep-2024 |
| 188 | Interiors | Rough-Ins | Gypcrete | GP-1 | Assign gypcrete pour checklist | 25-Nov-2024 | 25-Nov-2024 |
| 189 | Interiors | Rough-Ins | Gypcrete | GP-1 | Gypcrete | 25-Nov-2024 | 26-Nov-2024 |
| 190 | Interiors | Rough-Ins | Gypcrete | GP-1 | Pour Gypcrete | 25-Nov-2024 | 26-Nov-2024 |
| 191 | Interiors | Finishes | MEPF | MEPF-1 | 2nd floor counter top measurement for template | 16-Jan-2025 | 20-Jan-2025 |
| 192 | Interiors | Finishes | MEPF | MEPF-2 | 2nd floor finishing | 16-Dec-2024 | 28-Feb-2025 |
| 193 | Interiors | Finishes | MEPF | MEPF-1 | 3rd floor counter top measurement for template | 08-Jan-2025 | 10-Jan-2025 |
| 194 | Interiors | Finishes | MEPF | MEPF-2 | 3rd floor finishing | 02-Dec-2024 | 18-Feb-2025 |
| 195 | Interiors | Rough-Ins | MEPF | MEPF-3 | 4.3 Rough In, Steel Stud Drywall | 05-Aug-2024 | 23-Jan-2025 |
| 196 | Interiors | Finishes | MEPF | MEPF-4 | 4.4 Finishing | 09-Aug-2024 | 05-May-2025 |
| 197 | Interiors | Finishes | MEPF | MEPF-5 | 4th floor counter top measurements for template | 17-Dec-2024 | 19-Dec-2024 |
| 198 | Interiors | Rough-Ins | MEPF | MEPF-6 | Assign exterior wall pre board inspection check list | 08-Nov-2024 | 08-Nov-2024 |
| 199 | Interiors | Rough-Ins | MEPF | MEPF-7 | Blow in attic insulation | 18-Sep-2024 | 20-Sep-2024 |
| 200 | Interiors | Rough-Ins | MEPF | MEPF-8 | Call for Electrical and Mechanical Inspection | 23-Jan-2025 | 23-Jan-2025 |
| 201 | Interiors | Rough-Ins | MEPF | MEPF-8 | Call for Electrical and Mechanical inspection | 31-Oct-2024 | 31-Oct-2024 |
| 202 | Interiors | Rough-Ins | MEPF | MEPF-9 | Call for Mechanical & Electrical inspection of attic | 04-Sep-2024 | 04-Sep-2024 |
| 203 | Interiors | Rough-Ins | MEPF | MEPF-9 | Call for Mechanical and Electrical inspection | 25-Nov-2024 | 25-Nov-2024 |
| 204 | Interiors | Rough-Ins | MEPF | MEPF-9 | Call for Mechanical and Electrical Inspection | 12-Nov-2024 | 12-Nov-2024 |
| 205 | Interiors | Rough-Ins | MEPF | MEPF-10 | Call the surveyor to measure for condo plan | 29-Oct-2024 | 31-Oct-2024 |
| 206 | Interiors | Finishes | MEPF | MEPF-11 | Ceiling texture on 1 | 02-Jan-2025 | 03-Jan-2025 |
| 207 | Interiors | Finishes | MEPF | MEPF-11 | Ceiling texture on 2nd | 16-Dec-2024 | 17-Dec-2024 |
| 208 | Interiors | Finishes | MEPF | MEPF-11 | Ceiling texture on 3rd | 02-Dec-2024 | 03-Dec-2024 |
| 209 | Interiors | Finishes | MEPF | MEPF-11 | Ceiling texture on 4th | 26-Nov-2024 | 27-Nov-2024 |
| 210 | Interiors | Finishes | MEPF | MEPF-12 | Electrical finishing 2nd floor | 07-Feb-2025 | 13-Feb-2025 |

| entry | phase | location | trade | activity_code | activity_name | start | finish |
| --- | --- | --- | --- | --- | --- | --- | --- |
| 211 | Interiors | Finishes | MEPF | MEPF-12 | Electrical finishing on 1 | 11-Feb-2025 | 13-Feb-2025 |
| 212 | Interiors | Finishes | MEPF | MEPF-12 | Electrical finishing on 3rd | 29-Jan-2025 | 04-Feb-2025 |
| 213 | Interiors | Finishes | MEPF | MEPF-12 | Electrical finishing on 4th | 21-Jan-2025 | 27-Jan-2025 |
| 214 | Interiors | Rough-Ins | MEPF | MEPF-13 | Electrical rough in hallways & stairwells on 2nd | 08-Nov-2024 | 22-Nov-2024 |
| 215 | Interiors | Rough-Ins | MEPF | MEPF-13 | Electrical rough in hallways & stairwells on 3rd | 28-Oct-2024 | 08-Nov-2024 |
| 216 | Interiors | Rough-Ins | MEPF | MEPF-13 | Electrical rough in hallways stairwells on 4th | 21-Oct-2024 | 31-Oct-2024 |
| 217 | Interiors | Rough-Ins | MEPF | MEPF-14 | Electrical rough in in ceiling | 26-Aug-2024 | 03-Sep-2024 |
| 218 | Interiors | Rough-Ins | MEPF | MEPF-15 | Electrical rough in on 2nd | 08-Nov-2024 | 22-Nov-2024 |
| 219 | Interiors | Rough-Ins | MEPF | MEPF-15 | Electrical rough in on 3rd | 28-Oct-2024 | 08-Nov-2024 |
| 220 | Interiors | Rough-Ins | MEPF | MEPF-15 | Electrical rough in on 4th | 21-Oct-2024 | 31-Oct-2024 |
| 221 | Interiors | Finishes | MEPF | MEPF-16 | Final coat of paint | 13-Feb-2025 | 25-Feb-2025 |
| 222 | Interiors | Finishes | MEPF | MEPF-16 | Final coat of paint | 03-Feb-2025 | 13-Feb-2025 |
| 223 | Interiors | Finishes | MEPF | MEPF-16 | Final coat of paint | 24-Jan-2025 | 05-Feb-2025 |
| 224 | Interiors | Finishes | MEPF | MEPF-17 | finishing on 4th | 26-Nov-2024 | 10-Feb-2025 |
| 225 | Interiors | Finishes | MEPF | MEPF-18 | finishing parkade level 1 | 02-Jan-2025 | 24-Feb-2025 |
| 226 | Interiors | Finishes | MEPF | MEPF-19 | Install base and hardware 2nd floor | 17-Jan-2025 | 24-Jan-2025 |
| 227 | Interiors | Finishes | MEPF | MEPF-19 | Install base and hardware on 3rd | 08-Jan-2025 | 13-Jan-2025 |
| 228 | Interiors | Finishes | MEPF | MEPF-19 | Install base and hardware on 4th | 20-Dec-2024 | 03-Jan-2025 |
| 229 | Interiors | Finishes | MEPF | MEPF-20 | Install cabinets 2nd floor | 13-Jan-2025 | 17-Jan-2025 |
| 230 | Interiors | Finishes | MEPF | MEPF-20 | Install cabinets on 1 | 17-Jan-2025 | 20-Jan-2025 |
| 231 | Interiors | Finishes | MEPF | MEPF-20 | Install cabinets on 3rd | 18-Dec-2024 | 10-Jan-2025 |
| 232 | Interiors | Finishes | MEPF | MEPF-20 | Install cabinets on 4th | 11-Dec-2024 | 18-Dec-2024 |
| 233 | Interiors | Finishes | MEPF | MEPF-21 | Install countertops on 1 | 10-Feb-2025 | 10-Feb-2025 |
| 234 | Interiors | Finishes | MEPF | MEPF-22 | Install flooring 2nd floor | 08-Jan-2025 | 16-Jan-2025 |
| 235 | Interiors | Finishes | MEPF | MEPF-22 | Install flooring on 1 | 15-Jan-2025 | 16-Jan-2025 |
| 236 | Interiors | Finishes | MEPF | MEPF-22 | Install flooring on 3rd | 17-Dec-2024 | 07-Jan-2025 |
| 237 | Interiors | Finishes | MEPF | MEPF-22 | Install flooring on 4th | 09-Dec-2024 | 16-Dec-2024 |
| 238 | Interiors | Finishes | MEPF | MEPF-23 | Install interior doors and case on 1 | 08-Jan-2025 | 09-Jan-2025 |
| 239 | Interiors | Finishes | MEPF | MEPF-23 | Install interior doors and case on 2nd | 23-Dec-2024 | 03-Jan-2025 |
| 240 | Interiors | Finishes | MEPF | MEPF-23 | Install interior doors and case on 3rd | 09-Dec-2024 | 13-Dec-2024 |
| 241 | Interiors | Finishes | MEPF | MEPF-23 | Install interior doors and case on 4th | 02-Dec-2024 | 06-Dec-2024 |
| 242 | Interiors | Rough-Ins | MEPF | MEPF-24 | Install metal doors and frames | 24-Dec-2024 | 06-Jan-2025 |
| 243 | Interiors | Rough-Ins | MEPF | MEPF-25 | Install pocket door frames | 06-Sep-2024 | 12-Sep-2024 |
| 244 | Interiors | Rough-Ins | MEPF | MEPF-25 | Install pocket door frames | 20-Sep-2024 | 26-Sep-2024 |
| 245 | Interiors | Rough-Ins | MEPF | MEPF-25 | Install pocket foor frame | 28-Aug-2024 | 03-Sep-2024 |
| 246 | Interiors | Rough-Ins | MEPF | MEPF-26 | Install sound bar 4th floor | 09-Sep-2024 | 10-Sep-2024 |
| 247 | Interiors | Rough-Ins | MEPF | MEPF-27 | Install suite entry doors and frames and Interior doors, trims and jambs | 23-Dec-2024 | 03-Jan-2025 |
| 248 | Interiors | Rough-Ins | MEPF | MEPF-27 | Install suite entry doors and frames and Interior doors, trims and jambs | 09-Dec-2024 | 13-Dec-2024 |
| 249 | Interiors | Rough-Ins | MEPF | MEPF-27 | Install suite entry doors and frames and Interior doors, trims and jambs | 02-Dec-2024 | 06-Dec-2024 |
| 250 | Interiors | Rough-Ins | MEPF | MEPF-28 | Install tubs and showers | 30-Aug-2024 | 04-Sep-2024 |
| 251 | Interiors | Rough-Ins | MEPF | MEPF-28 | Install tubs and showers | 06-Sep-2024 | 11-Sep-2024 |
| 252 | Interiors | Rough-Ins | MEPF | MEPF-28 | Install tubs and showers | 26-Sep-2024 | 27-Sep-2024 |
| 253 | Interiors | Rough-Ins | MEPF | MEPF-29 | Load boards on floor and Board 3rd floor walls | 15-Nov-2024 | 22-Nov-2024 |
| 254 | Interiors | Rough-Ins | MEPF | MEPF-29 | Load boards on floor and Board exterior walls on 3rd and sheds | 15-Nov-2024 | 22-Nov-2024 |
| 255 | Interiors | Rough-Ins | MEPF | MEPF-29 | Load the board on floor and Board 3rd floor hallways and stairwells | 15-Nov-2024 | 22-Nov-2024 |
| 256 | Interiors | Rough-Ins | MEPF | MEPF-29 | Load the board on floor and Board 4th floor hallways and stairwells | 08-Nov-2024 | 15-Nov-2024 |
| 257 | Interiors | Rough-Ins | MEPF | MEPF-29 | Load the board on floor and Board 4th floor walls | 08-Nov-2024 | 15-Nov-2024 |
| 258 | Interiors | Rough-Ins | MEPF | MEPF-29 | Load the board on floor and Board exterior walls on 4th and sheds | 08-Nov-2024 | 15-Nov-2024 |
| 259 | Interiors | Rough-Ins | MEPF | MEPF-30 | Main service electrical room install | 28-Nov-2024 | 26-Dec-2024 |
| 260 | Interiors | Rough-Ins | MEPF | MEPF-32 | Main service mechanical room install | 28-Nov-2024 | 22-Jan-2025 |
| 261 | Interiors | Finishes | MEPF | MEPF-33 | Manufacturing and Install countertops 2nd floor | 21-Jan-2025 | 07-Feb-2025 |
| 262 | Interiors | Finishes | MEPF | MEPF-33 | Manufacturing and Install countertops on 3rd | 10-Jan-2025 | 29-Jan-2025 |
| 263 | Interiors | Finishes | MEPF | MEPF-33 | manufacturing and Install countertops on 4th | 02-Jan-2025 | 21-Jan-2025 |
| 264 | Interiors | Finishes | MEPF | MEPF-34 | Mechanical finishing 2nd floor | 07-Feb-2025 | 13-Feb-2025 |
| 265 | Interiors | Finishes | MEPF | MEPF-34 | Mechanical finishing on 1 | 11-Feb-2025 | 13-Feb-2025 |
| 266 | Interiors | Finishes | MEPF | MEPF-34 | Mechanical finishing on 3rd | 29-Jan-2025 | 04-Feb-2025 |
| 267 | Interiors | Finishes | MEPF | MEPF-34 | Mechanical finishing on 4th | 21-Jan-2025 | 27-Jan-2025 |
| 268 | Interiors | Rough-Ins | MEPF | MEPF-35 | Mechanical rough in hallways & stairwells on 2nd | 01-Nov-2024 | 15-Nov-2024 |
| 269 | Interiors | Rough-Ins | MEPF | MEPF-35 | Mechanical rough in hallways & stairwells on 3rd | 28-Oct-2024 | 07-Nov-2024 |
| 270 | Interiors | Rough-Ins | MEPF | MEPF-35 | Mechanical rough in hallways stairwells on 4th | 21-Oct-2024 | 25-Oct-2024 |
| 271 | Interiors | Rough-Ins | MEPF | MEPF-35 | Mechanical rough in in ceiling | 05-Aug-2024 | 14-Aug-2024 |
| 272 | Interiors | Rough-Ins | MEPF | MEPF-35 | Mechanical rough in on 2nd | 01-Nov-2024 | 15-Nov-2024 |
| 273 | Interiors | Rough-Ins | MEPF | MEPF-35 | Mechanical rough in on 3rd | 28-Oct-2024 | 07-Nov-2024 |
| 274 | Interiors | Rough-Ins | MEPF | MEPF-35 | Mechanical rough in on 4th | 21-Oct-2024 | 25-Oct-2024 |
| 275 | Interiors | Finishes | MEPF | MEPF-36 | Paint 1rst coat of color on 1 | 10-Jan-2025 | 16-Jan-2025 |
| 276 | Interiors | Finishes | MEPF | MEPF-36 | Paint 1st coat of color 2nd floor | 27-Dec-2024 | 03-Jan-2025 |
| 277 | Interiors | Finishes | MEPF | MEPF-36 | Paint 1st coat of color on 3rd | 12-Dec-2024 | 17-Dec-2024 |
| 278 | Interiors | Finishes | MEPF | MEPF-36 | Paint 1st coat of color on 4th | 05-Dec-2024 | 10-Dec-2024 |
| 279 | Interiors | Finishes | MEPF | MEPF-37 | Parkade - Measurement for template | 21-Jan-2025 | 21-Jan-2025 |
| 280 | Interiors | Finishes | MEPF | MEPF-37 | Parkade - Taper to rectify deficiencies | 07-Jan-2025 | 07-Jan-2025 |

| entry | phase | location | trade | activity_code | activity_name | start | finish |
| --- | --- | --- | --- | --- | --- | --- | --- |
| 281 | Interiors | Rough-Ins | MEPF | MEPF-38 | Poly 4th floor ceiling | 05-Sep-2024 | 06-Sep-2024 |
| 282 | Interiors | Rough-Ins | MEPF | MEPF-39 | Poly and insulate on 2nd exterior walls | 25-Nov-2024 | 28-Nov-2024 |
| 283 | Interiors | Rough-Ins | MEPF | MEPF-39 | Poly and insulate on 3rd exterior walls | 12-Nov-2024 | 15-Nov-2024 |
| 284 | Interiors | Rough-Ins | MEPF | MEPF-39 | Poly and insulate on 4th exterior walls | 05-Nov-2024 | 07-Nov-2024 |
| 285 | Interiors | Rough-Ins | MEPF | MEPF-39 | Poly and insulate parkade exterior walls | 22-Aug-2024 | 23-Aug-2024 |
| 286 | Interiors | Finishes | MEPF | MEPF-40 | Prime paint on 1 | 03-Jan-2025 | 07-Jan-2025 |
| 287 | Interiors | Finishes | MEPF | MEPF-40 | Prime paint on 2nd | 18-Dec-2024 | 23-Dec-2024 |
| 288 | Interiors | Finishes | MEPF | MEPF-40 | Prime paint on 3rd | 05-Dec-2024 | 10-Dec-2024 |
| 289 | Interiors | Finishes | MEPF | MEPF-40 | Prime paint on 4th | 28-Nov-2024 | 03-Dec-2024 |
| 290 | Interiors | Rough-Ins | MEPF | MEPF-41 | Rough in 2nd floor | 12-Aug-2024 | 03-Jan-2025 |
| 291 | Interiors | Rough-Ins | MEPF | MEPF-41 | Rough in 3rd floor | 19-Aug-2024 | 13-Dec-2024 |
| 292 | Interiors | Rough-Ins | MEPF | MEPF-41 | Rough in 4th floor | 19-Aug-2024 | 06-Dec-2024 |
| 293 | Interiors | Rough-Ins | MEPF | MEPF-41 | Rough in 4th floor ceiling | 05-Aug-2024 | 07-Oct-2024 |
| 294 | Interiors | Rough-Ins | MEPF | MEPF-41 | Rough in exterior walls - parkade and sheds | 18-Nov-2024 | 06-Dec-2024 |
| 295 | Interiors | Rough-Ins | MEPF | MEPF-41 | Rough in exterior walls on 2nd and sheds | 08-Nov-2024 | 21-Nov-2024 |
| 296 | Interiors | Rough-Ins | MEPF | MEPF-41 | Rough in exterior walls on 3rd and sheds | 28-Oct-2024 | 08-Nov-2024 |
| 297 | Interiors | Rough-Ins | MEPF | MEPF-41 | Rough in exterior walls on 4th and sheds | 21-Oct-2024 | 31-Oct-2024 |
| 298 | Interiors | Rough-Ins | MEPF | MEPF-41 | Rough in interior walls | 21-Nov-2024 | 04-Dec-2024 |
| 299 | Interiors | Rough-Ins | MEPF | MEPF-41 | Rough in Parkade | 19-Aug-2024 | 23-Jan-2025 |
| 300 | Interiors | Rough-Ins | MEPF | MEPF-42 | Siding 2nd floor | 22-Nov-2024 | 09-Dec-2024 |
| 301 | Interiors | Rough-Ins | MEPF | MEPF-42 | Siding 3rd floor | 06-Nov-2024 | 21-Nov-2024 |
| 302 | Interiors | Rough-Ins | MEPF | MEPF-42 | Siding 4th floor | 21-Oct-2024 | 05-Nov-2024 |
| 303 | Interiors | Rough-Ins | MEPF | MEPF-42 | Siding parkade level | 10-Dec-2024 | 23-Dec-2024 |
| 304 | Interiors | Finishes | MEPF | MEPF-43 | Spray out closet interiors and trim on 1 | 10-Jan-2025 | 10-Jan-2025 |
| 305 | Interiors | Finishes | MEPF | MEPF-43 | Spray out closet interiors and trim on 3rd | 12-Dec-2024 | 17-Dec-2024 |
| 306 | Interiors | Finishes | MEPF | MEPF-43 | Spray out closet interiors and trim on 4th | 05-Dec-2024 | 10-Dec-2024 |
| 307 | Interiors | Finishes | MEPF | MEPF-44 | Sprinkler finishing 2nd floor | 07-Feb-2025 | 13-Feb-2025 |
| 308 | Interiors | Finishes | MEPF | MEPF-44 | Sprinkler finishing on 1 | 11-Feb-2025 | 13-Feb-2025 |
| 309 | Interiors | Finishes | MEPF | MEPF-44 | Sprinkler finishing on 3rd | 29-Jan-2025 | 04-Feb-2025 |
| 310 | Interiors | Finishes | MEPF | MEPF-44 | Sprinkler finishing on 4th | 21-Jan-2025 | 27-Jan-2025 |
| 311 | Interiors | Rough-Ins | MEPF | MEPF-45 | Sprinkler install in attic | 07-Aug-2024 | 21-Aug-2024 |
| 312 | Interiors | Rough-Ins | MEPF | MEPF-46 | Sprinkler rough in corridor & stairwells on 2nd | 26-Aug-2024 | 06-Sep-2024 |
| 313 | Interiors | Rough-Ins | MEPF | MEPF-46 | Sprinkler rough in hallways & stairwells on 3rd | 09-Sep-2024 | 20-Sep-2024 |
| 314 | Commissioning | Commissioning | CX | CX-1 | Assign Unit Commissioning Inspection list on 4th | 07-Feb-2025 | 07-Feb-2025 |
| 315 | Interiors | Rough-Ins | MEPF | MEPF-46 | Sprinkler rough in hallways stairwells on 4th | 23-Sep-2024 | 30-Sep-2024 |
| 316 | Interiors | Rough-Ins | MEPF | MEPF-46 | Sprinkler rough in on 2nd | 26-Aug-2024 | 06-Sep-2024 |
| 317 | Interiors | Rough-Ins | MEPF | MEPF-46 | Sprinkler rough in on 3rd | 09-Sep-2024 | 20-Sep-2024 |
| 318 | Interiors | Rough-Ins | MEPF | MEPF-46 | Sprinkler rough in on 4th | 23-Sep-2024 | 30-Sep-2024 |
| 319 | Interiors | Rough-Ins | MEPF | MEPF-47 | Steel stud install on 2nd & drywall behind the tubs including fire wall taping if it is a fire wall | 12-Aug-2024 | 29-Aug-2024 |
| 320 | Interiors | Rough-Ins | MEPF | MEPF-47 | Steel stud install on 3rd & drywall behind the tubs including fire wall taping if it is a fire wall | 30-Aug-2024 | 05-Sep-2024 |
| 321 | Interiors | Rough-Ins | MEPF | MEPF-47 | Steel stud install on 4th & drywall behind the tubs including fire wall taping if it is a fire wall | 18-Sep-2024 | 26-Sep-2024 |
| 322 | Interiors | Rough-Ins | MEPF | MEPF-48 | Tape 2nd floor hallways and stair wells | 05-Dec-2024 | 19-Dec-2024 |
| 323 | Interiors | Rough-Ins | MEPF | MEPF-48 | Tape 3rd floor hallways and stair wells | 22-Nov-2024 | 05-Dec-2024 |
| 324 | Interiors | Rough-Ins | MEPF | MEPF-48 | Tape 4th floor ceiling | 23-Sep-2024 | 04-Oct-2024 |
| 325 | Interiors | Rough-Ins | MEPF | MEPF-48 | Tape 4th floor hallways and stair wells | 15-Nov-2024 | 28-Nov-2024 |
| 326 | Interiors | Rough-Ins | MEPF | MEPF-48 | Tape parkade interior and exterior walls | 13-Dec-2024 | 23-Dec-2024 |
| 327 | Interiors | Rough-Ins | MEPF | MEPF-48 | Tape suites on 2nd | 05-Dec-2024 | 19-Dec-2024 |
| 328 | Interiors | Rough-Ins | MEPF | MEPF-48 | Tape suites on 3rd | 22-Nov-2024 | 05-Dec-2024 |
| 329 | Interiors | Rough-Ins | MEPF | MEPF-48 | Tape suites on 4th | 15-Nov-2024 | 28-Nov-2024 |
| 330 | Interiors | Rough-Ins | MEPF | MEPF-49 | Water dams 2nd floor | 19-Aug-2024 | 23-Aug-2024 |
| 331 | Interiors | Rough-Ins | MEPF | MEPF-49 | Water dams 3rd floor | 19-Aug-2024 | 23-Aug-2024 |
| 332 | Interiors | Rough-Ins | MEPF | MEPF-49 | Water dams 4th floor | 19-Aug-2024 | 23-Aug-2024 |
| 333 | Exteriors & Landscaping |  | Exterior Subs | LAND-1 | Exterior | 09-Aug-2024 | 05-May-2025 |
| 334 | Exteriors & Landscaping |  | Exterior Subs | LAND-2 | Grind all balconys smooth | 09-Aug-2024 | 22-Aug-2024 |
| 335 | Exteriors & Landscaping |  | Exterior Subs | LAND-3 | Install exterior decking all floors | 03-Sep-2024 | 16-Sep-2024 |
| 336 | Exteriors & Landscaping |  | Exterior Subs | LAND-4 | Assign post decking install check list | 17-Sep-2024 | 17-Sep-2024 |
| 337 | Exteriors & Landscaping |  | Exterior Subs | LAND-5 | Install railings on all floors | 20-Jan-2025 | 06-Feb-2025 |
| 338 | Exteriors & Landscaping |  | Exterior Subs | LAND-6 | Rough grade landscaping | 04-Apr-2025 | 10-Apr-2025 |
| 339 | Exteriors & Landscaping |  | Exterior Subs | LAND-7 | Install underground sprinklers | 11-Apr-2025 | 17-Apr-2025 |
| 340 | Exteriors & Landscaping |  | Exterior Subs | LAND-8 | Install landscaping | 18-Apr-2025 | 01-May-2025 |
| 341 | Exteriors & Landscaping |  | Exterior Subs | LAND-9 | Commision landscaping | 02-May-2025 | 05-May-2025 |
| 342 | Exteriors & Landscaping |  | Exterior Subs | LAND-10 | Install building signage | 28-Feb-2025 | 28-Feb-2025 |
| 343 | Exteriors & Landscaping |  | Exterior Subs | LAND-11 | Assign post landscaping checklist | 02-May-2025 | 02-May-2025 |
| 344 | Commissioning | Commissioning | Construction Company | CX-2 | Final commissioning and deficiency | 14-Feb-2025 | 03-Mar-2025 |
| 345 | Commissioning | Commissioning | Construction Company | CX-3 | Fire alarm verification | 14-Feb-2025 | 17-Feb-2025 |
| 346 | Commissioning | Commissioning | Construction Company | CX-4 | Contact Canada Post to get the address's created | 14-Feb-2025 | 14-Feb-2025 |
| 347 | Commissioning | Commissioning | Construction Company | CX-5 | Enginering walk throughs | 19-Feb-2025 | 20-Feb-2025 |
| 348 | Commissioning | Commissioning | Construction Company | CX-6 | Organize 3rd party building exterior review, including roof, siding and flashings | 19-Feb-2025 | 19-Feb-2025 |
| 349 | Commissioning | Commissioning | Construction Company | CX-7 | Sprinkler testing | 14-Feb-2025 | 17-Feb-2025 |
| 350 | Commissioning | Commissioning | Construction Company | CX-8 | Archetectural walk throughs | 19-Feb-2025 | 20-Feb-2025 |

| entry | phase | location | trade | activity_code | activity_name | start | finish |
| --- | --- | --- | --- | --- | --- | --- | --- |
| 351 | Commissioning | Commissioning | Construction Company | CX-9 | Building inspector walk throughs | 21-Feb-2025 | 24-Feb-2025 |
| 352 | Commissioning | Commissioning | Construction Company | CX-10 | Elevator commissioning | 14-Feb-2025 | 17-Feb-2025 |
| 353 | Commissioning | Commissioning | Construction Company | CX-11 | Prepare occupancy paperwork | 25-Feb-2025 | 26-Feb-2025 |
| 354 | Commissioning | Commissioning | Construction Company | CX-12 | Receive occupancy | 27-Feb-2025 | 28-Feb-2025 |
| 355 | Commissioning | Commissioning | Construction Company | CX-13 | Move in dates confirmed | 03-Mar-2025 | 03-Mar-2025 |
| 356 | Commissioning | Commissioning | Construction Company | CX-14 | Assign Final Building Checklist | 03-Mar-2025 | 03-Mar-2025 |
| 357 | Occupancy & Closing | Occupancy & Closing | Construction Company | CX-15 | 5.0 Sales, Occupancy, Closings | 03-Mar-2025 | 01-May-2025 |
| 358 | Occupancy & Closing | Occupancy & Closing | Construction Company | CX-16 | Pre sale move in dates confirmed | 03-Mar-2025 | 03-Mar-2025 |
| 359 | Occupancy & Closing | Occupancy & Closing | Construction Company | CX-17 | Finalize home owner extras | 04-Mar-2025 | 10-Mar-2025 |
| 360 | Occupancy & Closing | Occupancy & Closing | Construction Company | CX-18 | Load home owners into copper | 04-Mar-2025 | 04-Mar-2025 |
| 361 | Occupancy & Closing | Occupancy & Closing | Construction Company | CX-19 | Move in binders created | 04-Mar-2025 | 10-Mar-2025 |
| 362 | Occupancy & Closing | Occupancy & Closing | Construction Company | CX-20 | Update home owner permissions in Construction online | 04-Mar-2025 | 04-Mar-2025 |
| 363 | Occupancy & Closing | Occupancy & Closing | Construction Company | CX-21 | Unit Commissioning Inspection list | 04-Mar-2025 | 10-Mar-2025 |
| 364 | Occupancy & Closing | Occupancy & Closing | Construction Company | CX-22 | Unit Commissioning deficiency clean up confirmed | 11-Mar-2025 | 17-Mar-2025 |
| 365 | Occupancy & Closing | Occupancy & Closing | Construction Company | CX-23 | Building close out check list | 04-Mar-2025 | 04-Mar-2025 |
| 366 | Occupancy & Closing | Occupancy & Closing | Construction Company | CX-24 | Building close out cleanup deficiencies confirmed | 05-Mar-2025 | 11-Mar-2025 |
| 367 | Occupancy & Closing | Occupancy & Closing | Construction Company | CX-25 | Building handover (PM to SM) checklist | 04-Mar-2025 | 10-Mar-2025 |
| 368 | Occupancy & Closing | Occupancy & Closing | Construction Company | CX-26 | De mobilization (checklist) | 05-Mar-2025 | 11-Mar-2025 |
| 369 | Occupancy & Closing | Occupancy & Closing | Construction Company | CX-27 | Keys and gift cards and welcome package created | 04-Mar-2025 | 10-Mar-2025 |
| 370 | Occupancy & Closing | Occupancy & Closing | Construction Company | CX-28 | Home owner walk through and punch list | 11-Mar-2025 | 11-Mar-2025 |
| 371 | Occupancy & Closing | Occupancy & Closing | Construction Company | CX-29 | Home owner walk through punch list clean up | 12-Mar-2025 | 18-Mar-2025 |
| 372 | Occupancy & Closing | Occupancy & Closing | Construction Company | CX-30 | New move ins and warranty through service manager | 04-Mar-2025 | 01-May-2025 |
| 373 | Occupancy & Closing | Occupancy & Closing | Construction Company | CX-31 | Send out contractor surveys | 05-Mar-2025 | 05-Mar-2025 |
| 374 | Occupancy & Closing | Occupancy & Closing | Construction Company | CX-32 | Schedule 1 on 1 contractor review meetings | 06-Mar-2025 | 12-Mar-2025 |
| 375 | Occupancy & Closing | Occupancy & Closing | Construction Company | CX-33 | Schedule contractor group meeting to review survey results | 06-Mar-2025 | 12-Mar-2025 |
| 376 | Occupancy & Closing | Occupancy & Closing | Construction Company | CX-34 | Project post mordem internal | 13-Mar-2025 | 13-Mar-2025 |
| 377 | Occupancy & Closing | Occupancy & Closing | Construction Company | CX-35 | Move info to Dev co work flow 1.0, 2.0, 6.0 | 18-Mar-2025 | 18-Mar-2025 |
